# SPC-2220-PS-PMS-011840_Fabricación Bandejas Agua Lavado Celdas OT 1844_Rev.B_W09

Schedule from Primavera P6, 2026-02-02 to 2026-04-06, data date 2026-02-22, costs in CLP, A marks actual dates.

## Calendars

- Maestranza #: Mon-Fri 08:00-13:00, 14:00-18:00; Sat-Sun off.
- Maestranza Sab.: Mon-Sat 08:00-13:00, 14:00-18:00; Sun off.
- Maestranza Full: Mon-Sat 08:00-13:00, 14:00-18:00; Sun 07:30-16:30.

## Resources

| Resource | Group | Rate |
| --- | --- | --- |
| Ing. OT 1844 | labor | 1 |
| Operador OT 1844 | labor | 1 |

## Schedule

| ID | WBS | Activity | Type | Duration | Start | Finish | Predecessors | Complete | Remaining | Planned start | Planned finish | Total float | Free float | Constraint | Calendar | Resources | Cost | Actual cost |
| --- | --- | --- | --- | --- | --- | --- | --- | --- | --- | --- | --- | --- | --- | --- | --- | --- | --- | --- |
|  | 2 | **Hitos de Construcción** |  |  | 2026-03-10 | 2026-04-06 |  |  |  |  |  |  |  |  |  |  |  |  |
| A1620 |  | Dos bandejas en Minera Spence a más tardar el 09-mar-2026. | milestone | 0d | 2026-03-10 | 2026-03-10 | A2970 |  |  |  |  | 19d |  |  |  |  |  |  |
| A1630 |  | Dos bandejas en Minera Spence a más tardar el 16-mar-2026. | milestone | 0d | 2026-03-16 | 2026-03-16 | A3270 |  |  |  |  | 15d |  |  |  |  |  |  |
| A1650 |  | Dos bandejas en Minera Spence a más tardar el 23-mar-2026. | milestone | 0d | 2026-03-23 | 2026-03-23 | A3570 |  |  |  |  | 10d |  |  |  |  |  |  |
| A2630 |  | Dos bandejas en Minera Spence a más tardar el 30-mar-2026. | milestone | 0d | 2026-03-30 | 2026-03-30 | A3870 |  |  |  |  | 5d |  |  |  |  |  |  |
| A2640 |  | Dos bandejas en Minera Spence a más tardar el 06-abr-2026. | milestone | 0d | 2026-04-06 | 2026-04-06 | A4170 |  |  |  |  | 0d |  |  |  |  |  |  |
|  | 1 | **Suministro conjuntos sistema de agua de lavado** |  |  | 2026-02-02 | 2026-02-27 |  |  |  |  |  |  |  |  |  |  |  |  |
| A1640 |  | Planos de Fabricación |  | 10d | 2026-02-02 A | 2026-02-13 A |  | 100% |  | 2026-02-16 | 2026-02-27 |  |  | start on or after 2026-02-02 |  | Ing. OT 1844 [360 h] | 360 | 360 |
| A1660 |  | Suminstro de Materiales |  | 10d | 2026-02-09 A | 2026-02-27 | A1640 SS+3d | 70% | 5d | 2026-02-16 | 2026-02-27 | 19d | 0d |  |  | Operador OT 1844 [180 h] | 180 | 126 |
|  | 3 | **Fabricación 10 sistemas de lavado** |  |  | 2026-02-13 | 2026-04-06 |  |  |  |  |  |  |  |  |  |  |  |  |
|  | 8 | **TAG 2225-ZM-(02 Unidades)-1** |  |  | 2026-02-13 | 2026-03-10 |  |  |  |  |  |  |  |  |  |  |  |  |
|  | 1 | **Bastidor** |  |  | 2026-02-13 | 2026-03-05 |  |  |  |  |  |  |  |  |  |  |  |  |
| A2650 |  | Corte y Fabricación de Vigas y Perfil Z |  | 6d | 2026-02-13 A | 2026-02-26 | A1660 FS-4d, A1640 FS-1d | 50% | 3d | 2026-02-17 | 2026-02-24 | 19d | 0d |  |  | Operador OT 1844 [162 h] | 162 | 81 |
| A2660 |  | Corte y Fabricación de Consoldas Exteriores |  | 2d | 2026-02-13 A | 2026-02-25 | A2650 SS | 50% | 2d | 2026-02-17 | 2026-02-18 | 27d | 0d |  |  | Operador OT 1844 [36 h] | 36 | 18 |
| A2680 |  | Corte y Fabricación Distribuidor 8" |  | 2d | 2026-02-20 A | 2026-02-24 |  | 50% | 2d | 2026-03-02 | 2026-03-03 | 22d | 2d |  |  | Operador OT 1844 [36 h] | 36 | 18 |
| A2670 |  | Corte y Fabricación de Consoldas Centrales |  | 2d | 2026-02-25 | 2026-02-26 | A2660 FS-1d |  |  |  |  | 27d |  |  |  | Operador OT 1844 [36 h] | 36 |  |
| A2690 |  | Armado y Remates de Soldadura Bastidor |  | 2d | 2026-02-27 | 2026-02-28 | A2650, A2680 |  |  |  |  | 24d | 0d |  | Maestranza Sab. | Operador OT 1844 [54 h] | 54 |  |
| A2710 |  | Inspección de soldadura (VT, LP si aplica) |  | 1d | 2026-02-28 | 2026-02-28 | A2690 SS+1d |  |  |  |  | 24d | 0d |  | Maestranza Sab. | Operador OT 1844 [9 h] | 9 |  |
| A2720 |  | Granallado / Preparación de Superficie |  | 1d | 2026-03-01 | 2026-03-01 | A2710 |  |  |  |  | 28d | 0d |  | Maestranza Full | Operador OT 1844 [18 h] | 18 |  |
| A2730 |  | Aplicación Capa Imprimante, Enlace y Terminación |  | 3d | 2026-03-02 | 2026-03-04 | A2720 |  |  |  |  | 28d | 0d |  | Maestranza Full | Operador OT 1844 [54 h] | 54 |  |
| A2740 |  | Control de calidad (QC) e inspecciones |  | 1d | 2026-03-05 | 2026-03-05 | A2730 |  |  |  |  | 20d | 1d |  |  | Operador OT 1844 [9 h] | 9 |  |
|  | 2 | **Bandeja Perimetral (12 Un)** |  |  | 2026-02-16 | 2026-03-05 |  |  |  |  |  |  |  |  |  |  |  |  |
| A2750 |  | Corte, perforado y conformado (fabricación del cuerpo) SS316L |  | 4d | 2026-02-16 A | 2026-02-20 A | A2650 SS+1d | 100% |  | 2026-02-24 | 2026-02-27 |  |  |  |  | Operador OT 1844 [72 h] | 72 | 72 |
| A2760 |  | Cilindrado (fabricación del cuerpo) SS316L |  | 2d | 2026-02-24 | 2026-02-25 | A2750 |  |  |  |  | 20d | 0d |  |  | Operador OT 1844 [36 h] | 36 |  |
| A2770 |  | Armado, Soldadura y Rectificado de Bandejas |  | 3d | 2026-02-26 | 2026-03-02 | A2760 |  |  |  |  | 20d | 0d |  |  | Operador OT 1844 [108 h] | 108 |  |
| A2780 |  | Terminaciones superficiales (Limpieza, Decapado, Pasivado) |  | 2d | 2026-03-03 | 2026-03-04 | A2770 |  |  |  |  | 20d | 0d |  |  | Operador OT 1844 [54 h] | 54 |  |
| A2790 |  | Control de calidad (QC) e inspecciones |  | 1d | 2026-03-05 | 2026-03-05 | A2780 |  |  |  |  | 20d | 1d |  |  | Operador OT 1844 [9 h] | 9 |  |

| ID | WBS | Activity | Duration | Start | Finish | Predecessors | Complete | Remaining | Planned start | Planned finish | Total float | Free float | Calendar | Resources | Cost | Actual cost |
| --- | --- | --- | --- | --- | --- | --- | --- | --- | --- | --- | --- | --- | --- | --- | --- | --- |
|  | 3 | **Bandeja Central (12 Un)** |  | 2026-02-16 | 2026-03-05 |  |  |  |  |  |  |  |  |  |  |  |
| A2890 |  | Corte, perforado y conformado (fabricación del cuerpo) SS316L | 4d | 2026-02-16 A | 2026-02-20 A | A2750 SS | 100% |  | 2026-02-24 | 2026-02-27 |  |  |  | Operador OT 1844 [72 h] | 72 | 72 |
| A2900 |  | Cilindrado (fabricación del cuerpo) SS316L | 2d | 2026-02-24 | 2026-02-25 | A2890 |  |  |  |  | 22d | 0d |  | Operador OT 1844 [36 h] | 36 |  |
| A2910 |  | Armado, Soldadura y Rectificado de Bandejas | 3d | 2026-02-26 | 2026-03-02 | A2900 |  |  |  |  | 22d | 0d |  | Operador OT 1844 [108 h] | 108 |  |
| A2920 |  | Terminaciones superficiales (Limpieza, Decapado, Pasivado) | 2d | 2026-03-03 | 2026-03-04 | A2910 |  |  |  |  | 22d | 0d |  | Operador OT 1844 [54 h] | 54 |  |
| A2930 |  | Control de calidad (QC) e inspecciones | 1d | 2026-03-05 | 2026-03-05 | A2920 |  |  |  |  | 22d |  |  | Operador OT 1844 [9 h] | 9 |  |
|  | 4 | **Barandas (16 Un)** |  | 2026-02-20 | 2026-03-06 |  |  |  |  |  |  |  |  |  |  |  |
| A2800 |  | Fabricación Baranda radial removible | 7d | 2026-02-20 A | 2026-03-02 | A2750 SS+2d | 20% | 5d | 2026-02-24 | 2026-03-04 | 19d | 0d |  | Operador OT 1844 [189 h] | 189 | 37.8 |
| A2810 |  | Aplicación Capa Imprimante, Enlace y Terminación | 3d | 2026-03-03 | 2026-03-05 | A2800 |  |  |  |  | 19d | 0d |  | Operador OT 1844 [54 h] | 54 |  |
| A2820 |  | Control de calidad (QC) e inspecciones | 1d | 2026-03-06 | 2026-03-06 | A2810 |  |  |  |  | 19d | 0d |  | Operador OT 1844 [9 h] | 9 |  |
|  | 5 | **Parrilla de Piso (36 Un)** |  | 2026-03-03 | 2026-03-06 |  |  |  |  |  |  |  |  |  |  |  |
| A2830 |  | Trazado y Corte de FRP | 3d | 2026-03-03 | 2026-03-05 | A2880 |  |  |  |  | 19d | 0d |  | Operador OT 1844 [54 h] | 54 |  |
| A2840 |  | Control de calidad (QC) e inspecciones | 1d | 2026-03-06 | 2026-03-06 | A2830 |  |  |  |  | 19d | 0d |  | Operador OT 1844 [9 h] | 9 |  |
|  | 6 | **Manifold Distribuidor** |  | 2026-02-13 | 2026-03-02 |  |  |  |  |  |  |  |  |  |  |  |
| A2850 |  | Fabricación del cuerpo central (spool/cabezal) | 2d | 2026-02-13 A | 2026-02-25 | A2800 SS+2d | 80% | 1d | 2026-02-23 | 2026-02-24 | 19d | 0d |  | Operador OT 1844 [36 h] | 36 | 28.8 |
| A2860 |  | Fabricación Brazos radiales (spools repetitivos) | 1d | 2026-02-26 | 2026-02-26 | A2850 |  |  |  |  | 19d | 0d |  | Operador OT 1844 [18 h] | 18 |  |
| A2870 |  | Fabricación Conjunto válvula/boquilla (DET. 1-5) | 1d | 2026-02-27 | 2026-02-27 | A2860 |  |  |  |  | 19d | 0d |  | Operador OT 1844 [18 h] | 18 |  |
| A2880 |  | Control de calidad (QC) e inspecciones | 1d | 2026-03-02 | 2026-03-02 | A2870 |  |  |  |  | 19d | 0d |  | Operador OT 1844 [9 h] | 9 |  |
|  | 7 | **Pre-armado en taller (armado en seco) / Despacho** |  | 2026-03-07 | 2026-03-10 |  |  |  |  |  |  |  |  |  |  |  |
| A2940 |  | Bastidor / estructura / Bandejas / Barandas / Parrillas FRP | 2d | 2026-03-07 | 2026-03-09 | A2740, A2790, A2820, A2840 |  |  |  |  | 23d | 0d | Maestranza Sab. | Operador OT 1844 [108 h] | 108 |  |
| A2970 |  | Despacho | 1d | 2026-03-10 | 2026-03-10 | A2940 |  |  |  |  | 19d | 0d |  | Operador OT 1844 [36 h] | 36 |  |
|  | 1 | **TAG 2225-ZM-(02 Unidades)-2** |  | 2026-02-16 | 2026-03-16 |  |  |  |  |  |  |  |  |  |  |  |
|  | 1 | **Bastidor** |  | 2026-02-16 | 2026-03-11 |  |  |  |  |  |  |  |  |  |  |  |
| A2980 |  | Corte y Fabricación de Vigas y Perfil Z | 6d | 2026-02-16 A | 2026-02-27 |  | 30% | 5d | 2026-02-26 | 2026-03-05 | 0d |  |  | Operador OT 1844 [162 h] | 162 | 48.6 |
| A2990 |  | Corte y Fabricación de Consoldas Exteriores | 2d | 2026-02-23 | 2026-02-24 | A2980 SS |  |  |  |  | 15d | 0d |  | Operador OT 1844 [36 h] | 36 |  |
| A3000 |  | Corte y Fabricación de Consoldas Centrales | 2d | 2026-02-25 | 2026-02-26 | A2990 |  |  |  |  | 15d | 0d |  | Operador OT 1844 [36 h] | 36 |  |
| A3010 |  | Corte y Fabricación Distribuidor 8" | 2d | 2026-02-27 | 2026-03-02 | A3000 |  |  |  |  | 15d | 0d |  | Operador OT 1844 [36 h] | 36 |  |
| A3020 |  | Armado y Remates de Soldadura Bastidor | 2d | 2026-03-03 | 2026-03-04 | A2980, A3010 |  |  |  |  | 15d | 0d |  | Operador OT 1844 [54 h] | 54 |  |
| A3030 |  | Inspección de soldadura (VT, LP si aplica) | 1d | 2026-03-05 | 2026-03-05 | A3020 |  |  |  |  | 15d | 0d |  | Operador OT 1844 [9 h] | 9 |  |
| A3040 |  | Granallado / Preparación de Superficie | 1d | 2026-03-06 | 2026-03-06 | A3030 |  |  |  |  | 15d | 0d |  | Operador OT 1844 [18 h] | 18 |  |
| A3050 |  | Aplicación Capa Imprimante, Enlace y Terminación | 3d | 2026-03-07 | 2026-03-10 | A3040 |  |  |  |  | 18d | 0d | Maestranza Sab. | Operador OT 1844 [54 h] | 54 |  |
| A3060 |  | Control de calidad (QC) e inspecciones | 1d | 2026-03-11 | 2026-03-11 | A3050 |  |  |  |  | 15d | 0d |  | Operador OT 1844 [9 h] | 9 |  |

| ID | WBS | Activity | Duration | Start | Finish | Predecessors | Complete | Remaining | Planned start | Planned finish | Total float | Free float | Resources | Cost | Actual cost |
| --- | --- | --- | --- | --- | --- | --- | --- | --- | --- | --- | --- | --- | --- | --- | --- |
|  | 2 | **Bandeja Perimetral (12 Un)** |  | 2026-02-16 | 2026-03-10 |  |  |  |  |  |  |  |  |  |  |
| A3070 |  | Corte, perforado y conformado (fabricación del cuerpo) SS316L | 4d | 2026-02-16 A | 2026-02-26 | A2980 SS+1d | 50% | 4d | 2026-02-23 | 2026-02-26 | 16d | 0d | Operador OT 1844 [72 h] | 72 | 36 |
| A3080 |  | Cilindrado (fabricación del cuerpo) SS316L | 2d | 2026-02-27 | 2026-03-02 | A3070 |  |  |  |  | 16d | 0d | Operador OT 1844 [36 h] | 36 |  |
| A3090 |  | Armado, Soldadura y Rectificado de Bandejas | 3d | 2026-03-03 | 2026-03-05 | A3080 |  |  |  |  | 16d | 0d | Operador OT 1844 [108 h] | 108 |  |
| A3100 |  | Terminaciones superficiales (Limpieza, Decapado, Pasivado) | 2d | 2026-03-06 | 2026-03-09 | A3090 |  |  |  |  | 16d | 0d | Operador OT 1844 [54 h] | 54 |  |
| A3110 |  | Control de calidad (QC) e inspecciones | 1d | 2026-03-10 | 2026-03-10 | A3100 |  |  |  |  | 16d | 1d | Operador OT 1844 [9 h] | 9 |  |
|  | 3 | **Bandeja Central (12 Un)** |  | 2026-02-16 | 2026-03-10 |  |  |  |  |  |  |  |  |  |  |
| A3210 |  | Corte, perforado y conformado (fabricación del cuerpo) SS316L | 4d | 2026-02-16 A | 2026-02-26 | A3070 SS | 50% | 4d | 2026-02-23 | 2026-02-26 | 19d | 0d | Operador OT 1844 [72 h] | 72 | 36 |
| A3220 |  | Cilindrado (fabricación del cuerpo) SS316L | 2d | 2026-02-27 | 2026-03-02 | A3210 |  |  |  |  | 19d | 0d | Operador OT 1844 [36 h] | 36 |  |
| A3230 |  | Armado, Soldadura y Rectificado de Bandejas | 3d | 2026-03-03 | 2026-03-05 | A3220 |  |  |  |  | 19d | 0d | Operador OT 1844 [108 h] | 108 |  |
| A3240 |  | Terminaciones superficiales (Limpieza, Decapado, Pasivado) | 2d | 2026-03-06 | 2026-03-09 | A3230 |  |  |  |  | 19d | 0d | Operador OT 1844 [54 h] | 54 |  |
| A3250 |  | Control de calidad (QC) e inspecciones | 1d | 2026-03-10 | 2026-03-10 | A3240 |  |  |  |  | 19d |  | Operador OT 1844 [9 h] | 9 |  |
|  | 4 | **Barandas (16 Un)** |  | 2026-02-23 | 2026-03-09 |  |  |  |  |  |  |  |  |  |  |
| A3120 |  | Fabricación Baranda radial removible | 7d | 2026-02-23 | 2026-03-03 | A3070 SS+2d |  |  |  |  | 17d | 0d | Operador OT 1844 [189 h] | 189 |  |
| A3130 |  | Aplicación Capa Imprimante, Enlace y Terminación | 3d | 2026-03-04 | 2026-03-06 | A3120 |  |  |  |  | 17d | 0d | Operador OT 1844 [54 h] | 54 |  |
| A3140 |  | Control de calidad (QC) e inspecciones | 1d | 2026-03-09 | 2026-03-09 | A3130 |  |  |  |  | 17d | 2d | Operador OT 1844 [9 h] | 9 |  |
|  | 5 | **Parrilla de Piso (36 Un)** |  | 2026-03-04 | 2026-03-09 |  |  |  |  |  |  |  |  |  |  |
| A3150 |  | Trazado y Corte de FRP | 3d | 2026-03-04 | 2026-03-06 | A3200 |  |  |  |  | 17d | 0d | Operador OT 1844 [54 h] | 54 |  |
| A3160 |  | Control de calidad (QC) e inspecciones | 1d | 2026-03-09 | 2026-03-09 | A3150 |  |  |  |  | 17d | 2d | Operador OT 1844 [9 h] | 9 |  |
|  | 6 | **Manifold Distribuidor** |  | 2026-02-25 | 2026-03-03 |  |  |  |  |  |  |  |  |  |  |
| A3170 |  | Fabricación del cuerpo central (spool/cabezal) | 2d | 2026-02-25 | 2026-02-26 | A3120 SS+2d |  |  |  |  | 17d | 0d | Operador OT 1844 [36 h] | 36 |  |
| A3180 |  | Fabricación Brazos radiales (spools repetitivos) | 1d | 2026-02-27 | 2026-02-27 | A3170 |  |  |  |  | 17d | 0d | Operador OT 1844 [18 h] | 18 |  |
| A3190 |  | Fabricación Conjunto válvula/boquilla (DET. 1-5) | 1d | 2026-03-02 | 2026-03-02 | A3180 |  |  |  |  | 17d | 0d | Operador OT 1844 [18 h] | 18 |  |
| A3200 |  | Control de calidad (QC) e inspecciones | 1d | 2026-03-03 | 2026-03-03 | A3190 |  |  |  |  | 17d | 0d | Operador OT 1844 [9 h] | 9 |  |

| ID | WBS | Activity | Duration | Start | Finish | Predecessors | Complete | Remaining | Planned start | Planned finish | Total float | Free float | Resources | Cost | Actual cost |
| --- | --- | --- | --- | --- | --- | --- | --- | --- | --- | --- | --- | --- | --- | --- | --- |
|  | 7 | **Pre-armado en taller (armado en seco) / Despacho** |  | 2026-03-12 | 2026-03-16 |  |  |  |  |  |  |  |  |  |  |
| A3260 |  | Bastidor / estructura / Bandejas / Barandas / Parrillas FRP | 2d | 2026-03-12 | 2026-03-13 | A3060, A3110, A3140, A3160 |  |  |  |  | 15d | 0d | Operador OT 1844 [108 h] | 108 |  |
| A3270 |  | Despacho | 1d | 2026-03-16 | 2026-03-16 | A3260 |  |  |  |  | 15d | 0d | Operador OT 1844 [36 h] | 36 |  |
|  | 2 | **TAG 2225-ZM-(02 Unidades)-3** |  | 2026-02-16 | 2026-03-23 |  |  |  |  |  |  |  |  |  |  |
|  | 1 | **Bastidor** |  | 2026-02-27 | 2026-03-18 |  |  |  |  |  |  |  |  |  |  |
| A3280 |  | Corte y Fabricación de Vigas y Perfil Z | 6d | 2026-02-27 | 2026-03-06 | A2980 FS-1d |  |  |  |  | 0d |  | Operador OT 1844 [162 h] | 162 |  |
| A3290 |  | Corte y Fabricación de Consoldas Exteriores | 2d | 2026-02-27 | 2026-03-02 | A3280 SS |  |  |  |  | 10d | 0d | Operador OT 1844 [36 h] | 36 |  |
| A3300 |  | Corte y Fabricación de Consoldas Centrales | 2d | 2026-03-03 | 2026-03-04 | A3290 |  |  |  |  | 10d | 0d | Operador OT 1844 [36 h] | 36 |  |
| A3310 |  | Corte y Fabricación Distribuidor 8" | 2d | 2026-03-05 | 2026-03-06 | A3300 |  |  |  |  | 10d | 0d | Operador OT 1844 [36 h] | 36 |  |
| A3320 |  | Armado y Remates de Soldadura Bastidor | 2d | 2026-03-09 | 2026-03-10 | A3280, A3310 |  |  |  |  | 10d | 0d | Operador OT 1844 [54 h] | 54 |  |
| A3330 |  | Inspección de soldadura (VT, LP si aplica) | 1d | 2026-03-11 | 2026-03-11 | A3320 |  |  |  |  | 10d | 0d | Operador OT 1844 [9 h] | 9 |  |
| A3340 |  | Granallado / Preparación de Superficie | 1d | 2026-03-12 | 2026-03-12 | A3330 |  |  |  |  | 10d | 0d | Operador OT 1844 [18 h] | 18 |  |
| A3350 |  | Aplicación Capa Imprimante, Enlace y Terminación | 3d | 2026-03-13 | 2026-03-17 | A3340 |  |  |  |  | 10d | 0d | Operador OT 1844 [54 h] | 54 |  |
| A3360 |  | Control de calidad (QC) e inspecciones | 1d | 2026-03-18 | 2026-03-18 | A3350 |  |  |  |  | 10d | 0d | Operador OT 1844 [9 h] | 9 |  |
|  | 2 | **Bandeja Perimetral (12 Un)** |  | 2026-02-16 | 2026-03-17 |  |  |  |  |  |  |  |  |  |  |
| A3370 |  | Corte, perforado y conformado (fabricación del cuerpo) SS316L | 4d | 2026-02-16 A | 2026-03-05 | A3280 SS+1d | 50% | 4d | 2026-03-02 | 2026-03-05 | 11d | 0d | Operador OT 1844 [72 h] | 72 | 36 |
| A3380 |  | Cilindrado (fabricación del cuerpo) SS316L | 2d | 2026-03-06 | 2026-03-09 | A3370 |  |  |  |  | 11d | 0d | Operador OT 1844 [36 h] | 36 |  |
| A3390 |  | Armado, Soldadura y Rectificado de Bandejas | 3d | 2026-03-10 | 2026-03-12 | A3380 |  |  |  |  | 11d | 0d | Operador OT 1844 [108 h] | 108 |  |
| A3400 |  | Terminaciones superficiales (Limpieza, Decapado, Pasivado) | 2d | 2026-03-13 | 2026-03-16 | A3390 |  |  |  |  | 11d | 0d | Operador OT 1844 [54 h] | 54 |  |
| A3410 |  | Control de calidad (QC) e inspecciones | 1d | 2026-03-17 | 2026-03-17 | A3400 |  |  |  |  | 11d | 1d | Operador OT 1844 [9 h] | 9 |  |
|  | 3 | **Bandeja Central (12 Un)** |  | 2026-02-16 | 2026-03-17 |  |  |  |  |  |  |  |  |  |  |
| A3510 |  | Corte, perforado y conformado (fabricación del cuerpo) SS316L | 4d | 2026-02-16 A | 2026-03-05 | A3370 SS | 50% | 4d | 2026-03-02 | 2026-03-05 | 14d | 0d | Operador OT 1844 [72 h] | 72 | 36 |
| A3520 |  | Cilindrado (fabricación del cuerpo) SS316L | 2d | 2026-03-06 | 2026-03-09 | A3510 |  |  |  |  | 14d | 0d | Operador OT 1844 [36 h] | 36 |  |
| A3530 |  | Armado, Soldadura y Rectificado de Bandejas | 3d | 2026-03-10 | 2026-03-12 | A3520 |  |  |  |  | 14d | 0d | Operador OT 1844 [108 h] | 108 |  |
| A3540 |  | Terminaciones superficiales (Limpieza, Decapado, Pasivado) | 2d | 2026-03-13 | 2026-03-16 | A3530 |  |  |  |  | 14d | 0d | Operador OT 1844 [54 h] | 54 |  |
| A3550 |  | Control de calidad (QC) e inspecciones | 1d | 2026-03-17 | 2026-03-17 | A3540 |  |  |  |  | 14d |  | Operador OT 1844 [9 h] | 9 |  |

| ID | WBS | Activity | Duration | Start | Finish | Predecessors | Total float | Free float | Resources | Cost |
| --- | --- | --- | --- | --- | --- | --- | --- | --- | --- | --- |
|  | 4 | **Barandas (16 Un)** |  | 2026-03-02 | 2026-03-16 |  |  |  |  |  |
| A3420 |  | Fabricación Baranda radial removible | 7d | 2026-03-02 | 2026-03-10 | A3370 SS+2d | 12d | 0d | Operador OT 1844 [189 h] | 189 |
| A3430 |  | Aplicación Capa Imprimante, Enlace y Terminación | 3d | 2026-03-11 | 2026-03-13 | A3420 | 12d | 0d | Operador OT 1844 [54 h] | 54 |
| A3440 |  | Control de calidad (QC) e inspecciones | 1d | 2026-03-16 | 2026-03-16 | A3430 | 12d | 2d | Operador OT 1844 [9 h] | 9 |
|  | 5 | **Parrilla de Piso (36 Un)** |  | 2026-03-11 | 2026-03-16 |  |  |  |  |  |
| A3450 |  | Trazado y Corte de FRP | 3d | 2026-03-11 | 2026-03-13 | A3500 | 12d | 0d | Operador OT 1844 [54 h] | 54 |
| A3460 |  | Control de calidad (QC) e inspecciones | 1d | 2026-03-16 | 2026-03-16 | A3450 | 12d | 2d | Operador OT 1844 [9 h] | 9 |
|  | 6 | **Manifold Distribuidor** |  | 2026-03-04 | 2026-03-10 |  |  |  |  |  |
| A3470 |  | Fabricación del cuerpo central (spool/cabezal) | 2d | 2026-03-04 | 2026-03-05 | A3420 SS+2d | 12d | 0d | Operador OT 1844 [36 h] | 36 |
| A3480 |  | Fabricación Brazos radiales (spools repetitivos) | 1d | 2026-03-06 | 2026-03-06 | A3470 | 12d | 0d | Operador OT 1844 [18 h] | 18 |
| A3490 |  | Fabricación Conjunto válvula/boquilla (DET. 1-5) | 1d | 2026-03-09 | 2026-03-09 | A3480 | 12d | 0d | Operador OT 1844 [18 h] | 18 |
| A3500 |  | Control de calidad (QC) e inspecciones | 1d | 2026-03-10 | 2026-03-10 | A3490 | 12d | 0d | Operador OT 1844 [9 h] | 9 |
|  | 7 | **Pre-armado en taller (armado en seco) / Despacho** |  | 2026-03-19 | 2026-03-23 |  |  |  |  |  |
| A3560 |  | Bastidor / estructura / Bandejas / Barandas / Parrillas FRP | 2d | 2026-03-19 | 2026-03-20 | A3360, A3410, A3440, A3460 | 10d | 0d | Operador OT 1844 [108 h] | 108 |
| A3570 |  | Despacho | 1d | 2026-03-23 | 2026-03-23 | A3560 | 10d | 0d | Operador OT 1844 [36 h] | 36 |
|  | 3 | **TAG 2225-ZM-(02 Unidades)-4** |  | 2026-02-16 | 2026-03-30 |  |  |  |  |  |
|  | 1 | **Bastidor** |  | 2026-03-06 | 2026-03-25 |  |  |  |  |  |
| A3580 |  | Corte y Fabricación de Vigas y Perfil Z | 6d | 2026-03-06 | 2026-03-13 | A3280 FS-1d | 0d |  | Operador OT 1844 [162 h] | 162 |
| A3590 |  | Corte y Fabricación de Consoldas Exteriores | 2d | 2026-03-06 | 2026-03-09 | A3580 SS | 5d | 0d | Operador OT 1844 [36 h] | 36 |
| A3600 |  | Corte y Fabricación de Consoldas Centrales | 2d | 2026-03-10 | 2026-03-11 | A3590 | 5d | 0d | Operador OT 1844 [36 h] | 36 |
| A3610 |  | Corte y Fabricación Distribuidor 8" | 2d | 2026-03-12 | 2026-03-13 | A3600 | 5d | 0d | Operador OT 1844 [36 h] | 36 |
| A3620 |  | Armado y Remates de Soldadura Bastidor | 2d | 2026-03-16 | 2026-03-17 | A3580, A3610 | 5d | 0d | Operador OT 1844 [54 h] | 54 |
| A3630 |  | Inspección de soldadura (VT, LP si aplica) | 1d | 2026-03-18 | 2026-03-18 | A3620 | 5d | 0d | Operador OT 1844 [9 h] | 9 |
| A3640 |  | Granallado / Preparación de Superficie | 1d | 2026-03-19 | 2026-03-19 | A3630 | 5d | 0d | Operador OT 1844 [18 h] | 18 |
| A3650 |  | Aplicación Capa Imprimante, Enlace y Terminación | 3d | 2026-03-20 | 2026-03-24 | A3640 | 5d | 0d | Operador OT 1844 [54 h] | 54 |
| A3660 |  | Control de calidad (QC) e inspecciones | 1d | 2026-03-25 | 2026-03-25 | A3650 | 5d | 0d | Operador OT 1844 [9 h] | 9 |

| ID | WBS | Activity | Duration | Start | Finish | Predecessors | Complete | Remaining | Planned start | Planned finish | Total float | Free float | Resources | Cost | Actual cost |
| --- | --- | --- | --- | --- | --- | --- | --- | --- | --- | --- | --- | --- | --- | --- | --- |
|  | 2 | **Bandeja Perimetral (12 Un)** |  | 2026-02-16 | 2026-03-24 |  |  |  |  |  |  |  |  |  |  |
| A3670 |  | Corte, perforado y conformado (fabricación del cuerpo) SS316L | 4d | 2026-02-16 A | 2026-03-12 | A3580 SS+1d | 50% | 4d | 2026-03-09 | 2026-03-12 | 6d | 0d | Operador OT 1844 [72 h] | 72 | 36 |
| A3680 |  | Cilindrado (fabricación del cuerpo) SS316L | 2d | 2026-03-13 | 2026-03-16 | A3670 |  |  |  |  | 6d | 0d | Operador OT 1844 [36 h] | 36 |  |
| A3690 |  | Armado, Soldadura y Rectificado de Bandejas | 3d | 2026-03-17 | 2026-03-19 | A3680 |  |  |  |  | 6d | 0d | Operador OT 1844 [108 h] | 108 |  |
| A3700 |  | Terminaciones superficiales (Limpieza, Decapado, Pasivado) | 2d | 2026-03-20 | 2026-03-23 | A3690 |  |  |  |  | 6d | 0d | Operador OT 1844 [54 h] | 54 |  |
| A3710 |  | Control de calidad (QC) e inspecciones | 1d | 2026-03-24 | 2026-03-24 | A3700 |  |  |  |  | 6d | 1d | Operador OT 1844 [9 h] | 9 |  |
|  | 3 | **Bandeja Central (12 Un)** |  | 2026-02-16 | 2026-03-24 |  |  |  |  |  |  |  |  |  |  |
| A3810 |  | Corte, perforado y conformado (fabricación del cuerpo) SS316L | 4d | 2026-02-16 A | 2026-03-12 | A3670 SS | 50% | 4d | 2026-03-09 | 2026-03-12 | 9d | 0d | Operador OT 1844 [72 h] | 72 | 36 |
| A3820 |  | Cilindrado (fabricación del cuerpo) SS316L | 2d | 2026-03-13 | 2026-03-16 | A3810 |  |  |  |  | 9d | 0d | Operador OT 1844 [36 h] | 36 |  |
| A3830 |  | Armado, Soldadura y Rectificado de Bandejas | 3d | 2026-03-17 | 2026-03-19 | A3820 |  |  |  |  | 9d | 0d | Operador OT 1844 [108 h] | 108 |  |
| A3840 |  | Terminaciones superficiales (Limpieza, Decapado, Pasivado) | 2d | 2026-03-20 | 2026-03-23 | A3830 |  |  |  |  | 9d | 0d | Operador OT 1844 [54 h] | 54 |  |
| A3850 |  | Control de calidad (QC) e inspecciones | 1d | 2026-03-24 | 2026-03-24 | A3840 |  |  |  |  | 9d |  | Operador OT 1844 [9 h] | 9 |  |
|  | 4 | **Barandas (16 Un)** |  | 2026-03-09 | 2026-03-23 |  |  |  |  |  |  |  |  |  |  |
| A3720 |  | Fabricación Baranda radial removible | 7d | 2026-03-09 | 2026-03-17 | A3670 SS+2d |  |  |  |  | 7d | 0d | Operador OT 1844 [189 h] | 189 |  |
| A3730 |  | Aplicación Capa Imprimante, Enlace y Terminación | 3d | 2026-03-18 | 2026-03-20 | A3720 |  |  |  |  | 7d | 0d | Operador OT 1844 [54 h] | 54 |  |
| A3740 |  | Control de calidad (QC) e inspecciones | 1d | 2026-03-23 | 2026-03-23 | A3730 |  |  |  |  | 7d | 2d | Operador OT 1844 [9 h] | 9 |  |
|  | 5 | **Parrilla de Piso (36 Un)** |  | 2026-03-18 | 2026-03-23 |  |  |  |  |  |  |  |  |  |  |
| A3750 |  | Trazado y Corte de FRP | 3d | 2026-03-18 | 2026-03-20 | A3800 |  |  |  |  | 7d | 0d | Operador OT 1844 [54 h] | 54 |  |
| A3760 |  | Control de calidad (QC) e inspecciones | 1d | 2026-03-23 | 2026-03-23 | A3750 |  |  |  |  | 7d | 2d | Operador OT 1844 [9 h] | 9 |  |
|  | 6 | **Manifold Distribuidor** |  | 2026-03-11 | 2026-03-17 |  |  |  |  |  |  |  |  |  |  |
| A3770 |  | Fabricación del cuerpo central (spool/cabezal) | 2d | 2026-03-11 | 2026-03-12 | A3720 SS+2d |  |  |  |  | 7d | 0d | Operador OT 1844 [36 h] | 36 |  |
| A3780 |  | Fabricación Brazos radiales (spools repetitivos) | 1d | 2026-03-13 | 2026-03-13 | A3770 |  |  |  |  | 7d | 0d | Operador OT 1844 [18 h] | 18 |  |
| A3790 |  | Fabricación Conjunto válvula/boquilla (DET. 1-5) | 1d | 2026-03-16 | 2026-03-16 | A3780 |  |  |  |  | 7d | 0d | Operador OT 1844 [18 h] | 18 |  |
| A3800 |  | Control de calidad (QC) e inspecciones | 1d | 2026-03-17 | 2026-03-17 | A3790 |  |  |  |  | 7d | 0d | Operador OT 1844 [9 h] | 9 |  |

| ID | WBS | Activity | Duration | Start | Finish | Predecessors | Total float | Free float | Resources | Cost |
| --- | --- | --- | --- | --- | --- | --- | --- | --- | --- | --- |
|  | 7 | **Pre-armado en taller (armado en seco) / Despacho** |  | 2026-03-26 | 2026-03-30 |  |  |  |  |  |
| A3860 |  | Bastidor / estructura / Bandejas / Barandas / Parrillas FRP | 2d | 2026-03-26 | 2026-03-27 | A3660, A3710, A3740, A3760 | 5d | 0d | Operador OT 1844 [108 h] | 108 |
| A3870 |  | Despacho | 1d | 2026-03-30 | 2026-03-30 | A3860 | 5d | 0d | Operador OT 1844 [36 h] | 36 |
|  | 4 | **TAG 2225-ZM-(02 Unidades)-5** |  | 2026-03-13 | 2026-04-06 |  |  |  |  |  |
|  | 1 | **Bastidor** |  | 2026-03-13 | 2026-04-01 |  |  |  |  |  |
| A3880 |  | Corte y Fabricación de Vigas y Perfil Z | 6d | 2026-03-13 | 2026-03-20 | A3580 FS-1d | 0d |  | Operador OT 1844 [162 h] | 162 |
| A3890 |  | Corte y Fabricación de Consoldas Exteriores | 2d | 2026-03-13 | 2026-03-16 | A3880 SS | 0d |  | Operador OT 1844 [36 h] | 36 |
| A3900 |  | Corte y Fabricación de Consoldas Centrales | 2d | 2026-03-17 | 2026-03-18 | A3890 | 0d |  | Operador OT 1844 [36 h] | 36 |
| A3910 |  | Corte y Fabricación Distribuidor 8" | 2d | 2026-03-19 | 2026-03-20 | A3900 | 0d |  | Operador OT 1844 [36 h] | 36 |
| A3920 |  | Armado y Remates de Soldadura Bastidor | 2d | 2026-03-23 | 2026-03-24 | A3880, A3910 | 0d |  | Operador OT 1844 [54 h] | 54 |
| A3930 |  | Inspección de soldadura (VT, LP si aplica) | 1d | 2026-03-25 | 2026-03-25 | A3920 | 0d |  | Operador OT 1844 [9 h] | 9 |
| A3940 |  | Granallado / Preparación de Superficie | 1d | 2026-03-26 | 2026-03-26 | A3930 | 0d |  | Operador OT 1844 [18 h] | 18 |
| A3950 |  | Aplicación Capa Imprimante, Enlace y Terminación | 3d | 2026-03-27 | 2026-03-31 | A3940 | 0d |  | Operador OT 1844 [54 h] | 54 |
| A3960 |  | Control de calidad (QC) e inspecciones | 1d | 2026-04-01 | 2026-04-01 | A3950 | 0d |  | Operador OT 1844 [9 h] | 9 |
|  | 2 | **Bandeja Perimetral (12 Un)** |  | 2026-03-16 | 2026-03-31 |  |  |  |  |  |
| A3970 |  | Corte, perforado y conformado (fabricación del cuerpo) SS316L | 4d | 2026-03-16 | 2026-03-19 | A3880 SS+1d | 0d |  | Operador OT 1844 [72 h] | 72 |
| A3980 |  | Cilindrado (fabricación del cuerpo) SS316L | 2d | 2026-03-20 | 2026-03-23 | A3970 | 1d | 0d | Operador OT 1844 [36 h] | 36 |
| A3990 |  | Armado, Soldadura y Rectificado de Bandejas | 3d | 2026-03-24 | 2026-03-26 | A3980 | 1d | 0d | Operador OT 1844 [108 h] | 108 |
| A4000 |  | Terminaciones superficiales (Limpieza, Decapado, Pasivado) | 2d | 2026-03-27 | 2026-03-30 | A3990 | 1d | 0d | Operador OT 1844 [54 h] | 54 |
| A4010 |  | Control de calidad (QC) e inspecciones | 1d | 2026-03-31 | 2026-03-31 | A4000 | 1d |  | Operador OT 1844 [9 h] | 9 |
|  | 3 | **Bandeja Central (12 Un)** |  | 2026-03-16 | 2026-03-31 |  |  |  |  |  |
| A4110 |  | Corte, perforado y conformado (fabricación del cuerpo) SS316L | 4d | 2026-03-16 | 2026-03-19 | A3970 SS | 4d | 0d | Operador OT 1844 [72 h] | 72 |
| A4120 |  | Cilindrado (fabricación del cuerpo) SS316L | 2d | 2026-03-20 | 2026-03-23 | A4110 | 4d | 0d | Operador OT 1844 [36 h] | 36 |
| A4130 |  | Armado, Soldadura y Rectificado de Bandejas | 3d | 2026-03-24 | 2026-03-26 | A4120 | 4d | 0d | Operador OT 1844 [108 h] | 108 |
| A4140 |  | Terminaciones superficiales (Limpieza, Decapado, Pasivado) | 2d | 2026-03-27 | 2026-03-30 | A4130 | 4d | 0d | Operador OT 1844 [54 h] | 54 |
| A4150 |  | Control de calidad (QC) e inspecciones | 1d | 2026-03-31 | 2026-03-31 | A4140 | 4d |  | Operador OT 1844 [9 h] | 9 |

| ID | WBS | Activity | Duration | Start | Finish | Predecessors | Total float | Resources | Cost |
| --- | --- | --- | --- | --- | --- | --- | --- | --- | --- |
|  | 4 | **Barandas (16 Un)** |  | 2026-03-18 | 2026-04-01 |  |  |  |  |
| A4020 |  | Fabricación Baranda radial removible | 7d | 2026-03-18 | 2026-03-26 | A3970 SS+2d | 0d | Operador OT 1844 [189 h] | 189 |
| A4030 |  | Aplicación Capa Imprimante, Enlace y Terminación | 3d | 2026-03-27 | 2026-03-31 | A4020 | 0d | Operador OT 1844 [54 h] | 54 |
| A4040 |  | Control de calidad (QC) e inspecciones | 1d | 2026-04-01 | 2026-04-01 | A4030 | 0d | Operador OT 1844 [9 h] | 9 |
|  | 5 | **Parrilla de Piso (36 Un)** |  | 2026-03-27 | 2026-04-01 |  |  |  |  |
| A4050 |  | Trazado y Corte de FRP | 3d | 2026-03-27 | 2026-03-31 | A4100 | 0d | Operador OT 1844 [54 h] | 54 |
| A4060 |  | Control de calidad (QC) e inspecciones | 1d | 2026-04-01 | 2026-04-01 | A4050 | 0d | Operador OT 1844 [9 h] | 9 |
|  | 6 | **Manifold Distribuidor** |  | 2026-03-20 | 2026-03-26 |  |  |  |  |
| A4070 |  | Fabricación del cuerpo central (spool/cabezal) | 2d | 2026-03-20 | 2026-03-23 | A4020 SS+2d | 0d | Operador OT 1844 [36 h] | 36 |
| A4080 |  | Fabricación Brazos radiales (spools repetitivos) | 1d | 2026-03-24 | 2026-03-24 | A4070 | 0d | Operador OT 1844 [18 h] | 18 |
| A4090 |  | Fabricación Conjunto válvula/boquilla (DET. 1-5) | 1d | 2026-03-25 | 2026-03-25 | A4080 | 0d | Operador OT 1844 [18 h] | 18 |
| A4100 |  | Control de calidad (QC) e inspecciones | 1d | 2026-03-26 | 2026-03-26 | A4090 | 0d | Operador OT 1844 [9 h] | 9 |
|  | 7 | **Pre-armado en taller (armado en seco) / Despacho** |  | 2026-04-02 | 2026-04-06 |  |  |  |  |
| A4160 |  | Bastidor / estructura / Bandejas / Barandas / Parrillas FRP | 2d | 2026-04-02 | 2026-04-03 | A3960, A4010, A4040, A4060 | 0d | Operador OT 1844 [108 h] | 108 |
| A4170 |  | Despacho | 1d | 2026-04-06 | 2026-04-06 | A4160 | 0d | Operador OT 1844 [36 h] | 36 |
