| code | name | status | type | wbs | early_start | early_end | target_start | target_end | phys_pct | float_hr | remain_hr |
| --- | --- | --- | --- | --- | --- | --- | --- | --- | --- | --- | --- |
| A2910 | Armado, Soldadura y Rectificado de Bandejas | TK_NotStart | TT_Task | Bandeja Central (12 Un) | 2026-02-26 08:00 | 2026-03-02 18:00 | 2026-02-26 08:00 | 2026-03-02 18:00 | 0.0 | 198.0 | 27.0 |
| A2900 | Cilindrado (fabricación del cuerpo) SS316L | TK_NotStart | TT_Task | Bandeja Central (12 Un) | 2026-02-24 08:00 | 2026-02-25 18:00 | 2026-02-24 08:00 | 2026-02-25 18:00 | 0.0 | 198.0 | 18.0 |
| A2720 | Granallado / Preparación de Superficie | TK_NotStart | TT_Task | Bastidor | 2026-03-01 07:30 | 2026-03-01 16:30 | 2026-03-01 07:30 | 2026-03-01 16:30 | 0.0 | 252.0 | 9.0 |
| A2670 | Corte y Fabricación de Consoldas Centrales | TK_NotStart | TT_Task | Bastidor | 2026-02-25 08:00 | 2026-02-26 18:00 | 2026-02-25 08:00 | 2026-02-26 18:00 | 0.0 | 243.0 | 18.0 |
| A2690 | Armado y Remates de Soldadura Bastidor | TK_NotStart | TT_Task | Bastidor | 2026-02-27 08:00 | 2026-02-28 18:00 | 2026-02-27 08:00 | 2026-02-28 18:00 | 0.0 | 216.0 | 18.0 |
| A2870 | Fabricación Conjunto válvula/boquilla (DET. 1-5) | TK_NotStart | TT_Task | Manifold Distribuidor | 2026-02-27 08:00 | 2026-02-27 18:00 | 2026-02-27 08:00 | 2026-02-27 18:00 | 0.0 | 171.0 | 9.0 |
| A2860 | Fabricación Brazos radiales (spools repetitivos) | TK_NotStart | TT_Task | Manifold Distribuidor | 2026-02-26 08:00 | 2026-02-26 18:00 | 2026-02-26 08:00 | 2026-02-26 18:00 | 0.0 | 171.0 | 9.0 |
| A3000 | Corte y Fabricación de Consoldas Centrales | TK_NotStart | TT_Task | Bastidor | 2026-02-25 08:00 | 2026-02-26 18:00 | 2026-02-25 08:00 | 2026-02-26 18:00 | 0.0 | 135.0 | 18.0 |
| A2710 | Inspección de soldadura (VT, LP si aplica) | TK_NotStart | TT_Task | Bastidor | 2026-02-28 08:00 | 2026-02-28 18:00 | 2026-02-28 08:00 | 2026-02-28 18:00 | 0.0 | 216.0 | 9.0 |
| A2760 | Cilindrado (fabricación del cuerpo) SS316L | TK_NotStart | TT_Task | Bandeja Perimetral (12 Un) | 2026-02-24 08:00 | 2026-02-25 18:00 | 2026-02-24 08:00 | 2026-02-25 18:00 | 0.0 | 180.0 | 18.0 |
| A2880 | Control de calidad (QC) e inspecciones | TK_NotStart | TT_Task | Manifold Distribuidor | 2026-03-02 08:00 | 2026-03-02 18:00 | 2026-03-02 08:00 | 2026-03-02 18:00 | 0.0 | 171.0 | 9.0 |
| A3010 | Corte y Fabricación Distribuidor 8"" | TK_NotStart | TT_Task | Bastidor | 2026-02-27 08:00 | 2026-03-02 18:00 | 2026-02-27 08:00 | 2026-03-02 18:00 | 0.0 | 135.0 | 18.0 |
| A2990 | Corte y Fabricación de Consoldas Exteriores | TK_NotStart | TT_Task | Bastidor | 2026-02-23 08:00 | 2026-02-24 18:00 | 2026-02-23 08:00 | 2026-02-24 18:00 | 0.0 | 135.0 | 18.0 |
| A2770 | Armado, Soldadura y Rectificado de Bandejas | TK_NotStart | TT_Task | Bandeja Perimetral (12 Un) | 2026-02-26 08:00 | 2026-03-02 18:00 | 2026-02-26 08:00 | 2026-03-02 18:00 | 0.0 | 180.0 | 27.0 |
