| code | name | status | type | wbs | early_start | early_end | target_start | target_end | act_start | phys_pct | float_hr | remain_hr | slipped | bl_end | ac_end_cur | driving |
| --- | --- | --- | --- | --- | --- | --- | --- | --- | --- | --- | --- | --- | --- | --- | --- | --- |
| A2660 | Corte y Fabricación de Consoldas Exteriores | TK_Active | TT_Task | Bastidor | 2026-02-23 09:48 | 2026-02-24 15:18 | 2026-02-24 08:00 | 2026-02-26 18:00 | 2026-02-13 08:00 | 50.0 | 238.5 | 13.5 | True | 2026-02-16 | 2026-02-24 |  |
| A3810 | Corte, perforado y conformado (fabricación del cuerpo) SS316L | TK_Active | TT_Task | Bandeja Central (12 Un) | 2026-03-06 09:48 | 2026-03-12 16:12 | 2026-03-06 09:48 | 2026-03-19 11:36 | 2026-02-16 09:48 | 0.0 | 75.6 | 41.4 |  | 2026-03-12 | 2026-03-12 |  |
| A2650 | Corte y Fabricación de Vigas y Perfil Z | TK_Active | TT_Task | Bastidor | 2026-02-23 09:48 | 2026-02-26 09:48 | 2026-02-24 08:00 | 2026-03-03 18:00 | 2026-02-13 08:00 | 0.0 | 156.6 | 27.0 | True | 2026-02-20 | 2026-02-26 |  |
| A1660 | Suminstro de Materiales | TK_Active | TT_Task | Suministro conjuntos sistema de agua de lavado | 2026-02-23 08:00 | 2026-02-27 09:48 | 2026-01-29 08:00 | 2026-02-17 18:00 | 2026-02-09 08:00 | 70.0 | 156.6 | 37.8 | True | 2026-02-18 | 2026-02-27 |  |
| A2800 | Fabricación Baranda radial removible | TK_Active | TT_Task | Barandas (16 Un) | 2026-02-23 09:48 | 2026-03-02 16:12 | 2026-02-23 09:48 | 2026-03-04 09:48 | 2026-02-20 09:48 | 0.0 | 156.6 | 50.4 | True | 2026-02-26 | 2026-03-02 |  |
| A3210 | Corte, perforado y conformado (fabricación del cuerpo) SS316L | TK_Active | TT_Task | Bandeja Central (12 Un) | 2026-02-23 08:00 | 2026-02-26 18:00 | 2026-02-23 08:00 | 2026-03-04 18:00 | 2026-02-16 08:00 | 0.0 | 163.8 | 36.0 |  | 2026-02-26 | 2026-02-26 |  |
| A3510 | Corte, perforado y conformado (fabricación del cuerpo) SS316L | TK_Active | TT_Task | Bandeja Central (12 Un) | 2026-02-27 09:48 | 2026-03-05 14:51 | 2026-02-27 09:48 | 2026-03-12 08:54 | 2026-02-16 09:48 | 0.0 | 121.95 | 40.05 |  | 2026-03-05 | 2026-03-05 |  |
| A3370 | Corte, perforado y conformado (fabricación del cuerpo) SS316L | TK_Active | TT_Task | Bandeja Perimetral (12 Un) | 2026-02-27 09:48 | 2026-03-05 14:51 | 2026-02-27 09:48 | 2026-03-12 08:54 | 2026-02-16 09:48 | 0.0 | 94.95 | 40.05 |  | 2026-03-05 | 2026-03-05 |  |
| A2980 | Corte y Fabricación de Vigas y Perfil Z | TK_Active | TT_Task | Bastidor | 2026-02-23 08:00 | 2026-02-27 09:48 | 2026-02-25 09:48 | 2026-03-05 09:48 | 2026-02-16 09:48 | 0.0 | 0.0 | 37.8 |  | 2026-02-27 | 2026-02-27 | True |
| A3670 | Corte, perforado y conformado (fabricación del cuerpo) SS316L | TK_Active | TT_Task | Bandeja Perimetral (12 Un) | 2026-03-06 09:48 | 2026-03-12 16:12 | 2026-03-06 09:48 | 2026-03-19 11:36 | 2026-02-16 09:48 | 0.0 | 48.6 | 41.4 |  | 2026-03-12 | 2026-03-12 |  |
| A3070 | Corte, perforado y conformado (fabricación del cuerpo) SS316L | TK_Active | TT_Task | Bandeja Perimetral (12 Un) | 2026-02-23 08:00 | 2026-02-26 18:00 | 2026-02-23 08:00 | 2026-03-04 18:00 | 2026-02-16 08:00 | 0.0 | 136.8 | 36.0 |  | 2026-02-26 | 2026-02-26 |  |
| A2680 | Corte y Fabricación Distribuidor 8"" | TK_Active | TT_Task | Bastidor | 2026-02-23 08:00 | 2026-02-24 12:30 | 2026-02-26 15:18 | 2026-03-03 15:18 | 2026-02-19 08:00 | 0.0 | 186.3 | 13.5 | True | 2026-02-20 | 2026-02-24 |  |
| A2850 | Fabricación del cuerpo central (spool/cabezal) | TK_Active | TT_Task | Manifold Distribuidor | 2026-02-24 11:36 | 2026-02-24 16:12 | 2026-02-24 11:36 | 2026-02-26 11:36 | 2026-02-13 11:36 | 0.0 | 165.6 | 3.6 | True | 2026-02-23 | 2026-02-24 |  |
