# Programa de Seguimiento MEM Patio de Estanques y OOCC Misceláneos 14.12.25 (Sin Fuera de Frec.)

Schedule from Primavera P6, 2025-06-30 to 2026-03-15, data date 2025-12-14, costs in CLP, A marks actual dates.

## Calendars

- 14x14: Mon-Sun 08:00-13:00, 14:00-20:00.

## Resources

| Resource | Group | Rate | Notes |
| --- | --- | --- | --- |
| SQM-MECANICA | labor | 1 |  |
| SQM-ESTRUCTURA | labor | 1 |  |
| SQM-PIPING | labor | 1 |  |
| SQM-ELÉCTRICO | labor | 1 | ï»¿ |
| SQM-INSTRUMENTACIÓN | labor | 1 |  |
| SQM-OOCC | labor | 1 |  |

## Schedule

| ID | WBS | Activity | Type | Duration | Start | Finish | Predecessors | Complete | Planned start | Planned finish | Total float | Constraint | Resources | Cost | Actual cost | Unidad | Cantidad | Área | Ítem LP | Ìtem EDP |
| --- | --- | --- | --- | --- | --- | --- | --- | --- | --- | --- | --- | --- | --- | --- | --- | --- | --- | --- | --- | --- |
|  | 1 | **HITOS** |  |  | 2025-06-30 | 2026-03-15 |  |  |  |  |  |  |  |  |  |  |  |  |  |  |
| A1000 |  | Inicio de Proyecto | milestone | 0d | 2025-06-30 A | 2025-06-30 A |  | 100% | 2025-12-07 | 2025-12-07 |  |  |  |  |  | gl | 0 |  |  |  |
| A1010 |  | Movilización, Instalación de Faenas y Proceso de Acreditación MEM Patio de Estanques |  | 15.27d | 2025-07-30 A | 2025-07-30 A | A1000 SS | 100% | 2025-12-07 | 2025-12-20 |  |  |  |  |  | gl | 0 |  |  |  |
| A1020 |  | Adjudicación OOCC Misceláneos Addendum 01 | milestone | 0d | 2025-08-28 A | 2025-08-28 A |  | 100% | 2025-12-15 | 2025-12-15 |  | start on or after 2025-08-28 |  |  |  | gl | 0 |  |  |  |
| A1030 |  | Proceso de Acreditación OOCC Misceláneos |  | 15.27d | 2025-08-28 A | 2025-09-10 A | A1020 | 100% | 2025-12-07 | 2025-12-20 |  |  |  |  |  | gl | 0 |  |  |  |
| A1040 |  | Desmovilización |  | 15.27d | 2026-02-28 | 2026-03-15 | A1080 |  |  |  | 0d |  |  |  |  | gl | 0 |  |  |  |
| A1050 |  | Término de Proyecto | milestone | 0d | 2026-03-15 | 2026-03-15 | A1040 FF |  |  |  | 0d |  |  |  |  | gl | 0 |  |  |  |
|  | 2 | **HITOS CONTRACTUALES** |  |  | 2025-07-14 | 2026-02-28 |  |  |  |  |  |  |  |  |  |  |  |  |  |  |
| A1060 |  | Inicio Constructuvo Contractual MEM Patio de Estanques | milestone | 0d | 2025-07-14 A | 2025-07-14 A | A1010 | 100% | 2025-12-07 | 2025-12-07 |  |  |  |  |  | gl | 0 |  |  |  |
| A1070 |  | Inicio Constructuvo Contractual OOCC Misceláneos (Addendum 01) | milestone | 0d | 2025-09-11 A | 2025-09-11 A | A1030 | 100% | 2025-12-07 | 2025-12-07 |  |  |  |  |  | gl | 0 |  |  |  |
| A1090 |  | Término Constructivo Contractual OOCC Misceláneos (Addendum 01) | milestone | 0d | 2026-02-05 | 2026-02-05 | A4690 FF, A5170 FF, A7440, A3910 FF, A3980 FF, A8330, A8840, A4060, A4480, A5950, A6490, A6600, A8550, A7670 FF |  |  |  | 38.14d |  |  |  |  | un | 0 |  |  |  |
| A1080 |  | Término Constructivo Contractual MEM Patio de Estanques | milestone | 0d | 2026-02-28 | 2026-02-28 | A2180 FF, A2060 FF, A1940, A2640, A2720, A3250 FF, A3280, A2070, A3940, A1910 |  |  |  | 0d |  |  |  |  | gl | 0 |  |  |  |
|  | 3 | **CONSTRUCCIÓN** |  |  | 2025-07-14 | 2026-02-28 |  |  |  |  |  |  |  |  |  |  |  |  |  |  |
|  | 1 | **CONTRATO SC15682 - MEM PATIO DE ESTANQUES** |  |  | 2025-07-14 | 2026-02-28 |  |  |  |  |  |  |  |  |  |  |  |  |  |  |
|  | 1 | **SECTOR PATIO DE ESTANQUES** |  |  | 2025-07-14 | 2026-02-28 |  |  |  |  |  |  |  |  |  |  |  |  |  |  |
|  | 1 | **OBRAS MECÁNICAS PATIO DE ESTANQUES** |  |  | 2025-07-14 | 2025-12-24 |  |  |  |  |  |  |  |  |  |  |  |  |  |  |
|  | 1 | **MONTAJE DE ESTANQUES** |  |  | 2025-07-14 | 2025-10-31 |  |  |  |  |  |  |  |  |  |  |  |  |  |  |
|  | 1 | **MONTAJE DE ESTANQUES RED CONTRA INCENDIOS (RCI)** |  |  | 2025-07-14 | 2025-08-31 |  |  |  |  |  |  |  |  |  |  |  |  |  |  |
| A1100 |  | Estanques de Agua para RCI TAG: 5764-EST-001 |  | 106.91d | 2025-07-14 A | 2025-08-31 A | A1060 SS | 100% | 2025-07-14 | 2025-10-19 |  |  | SQM-MECANICA [4320 h] | 4,320 | 4,320 | un | 1 | 5764-RCI | 1.1.26 | 1.1.27 |
| A1110 |  | Estanques de Agua para RCI TAG: 5764-EST-015 |  | 90.55d | 2025-08-03 A | 2025-08-30 A | A1100 SS | 100% | 2025-08-03 | 2025-10-24 |  |  | SQM-MECANICA [4320 h] | 4,320 | 4,320 | un | 1 | 5764-RCI | 1.1.26 | 1.1.27 |
|  | 2 | **MONTAJE DE ESTANQUES DE AGUA, ÁREA 1000** |  |  | 2025-08-07 | 2025-10-31 |  |  |  |  |  |  |  |  |  |  |  |  |  |  |
| A1130 |  | Estanque Agua Industrial y Plataforma Superior TAG: 5817-EST-1041 |  | 82.91d | 2025-08-07 A | 2025-10-30 A | A1110 SS+3.27d | 100% | 2025-08-07 | 2025-10-21 |  |  | SQM-MECANICA [3936 h] | 3,936 | 3,936 | un | 1 | 5817-1000 | 1.1.1 | 1.1.2 |
| A1140 |  | Estanque Agua Potable y Plataforma Superior TAG: 5817-EST-1071 |  | 86.18d | 2025-08-11 A | 2025-10-31 A | A1130 SS+3.27d | 100% | 2025-08-11 | 2025-10-28 |  |  | SQM-MECANICA [996 h] | 996 | 996 | un | 1 | 5817-1000 | 1.1.2 | 1.1.3 |
| A1120 |  | Estanque Agua Ultrapura y Plataforma Superior TAG: 5817-EST-1001 |  | 82.91d | 2025-08-15 A | 2025-10-30 A | A1140 SS+3.27d | 100% | 2025-08-15 | 2025-10-29 |  |  | SQM-MECANICA [4164 h] | 4,164 | 4,164 | un | 1 | 5817-1000 | 1.1.1 | 1.1.1 |

Notes:
- A1110: Corregir: No se encuentra piping ( interconexión) para poder realizar pruebas de estanqueidad / línea 10621 / se envía SDC
- A1120: Corregir: Se desvían recursos para atender urgencias de la planta, justifica SDC 5 días de detención de trabajos// Interferencia de boquilla por soldar que choca con estructura de plataformas de operaciones

| ID | WBS | Activity | Duration | Start | Finish | Predecessors | Complete | Remaining | Planned start | Planned finish | Total float | Free float | Resources | Cost | Actual cost | Área | Unidad | Cantidad | Ítem LP | Ìtem EDP |
| --- | --- | --- | --- | --- | --- | --- | --- | --- | --- | --- | --- | --- | --- | --- | --- | --- | --- | --- | --- | --- |
|  | 2 | **MONTAJE DE BOMBAS** |  | 2025-08-03 | 2025-12-24 |  |  |  |  |  |  |  |  |  |  |  |  |  |  |  |
| A1170 |  | Bomba Centrífuga y Motor TAG: 5817-BBA-1052; 5817-MTR-1053 | 5.45d | 2025-08-03 A | 2025-12-18 | A1110 SS | 35% | 3.55d | 2025-08-03 | 2025-08-07 | 52.24d | 0d | SQM-MECANICA [139.9 h] | 139.9 | 48.97 | TK-1041 | un | 1 | 1.1.4 | 1.1.6 |
| A1150 |  | Bomba Centrífuga y Motor TAG: 5817-BBA-1042; 5817-MTR-1043 | 5.45d | 2025-08-08 A | 2025-12-18 | A1170 FF | 65% | 1.91d | 2025-08-08 | 2025-08-12 | 52.24d | 0d | SQM-MECANICA [98.25 h] | 98.25 | 63.86 | TK-1041 | un | 1 | 1.1.3 | 1.1.4 |
| A1190 |  | Bomba Centrífuga y Motor TAG: 5817-BBA-1074; 5817-MTR-1075 | 5.45d | 2025-08-13 A | 2025-12-18 | A1150 FF | 65% | 1.91d | 2025-08-13 | 2025-08-17 | 52.24d | 0d | SQM-MECANICA [139.9 h] | 139.9 | 90.94 | TK-1071 | un | 1 | 1.1.7 | 1.1.8 |
| A1210 |  | Bomba Centrífuga y Motor TAG: 5817-BBA-1080; 5817-MTR-1081 | 5.45d | 2025-08-18 A | 2025-12-18 | A1190 FF | 65% | 1.91d | 2025-08-18 | 2025-08-22 | 52.24d | 0d | SQM-MECANICA [139.9 h] | 139.9 | 90.94 | TK-1071 | un | 1 | 1.1.9 | 1.1.10 |
| A1220 |  | Bomba Centrífuga y Motor TAG: 5817-BBA-1083; 5817-MTR-1084 | 5.45d | 2025-08-23 A | 2025-12-18 | A1210 FF | 65% | 1.91d | 2025-08-23 | 2025-08-27 | 52.24d | 0d | SQM-MECANICA [139.9 h] | 139.9 | 90.94 | TK-1071 | un | 1 | 1.1.10 | 1.1.11 |
| A1160 |  | Bomba Centrífuga y Motor TAG: 5817-BBA-1072; 5817-MTR-1073 | 5.45d | 2025-08-28 A | 2025-12-18 | A1220 FF | 65% | 1.91d | 2025-08-28 | 2025-09-01 | 52.24d | 0d | SQM-MECANICA [98.25 h] | 98.25 | 63.86 | TK-1071 | un | 1 | 1.1.6 | 1.1.5 |
| A1180 |  | Bomba Centrífuga y Motor TAG: 5817-BBA-1055; 5817-MTR-1056 | 5.45d | 2025-09-02 A | 2025-12-18 | A1160 FF | 65% | 1.91d | 2025-09-02 | 2025-09-06 | 52.24d | 1.91d | SQM-MECANICA [139.9 h] | 139.9 | 90.94 | TK-1041 | un | 1 | 1.1.5 | 1.1.7 |
| A1230 |  | Bomba Centrífuga y Motor TAG: 5817-BBA-4003; 5817-MTR-4004 | 5.45d | 2025-09-12 A | 2025-12-20 | A1200 FF | 10% | 4.91d | 2025-09-12 | 2025-09-16 | 50.33d | 0d | SQM-MECANICA |  |  | TK-3034 | un | 0 | 1.1.11 | 1.1.12 |
| A1240 |  | Bomba Centrífuga y Motor TAG: 5817-BBA-4006; 5817-MTR-4007 | 5.45d | 2025-09-17 A | 2025-12-20 | A1230 FF | 10% | 4.91d | 2025-09-17 | 2025-09-21 | 50.33d | 0d | SQM-MECANICA |  |  | TK-3034 | un | 0 | 1.1.12 | 1.1.13 |
| A1250 |  | Bomba Centrífuga y Motor TAG: 5817-BBA-4009; 5817-MTR-4010 | 5.45d | 2025-09-22 A | 2025-12-20 | A1240 FF | 35% | 3.55d | 2025-09-22 | 2025-09-26 | 50.33d | 0d | SQM-MECANICA [139.9 h] | 139.9 | 48.97 | TK-4001/2 | un | 1 | 1.1.13 | 1.1.14 |
| A1260 |  | Bomba Centrífuga y Motor TAG: 5817-BBA-4012; 5817-MTR-4013 | 5.45d | 2025-09-27 A | 2025-12-20 | A1250 FF | 35% | 3.55d | 2025-09-27 | 2025-10-01 | 50.33d | 0d | SQM-MECANICA [139.9 h] | 139.9 | 48.97 | TK-4001/2 | un | 1 | 1.1.14 | 1.1.15 |
| A1270 |  | Bomba Centrífuga y Motor TAG: 5817-BBA-4015; 5817-MTR-4016 | 5.45d | 2025-10-02 A | 2025-12-20 | A1260 FF | 35% | 3.55d | 2025-10-02 | 2025-10-06 | 50.33d | 0d | SQM-MECANICA [139.9 h] | 139.9 | 48.97 | TK-4001/2 | un | 1 | 1.1.15 | 1.1.16 |
| A1280 |  | Bomba Centrífuga y Motor TAG: 5817-BBA-4018; 5817-MTR-4019 | 5.45d | 2025-10-07 A | 2025-12-20 | A1270 FF | 35% | 3.55d | 2025-10-07 | 2025-10-11 | 50.33d | 0d | SQM-MECANICA [139.9 h] | 139.9 | 48.97 | TK-4001/2 | un | 1 | 1.1.16 | 1.1.17 |
| A1290 |  | Bomba Centrífuga y Motor TAG: 5817-BBA-4021; 5817-MTR-4022 | 5.45d | 2025-10-12 A | 2025-12-20 | A1280 FF | 35% | 3.55d | 2025-10-12 | 2025-10-16 | 50.33d | 0d | SQM-MECANICA [139.9 h] | 139.9 | 48.97 | TK-4001/2 | un | 1 | 1.1.17 | 1.1.18 |
| A1300 |  | Bomba Centrífuga y Motor TAG: 5817-BBA-4024; 5817-MTR-4025 | 5.45d | 2025-10-17 A | 2025-12-20 | A1290 FF | 35% | 3.55d | 2025-10-17 | 2025-10-21 | 50.33d | 0d | SQM-MECANICA [139.9 h] | 139.9 | 48.97 | TK-4001/2 | un | 1 | 1.1.18 | 1.1.19 |
| A1330 |  | Bomba Centrífuga y Motor TAG: 5817-BBA-5008; 5817-MTR-5009 | 5.45d | 2025-11-01 A | 2025-12-21 | A1300 SS | 12% | 4.77d | 2025-11-01 | 2025-11-05 | 50.33d | 0d | SQM-MECANICA [139.9 h] | 139.9 | 17.49 | TK-5001 | un | 1 | 1.1.21 | 1.1.22 |
| A1340 |  | Bomba Centrífuga y Motor TAG: 5817-BBA-5011; 5817-MTR-5012 | 5.45d | 2025-11-06 A | 2025-12-20 | A1330 SS | 35% | 3.55d | 2025-11-06 | 2025-11-10 | 50.33d | 0d | SQM-MECANICA [139.9 h] | 139.9 | 48.97 | TK-5001 | un | 1 | 1.1.22 | 1.1.23 |
| A1350 |  | Bomba Sumidero y Motor TAG: 5817-BBS-1050; 5817-MTR-1051 | 5.45d | 2025-11-11 A | 2025-12-21 | A1340 SS | 12% | 4.77d | 2025-11-11 | 2025-11-15 | 50.33d | 0d | SQM-MECANICA [139.9 h] | 139.9 | 17.49 | TK-1041 | un | 1 | 1.1.23 | 1.1.24 |
| A1360 |  | Bomba Sumidero y Motor TTAG: 5817-BBS-4026; 5817-MTR-4027 | 5.45d | 2025-11-16 A | 2025-12-21 | A1350 SS | 12% | 4.77d | 2025-11-16 | 2025-11-20 | 50.33d | 0d | SQM-MECANICA [139.9 h] | 139.9 | 17.49 | TK-4001/2 | un | 1 | 1.1.24 | 1.1.25 |
| A1370 |  | Bomba Sumidero y Motor TAG: 5817-BBS-5014; 5817-MTR-5015 | 5.45d | 2025-11-21 A | 2025-12-21 | A1360 SS | 12% | 4.77d | 2025-11-21 | 2025-11-25 | 50.33d | 0d | SQM-MECANICA [139.9 h] | 139.9 | 17.49 | TK-5001 | un | 1 | 1.1.25 | 1.1.26 |
| A1200 |  | Bomba Centrífuga y Motor TAG: 5817-BBA-1077; 5817-MTR-1078 | 5.45d | 2025-12-15 | 2025-12-20 | A1180 FF |  |  |  |  | 50.33d | 0d | SQM-MECANICA [139.9 h] | 139.9 |  | TK-1071 | un | 1 | 1.1.8 | 1.1.9 |
| A1310 |  | Bomba Centrífuga y Motor TAG: 5817-BBA-5002; 5817-MTR-5003 | 4.91d | 2025-12-15 | 2025-12-20 | A1300 FF |  |  |  |  | 75.72d | 0d | SQM-MECANICA |  |  | TK-3033 | un | 0 | 1.1.19 | 1.1.20 |
| A1320 |  | Bomba Centrífuga y Motor TAG: 5817-BBA-5005; 5817-MTR-5006 | 4.91d | 2025-12-15 | 2025-12-20 | A1310 SS, A1230 FF |  |  |  |  | 75.72d | 6.14d | SQM-MECANICA |  |  | TK-3033 | un | 0 | 1.1.20 | 1.1.21 |
| A1380 |  | Alineamiento digital de Bombas de Proyecto | 3d | 2025-12-21 | 2025-12-24 | A1370, A1320 SS |  |  |  |  | 69.58d | 0d | SQM-MECANICA |  |  | PTK | un | 0 |  |  |

| ID | WBS | Activity | Duration | Start | Finish | Predecessors | Complete | Remaining | Planned start | Planned finish | Total float | Free float | Resources | Cost | Actual cost | Área | Unidad | Cantidad | Ítem LP | Ìtem EDP |
| --- | --- | --- | --- | --- | --- | --- | --- | --- | --- | --- | --- | --- | --- | --- | --- | --- | --- | --- | --- | --- |
|  | 3 | **OBRAS ESTRUCTURALES PATIO DE ESTANQUES** |  | 2025-10-20 | 2026-02-17 |  |  |  |  |  |  |  |  |  |  |  |  |  |  |  |
|  | 1 | **MONTAJE DE ESTRUCTURA DE ACCESO E INTERCONEXIÓN DE ESTANQUES** |  | 2025-10-20 | 2025-12-15 |  |  |  |  |  |  |  |  |  |  |  |  |  |  |  |
| A1430 |  | Montaje de Acceso e Interconexión de Estanques TAG: 5817-EST-1001; 5817-EST-1041; 5817-EST-1071 | 10.91d | 2025-10-20 A | 2025-12-15 | A1120 FF | 93% | 0.78d | 2025-10-20 | 2025-10-29 | 0d |  | SQM-ESTRUCTURA [551.54 h] | 551.54 | 512.17 | PTK | kg | 3883 | 1.2.1 | 1.2.1 |
|  | 2 | **MONTAJE DE PARRÓN PATIO DE ESTANQUES ÁREA 7000** |  | 2025-10-20 | 2025-12-24 |  |  |  |  |  |  |  |  |  |  |  |  |  |  |  |
| A1440 |  | Parron Patio de Estanques Estructura liviana | 32.73d | 2025-10-20 A | 2025-12-24 | A1430 SS | 72% | 9.21d | 2025-10-20 | 2025-11-18 | 42.08d | 0d | SQM-ESTRUCTURA [1948.36 h] | 1,948.36 | 1,400.29 | 7000 | Kg | 23153.73 | 1.2.2 | 1.2.2 |
| A1450 |  | Parron Patio de Estanques Estructura Mediana | 36d | 2025-10-20 A | 2025-12-22 | A1430 SS | 79% | 7.56d | 2025-10-20 | 2025-11-21 | 42.08d | 0d | SQM-ESTRUCTURA [1644.38 h] | 1,644.38 | 1,299.24 | 7000 | Kg | 18181.01 | 1.2.3 | 1.2.3 |
| A1460 |  | Parron Patio de Estanques Estructura Pesada | 27.27d | 2025-10-30 A | 2025-12-19 | A1430 SS | 82% | 4.78d | 2025-10-30 | 2025-11-23 | 0d |  | SQM-ESTRUCTURA [2680.79 h] | 2,680.79 | 2,211.06 | 7000 | Kg | 46326.89 | 1.2.4 | 1.2.4 |
| A1470 |  | Parron Patio de Estanques Planchas | 2.18d | 2025-11-14 A | 2025-12-15 | A1450 SS, A1440 SS | 80% | 0.43d | 2025-12-29 | 2025-12-31 | 42.08d | 0d | SQM-ESTRUCTURA [888.32 h] | 888.32 | 711.27 | 7000 | Kg | 366.72 | 1.2.5 | 1.2.5 |
|  | 3 | **MONTAJE PLATAFORMA DE OPERACIÓN ÁREA 4000** |  | 2025-11-22 | 2025-12-24 |  |  |  |  |  |  |  |  |  |  |  |  |  |  |  |
| A1480 |  | Plataforma de Operación área 4000 Estructura Liviana | 4.36d | 2025-11-22 A | 2025-12-19 | A1490 SS | 7% | 4.04d | 2025-11-22 | 2025-11-25 | 42.08d | 0d | SQM-ESTRUCTURA [258.65 h] | 258.65 | 19.22 | BREF 1 Y 2 | Kg | 2364.96 | 1.2.6 | 1.2.6 |
| A1490 |  | Plataforma de Operación área 4000 Estructura Mediana | 10.91d | 2025-11-22 A | 2025-12-24 | A1470 SS | 15% | 9.29d | 2025-11-22 | 2025-12-01 | 42.08d | 0d | SQM-ESTRUCTURA [764.38 h] | 764.38 | 113.38 | BREF 1 Y 2 | Kg | 7464.24 | 1.2.7 | 1.2.7 |
| A1510 |  | Plataforma de Operación área 4000 Grating | 9.82d | 2025-11-30 A | 2025-12-21 | A1500 FF | 100% | 0d | 2026-01-06 | 2026-01-15 | 42.08d | 0d | SQM-ESTRUCTURA [516.55 h] | 516.55 | 516.55 | BREF 1 Y 2 | M2 | 69 | 1.2.10 | 1.2.10 |
| A1520 |  | Plataforma de Operación área 4000 Barandas FRP | 5.45d | 2025-12-01 A | 2025-12-22 | A1510 SS | 79% | 1.15d | 2025-12-07 | 2025-12-11 | 42.08d | 0d | SQM-ESTRUCTURA [109.98 h] | 109.98 | 86.82 | BREF 1 Y 2 | ML | 31.025 | 1.2.11 | 1.2.11 |
| A1500 |  | Plataforma de Operación área 4000 Planchas | 2.18d | 2025-12-19 | 2025-12-21 | A1480 |  |  |  |  | 42.08d | 0d | SQM-ESTRUCTURA [12.22 h] | 12.22 |  | BREF 1 Y 2 | Kg | 74.8 | 1.2.9 | 1.2.9 |
|  | 4 | **MONTAJE PLATAFORMA DE OPERACIÓN ÁREA 5000** |  | 2025-12-21 | 2026-01-16 |  |  |  |  |  |  |  |  |  |  |  |  |  |  |  |
| A1540 |  | Plataforma de Operación área 5000 Estructura Mediana | 8.73d | 2025-12-21 | 2025-12-29 | A1520 SS |  |  |  |  | 42.08d | 0d | SQM-ESTRUCTURA [367 h] | 367 |  | ALTO BORO | Kg | 3612.18 | 1.2.13 | 1.2.13 |
| A1530 |  | Plataforma de Operación área 5000 Estructura Liviana | 4.36d | 2025-12-29 | 2026-01-03 | A1540 |  |  |  |  | 42.08d | 0d | SQM-ESTRUCTURA [131.39 h] | 131.39 |  | ALTO BORO | kg | 1283.42 | 1.2.12 | 1.2.12 |
| A1550 |  | Plataforma de Operación área 5000. Planchas | 3.27d | 2026-01-03 | 2026-01-06 | A1530 |  |  |  |  | 42.08d | 0d | SQM-ESTRUCTURA [5.4 h] | 5.4 |  | ALTO BORO | Kg | 51.13 | 1.2.15 | 1.2.15 |
| A1560 |  | Plataforma de Operación área 5000. Grating T3232 | 6.55d | 2026-01-06 | 2026-01-13 | A1550 |  |  |  |  | 42.08d | 0d | SQM-ESTRUCTURA [231.45 h] | 231.45 |  | ALTO BORO | m2 | 34 | 1.2.16 | 1.2.16 |
| A1570 |  | Plataforma de Operación área 5000. Barandas FRP Grado 3 | 3.27d | 2026-01-13 | 2026-01-16 | A1560, A1520 |  |  |  |  | 42.08d | 0d | SQM-ESTRUCTURA [61.1 h] | 61.1 |  | ALTO BORO | ML | 11 | 1.2.17 | 1.2.17 |
|  | 5 | **MONTAJE PARRÓN DESDE PATIO DE ESTANQUES A L5 LiOH** |  | 2025-11-14 | 2026-02-17 |  |  |  |  |  |  |  |  |  |  |  |  |  |  |  |
| A1580 |  | Estructura A36 Liviana 0@30 Kg /m Parrón desde Patio de Estanques hasta L5 LiOH. | 38.18d | 2025-11-14 A | 2026-01-13 | A1590 SS | 23% | 29.21d | 2025-11-14 | 2025-12-18 | 35.57d |  | SQM-ESTRUCTURA [5681.6 h] | 5,681.6 | 1,334.5 | PTK A L5 | kg | 43114.59 | 1.2.19 | 1.2.19 |
| A1590 |  | Estructura A36 Mediana 31@60 Kg /m Parrón desde Patio de Estanques hasta L5 LiOH. | 84d | 2025-11-14 A | 2026-02-17 | A1600 SS, A1460 SS | 23% | 64.78d | 2025-11-14 | 2026-01-29 | 0d |  | SQM-ESTRUCTURA [6500 h] | 6,500 | 1,487.24 | PTK A L5 | kg | 67224.37 | 1.2.20 | 1.2.20 |
| A1600 |  | Estructura A36 Pesada: > 61 Kg /m Parrón desde Patio de Estanques hasta L5 LiOH. | 84d | 2025-11-14 A | 2026-02-01 | A1460 SS | 42% | 48.42d | 2025-11-14 | 2026-01-29 | 0d |  | SQM-ESTRUCTURA [2646 h] | 2,646 | 1,120.83 | PTK A L5 | kg | 66752.48 | 1.2.21 | 1.2.21 |
| A1610 |  | Conexiones Parrón desde Patio de Estanques hasta L5 LiOH. | 26.18d | 2026-01-22 | 2026-02-17 | A1580 FF, A1590 FF |  |  |  |  | 0d |  | SQM-ESTRUCTURA [3696.05 h] | 3,696.05 |  | PTK A L5 | kg | 9072.82 | 1.2.22 | 1.2.22 |

Notes:
- A1460: Corregir: Falta 1 viga V2021 // por packing son 5 pero por plano son 6 // eje K1 no tiene fundaciones
- A1470: Corregir: R FF
- A1580: Corregir: R FF
- A1590: Corregir: R FF
- A1600: Corregir: Faltan fundaciones y suministros
- A1610: Corregir: R FF

| ID | WBS | Activity | Type | Duration | Start | Finish | Predecessors | Complete | Remaining | Planned start | Planned finish | Total float | Free float | Constraint | Resources | Cost | Actual cost | Área | Cantidad | Unidad | Ítem LP | Ìtem EDP | Corregir |
| --- | --- | --- | --- | --- | --- | --- | --- | --- | --- | --- | --- | --- | --- | --- | --- | --- | --- | --- | --- | --- | --- | --- | --- |
|  | 6 | **MONTAJE PARRÓN DESDE L5 LiOH A L3 LiOH** |  |  | 2025-12-15 | 2025-12-25 |  |  |  |  |  |  |  |  |  |  |  |  |  |  |  |  |  |
| A1619 |  | Entrega de fundaciones | milestone | 0d | 2025-12-15 | 2025-12-15 | A1060 SS |  |  |  |  | 0d |  | mandatory start 2025-12-15 |  |  |  | L5-L3 | 0 |  |  |  |  |
| A1620 |  | Estructura liviana: 0@30 kg/m Desde L5 LiOH hasta L3 LiOH |  | 10.91d | 2025-12-15 | 2025-12-25 | A1619 SS |  |  |  |  | 40.33d | 0d |  | SQM-ESTRUCTURA [284.08 h] | 284.08 |  | L5-L3 | 2000 | kg | 1.2.23 | 1.2.23 |  |
| A1630 |  | Planchas Desde L5 LiOH hasta L3 LiOH |  | 10.91d | 2025-12-15 | 2025-12-25 | A1620 SS |  |  |  |  | 46.87d | 1.09d |  | SQM-ESTRUCTURA [255.67 h] | 255.67 |  | L5-L3 | 1800 | kg | 1.2.24 | 1.2.24 |  |
|  | 4 | **OBRAS PIPING PATIO DE ESTANQUES** |  |  | 2025-08-26 | 2026-02-28 |  |  |  |  |  |  |  |  |  |  |  |  |  |  |  |  |  |
|  | 1 | **MONTAJE DE CAÑERÍAS ACERO INOXIDABLE PATIO DE ESTANQUES** |  |  | 2025-11-29 | 2026-01-07 |  |  |  |  |  |  |  |  |  |  |  |  |  |  |  |  |  |
| A1650 |  | Ø 6" - Cañería Acero Inoxidable |  | 10.91d | 2025-11-29 A | 2025-12-27 | A1380 FF, A1920 SS | 74% | 2.78d | 2025-11-29 | 2025-12-08 | 67.06d | 0d |  | SQM-PIPING [593.28 h] | 593.28 | 441.91 | PTK | 52.7833609926 | m | 1.9.1.1 | 1.9.1.1 |  |
| A1640 |  | Ø 8" - Cañería Acero Inoxidable |  | 7.64d | 2025-12-01 A | 2025-12-29 | A1650 SS, A1380 FF | 35% | 4.94d | 2025-12-09 | 2025-12-15 | 67.06d | 0d |  | SQM-PIPING [153.47 h] | 153.47 | 54.14 | PTK | 10 | m | 1.9.1.2 | 1.9.1.2 |  |
| A1680 |  | Ø 2" - Cañería Acero Inoxidable |  | 15.27d | 2025-12-01 A | 2026-01-05 | A1660 FF, A1640 SS | 64% | 5.55d | 2025-12-23 | 2026-01-05 | 67.06d | 0d |  | SQM-PIPING [556.61 h] | 556.61 | 354.34 | PTK | 159.3 | m | 1.9.1.6 | 1.9.1.6 |  |
| A1660 |  | Ø 4" - Cañería Acero Inoxidable |  | 7d | 2025-12-29 | 2026-01-05 | A1640 |  |  |  |  | 67.06d | 0d |  | SQM-PIPING |  |  | PTK | 0 | m | 1.9.1.4 | 1.9.1.4 |  |
| A1670 |  | Ø 3" - Cañería Acero Inoxidable |  | 7.64d | 2025-12-30 | 2026-01-07 | A1680 SS |  |  |  |  | 67.06d | 0d |  | SQM-PIPING [1.03 h] | 1.03 |  | PTK | 0.15566066355 | m | 1.9.1.3 | 1.9.1.3 |  |
| A1690 |  | Ø 1" - Cañería Acero Inoxidable |  | 7.64d | 2025-12-30 | 2026-01-07 | A1670 SS |  |  |  |  | 67.06d |  |  | SQM-PIPING [0.14 h] | 0.14 |  | PTK | 5 | m | 1.9.1.5 | 1.9.1.5 |  |
|  | 2 | **MONTAJE DE CAÑERÍAS HDPE PN10 (P1) PATIO DE ESTANQUES** |  |  | 2025-08-26 | 2026-02-17 |  |  |  |  |  |  |  |  |  |  |  |  |  |  |  |  |  |
| A1720 |  | Ø 160 mm - Cañería HDPE, PE 100, PN10 |  | 193.09d | 2025-08-26 A | 2026-02-17 | A1590 SS, A1610 FF | 71% | 55.36d | 2025-08-26 | 2026-02-18 | 0d |  |  | SQM-PIPING [9441.54 h] | 9,441.54 | 6,734.65 | PTK | 7308.3 | m | 1.9.2.8 | 1.9.2.8 |  |
| A1700 |  | Ø 250 mm - Cañería HDPE, PE 100, PN10 |  | 15.27d | 2025-11-04 A | 2026-01-08 | A1910 SS | 2% | 14.95d | 2025-11-04 | 2025-11-17 | 47.86d | 0d |  | SQM-PIPING [730.65 h] | 730.65 | 15.44 | PTK | 10 | m | 1.9.2.4 | 1.9.2.4 |  |
| A1710 |  | Ø 200 mm - Cañería HDPE, PE 100, PN10 |  | 7.64d | 2025-11-18 A | 2025-12-31 | A1700 SS | 7% | 7.1d | 2025-11-18 | 2025-11-24 | 52.07d | 0d |  | SQM-PIPING [52.34 h] | 52.34 | 3.67 | PTK | 23.2621332888 | m | 1.9.2.9 | 1.9.2.9 | R FF |
| A1730 |  | Ø 110 mm - Cañería HDPE, PE 100, PN10 |  | 15.27d | 2025-11-25 A | 2026-01-04 | A1710 SS | 24% | 11.56d | 2025-11-25 | 2025-12-08 | 52.07d | 0d |  | SQM-PIPING [726.45 h] | 726.45 | 176.42 | PTK | 3925 | m | 1.9.2.7 | 1.9.2.7 |  |
| A1740 |  | Ø 90 mm - Cañería HDPE, PE 100, PN10 |  | 15.27d | 2025-12-01 A | 2025-12-26 | A1730 SS | 88% | 1.88d | 2025-12-09 | 2025-12-22 | 62.84d | 0d |  | SQM-PIPING [1.41 h] | 1.41 | 1.24 | PTK | 210 | m | 1.9.2.6 | 1.9.2.6 |  |
| A1750 |  | Ø 63 mm - Cañería HDPE, PE 100, PN10 |  | 15.27d | 2025-12-01 A | 2026-02-17 | A1720 FF | 2% | 15.04d | 2026-02-05 | 2026-02-18 | 16.89d | 0d |  | SQM-PIPING [325.14 h] | 325.14 | 4.94 | PTK | 189.8 | m | 1.9.2.5 | 1.9.2.5 |  |
| A1760 |  | Ø 50 mm - Cañería HDPE, PE 100, PN10 |  | 3.27d | 2025-12-01 A | 2026-02-04 | A1750 SS | 37% | 2.06d | 2026-02-05 | 2026-02-07 | 16.89d | 0d |  | SQM-PIPING [0.52 h] | 0.52 | 0.19 | PTK | 0.3854218011 | m | 1.9.2.1 | 1.9.2.1 |  |
| A1780 |  | Ø 32 mm - Cañería HDPE, PE 100, PN10 |  | 3.27d | 2025-12-01 A | 2026-02-09 | A1770 FF | 7% | 3.03d | 2026-02-12 | 2026-02-14 | 16.89d | 0d |  | SQM-PIPING [1.03 h] | 1.03 | 0.07 | PTK | 0.75790213065 | m | 1.9.2.3 | 1.9.2.3 | R FF |
| A1770 |  | Ø 40 mm - Cañería HDPE, PE 100, PN10 |  | 4.36d | 2026-02-04 | 2026-02-09 | A1760 |  |  |  |  | 16.89d | 0d |  | SQM-PIPING [1.81 h] | 1.81 |  | PTK | 1.33399300125 | m | 1.9.2.2 | 1.9.2.2 | R FF |
|  | 3 | **MONTAJE DE CAÑERÍAS HDPE PN16 (P7) PATIO DE ESTANQUES** |  |  | 2025-11-06 | 2025-12-31 |  |  |  |  |  |  |  |  |  |  |  |  |  |  |  |  |  |
| A1790 |  | Ø 90 mm - Cañería HDPE, PE 100, PN16 |  | 3.27d | 2025-11-06 A | 2025-12-24 | A1110, A1380 FF | 3% | 3.17d | 2025-11-29 | 2025-12-01 | 71.01d | 0d |  | SQM-PIPING [0.1 h] | 0.1 | 0 | PTK | 0.07875 | m | 1.9.3.4 | 1.9.3.4 |  |
| A1800 |  | DN 75 mm - Cañería HDPE, PE 100, PN16 |  | 15.27d | 2025-12-01 A | 2025-12-30 | A1730 SS, A1860 FF | 63% | 5.63d | 2025-12-09 | 2025-12-22 | 59.09d | 42.2d |  | SQM-PIPING [782.76 h] | 782.76 | 494.27 | PTK | 730 | m | 1.9.3.2 | 1.9.3.2 |  |
| A1810 |  | Ø 63 mm - Cañería HDPE, PE 100, PN16 |  | 3.27d | 2025-12-24 | 2025-12-27 | A1790 |  |  |  |  | 71.01d | 0d |  | SQM-PIPING [19.89 h] | 19.89 |  | PTK | 14.1875002878 | m | 1.9.3.3 | 1.9.3.3 |  |
| A1820 |  | Ø 40 mm - Cañería HDPE, PE 100, PN16 |  | 3.27d | 2025-12-27 | 2025-12-31 | A1810 |  |  |  |  | 71.01d | 0d |  | SQM-PIPING [0.17 h] | 0.17 |  | PTK | 0.1291143 | m | 1.9.3.1 | 1.9.3.1 | R FF |

| ID | WBS | Activity | Type | Duration | Start | Finish | Predecessors | Complete | Remaining | Planned start | Planned finish | Total float | Free float | Resources | Cost | Actual cost | Área | Unidad | Cantidad | Ítem LP | Ìtem EDP |
| --- | --- | --- | --- | --- | --- | --- | --- | --- | --- | --- | --- | --- | --- | --- | --- | --- | --- | --- | --- | --- | --- |
|  | 4 | **MONTAJE DE FITTING, VÁLVULAS Y FILTROS LÍNEAS PATIO DE ESTANQUES** |  |  | 2025-12-01 | 2026-01-07 |  |  |  |  |  |  |  |  |  |  |  |  |  |  |  |
| A1830 |  | Montaje de Fitting Acero Inoxidable GL | level of effort | 0d | 2025-12-01 A | 2026-01-07 | A1740 SS, A1690 FF, A1870 FF |  | 23.45d | 2025-12-09 | 2025-12-09 | 67.06d | 0d | SQM-PIPING |  |  | PTK | un | 219 | 99.1 | 99.1 |
| A1840 |  | Montaje de Fitting HDPE (P1) GL |  | 0d | 2025-12-26 | 2025-12-26 | A1740, A1830 |  |  |  |  | 62.84d | 0d | SQM-PIPING |  |  | PTK | un | 1550 | 99.2 | 99.2 |
| A1850 |  | Montaje de Fitting HDPE (P7) GL |  | 0d | 2025-12-26 | 2025-12-26 | A1740, A1840 |  |  |  |  | 62.84d | 0d | SQM-PIPING |  |  | PTK | un | 0 | 99.3 | 99.3 |
| A1860 |  | Válvulas Patio de Estanques.(Global) |  | 0d | 2025-12-26 | 2025-12-26 | A1740, A1850 |  |  |  |  | 62.84d | 3.75d | SQM-PIPING |  |  | PTK | un | 168 | 99.12 | 99.12 |
| A1870 |  | DN 2" - Conjunto Portafiltro y Filtro de Insolubles |  | 3.27d | 2025-12-31 | 2026-01-03 | A1820 |  |  |  |  | 71.01d |  | SQM-PIPING [31.8 h] | 31.8 |  | PTK | un | 3 | 1.8.1 | 1.8.1 |
|  | 5 | **MONTAJE DE SOPORTACIÓN PIPING PATIO DE ESTANQUES** |  |  | 2025-08-26 | 2026-02-07 |  |  |  |  |  |  |  |  |  |  |  |  |  |  |  |
| A1880 |  | P1.3 x 37 un. - Pedestales para Tuberías Elevadas |  | 15.27d | 2025-08-26 A | 2025-12-24 | A1720 SS | 100% | 0d | 2025-08-26 | 2025-09-08 | 35.67d | 0d | SQM-PIPING [486.26 h] | 486.26 | 486.26 | PTK | kg | 1279.3 | 1.5.1 | 1.5.1 |
| A1890 |  | P1.6 x 51 un. - Pedestales para Tuberías Elevadas |  | 45.82d | 2025-09-09 A | 2026-02-04 | A1880 SS | 8% | 42d | 2025-09-09 | 2025-10-20 | 35.67d | 0d | SQM-PIPING |  |  | PTK | kg | 0 | 1.5.2 | 1.5.2 |
| A1900 |  | P1.9 x 3 un. - Pedestales para Tuberías Elevadas |  | 7.64d | 2025-10-21 A | 2025-12-31 | A1890 SS | 8% | 7d | 2025-10-21 | 2025-10-27 | 35.67d | 0d | SQM-PIPING |  |  | PTK | kg | 0 | 1.5.3 | 1.5.3 |
| A1910 |  | P4 x 40 un. - Pedestales para Tuberías Elevadas |  | 7.64d | 2025-10-28 A | 2025-12-31 | A1900 SS | 3% | 7.42d | 2025-10-28 | 2025-11-03 | 35.67d | 0d | SQM-PIPING [27.5 h] | 27.5 | 0.77 | PTK | kg | 468.8 | 1.5.4 | 1.5.4 |
| A1920 |  | U3 x 5454 un. - Abrazadera para Tuberías Elevadas |  | 50.18d | 2025-11-04 A | 2026-02-07 | A1910 SS | 9% | 45.42d | 2025-11-04 | 2025-12-19 | 35.67d | 0d | SQM-PIPING [1285.61 h] | 1,285.61 | 122 | PTK | kg | 5247.4 | 1.5.5 | 1.5.5 |
|  | 6 | **TIE-IN DE LÍNEAS ASOCIADAS A PATIO DE ESTANQUES** |  |  | 2026-01-08 | 2026-02-28 |  |  |  |  |  |  |  |  |  |  |  |  |  |  |  |
| A2000 |  | Tie-In N° 4405A - Conexión de equipo existente TAG: 250-BB-5759-P5-3156 a equipo proyectado TAG: 5817-BBA-4006 |  | 1d | 2026-01-08 | 2026-01-09 | A1700 |  |  |  |  | 47.86d | 0d | SQM-PIPING |  |  | PTK | un | 0 | 1.10.8 | 1.10.8 |
| A2040 |  | Tie-In N° 5403A - TAG: 250-LMB-5759-P5-3356 a Succión TAG: 5817-BBA-5002 |  | 1d | 2026-01-09 | 2026-01-10 | A2000 |  |  |  |  | 47.86d | 0d | SQM-PIPING |  |  | PTK | un | 0 | 1.10.12 | 1.10.12 |
| A2060 |  | Tie-In N° 5404A - TAG: 250-LMB-5759-P5-3355 a Succión TAG: 5817-BBA-5005 |  | 1d | 2026-01-10 | 2026-01-11 | A2040 |  |  |  |  | 47.86d |  | SQM-PIPING |  |  | PTK | un | 0 | 1.10.14 | 1.10.14 |
| A1930 |  | Tie-In N° 1442 - Línea proyectada TAG: 110-W-5817-P1-1715 con existente TAG: 50-WW-5752-IA-7575 |  | 1.09d | 2026-02-09 | 2026-02-10 | A1730, A1780 |  |  |  |  | 16.89d | 0d | SQM-PIPING [10.5 h] | 10.5 |  | PTK | un | 1 | 1.10.1 | 1.10.1 |
| A1940 |  | Tie-In N° 1471 - Línea proyectada TAG: 75-PW-5817-P7-1910 con existente TAG: 63-PW-5759-P5-3900 |  | 1.09d | 2026-02-10 | 2026-02-11 | A1800, A1930 |  |  |  |  | 16.89d |  | SQM-PIPING [7 h] | 7 |  | PTK | un | 1 | 1.10.2 | 1.10.2 |
| A1950 |  | Tie-In N° 4401 - Línea proyectada TAG: 160-BREF-5817-P1-4504 con existente TAG: 160-BB-5759-P5-3153 |  | 1.09d | 2026-02-17 | 2026-02-18 | A1720 |  |  |  |  | 0d |  | SQM-PIPING [15.75 h] | 15.75 |  | PTK | un | 1 | 1.10.3 | 1.10.3 |
| A1960 |  | Tie-In N° 4402 - Línea proyectada TAG: 160-BREF-5817-P1-4520 con equipo existente TAG: 5735-EST-5250 |  | 1.09d | 2026-02-18 | 2026-02-19 | A1950 |  |  |  |  | 0d |  | SQM-PIPING [15.75 h] | 15.75 |  | PTK | un | 1 | 1.10.4 | 1.10.4 |
| A1970 |  | Tie-In N° 4403 - Línea proyectada TAG: 160-BREF-5817-P1-4524 con equipo existente TAG: 5759-EST-001 |  | 1.09d | 2026-02-19 | 2026-02-21 | A1960 |  |  |  |  | 0d |  | SQM-PIPING [15.75 h] | 15.75 |  | PTK | un | 1 | 1.10.5 | 1.10.5 |
| A1980 |  | Tie-In N° 4404A - Conexión de equipo existente TAG: 250-BB-5759-P5-3155 a equipo proyectado TAG: 5817-BBA-4003 |  | 1d | 2026-02-21 | 2026-02-22 | A1970 |  |  |  |  | 0d |  | SQM-PIPING |  |  | PTK | un | 0 | 1.10.6 | 1.10.6 |
| A1990 |  | Tie-In N° 4404B - Conexión de equipo existente TAG: 160-BB-5759-P5-3153 a equipo proyectado TAG: 5817-BBA-4003 |  | 1d | 2026-02-22 | 2026-02-23 | A1980 |  |  |  |  | 0d |  | SQM-PIPING |  |  | PTK | un | 0 | 1.10.7 | 1.10.7 |
| A2010 |  | Tie-In N° 4405B - TAG: 160-BB-5759-P5-3154 a Descarga TAG: 5817-BBA-4006 |  | 1d | 2026-02-23 | 2026-02-24 | A1990 |  |  |  |  | 0d |  | SQM-PIPING |  |  | PTK | un | 0 | 1.10.9 | 1.10.9 |
| A2020 |  | Tie-In N° 5401 - Línea existente TAG:160-LMB-5759-P5-3352 a proyectada TAG:160-SAB-5817-P1-5504 |  | 1.09d | 2026-02-24 | 2026-02-25 | A2010 |  |  |  |  | 0d |  | SQM-PIPING [15.75 h] | 15.75 |  | PTK | un | 1 | 1.10.10 | 1.10.10 |
| A2030 |  | Tie-In N° 5402 - Línea proyectada TAG: 160-SAB-5817- P1-5503 con equipo existente TAG: 5735-EST-1800 |  | 1.09d | 2026-02-25 | 2026-02-26 | A2020 |  |  |  |  | 0d |  | SQM-PIPING [15.75 h] | 15.75 |  | PTK | un | 1 | 1.10.11 | 1.10.11 |
| A2050 |  | Tie-In N° 5403B - TAG: 160-LMB-5759-P7-3352 a Descarga TAG: 5817-BBA-5002 |  | 1d | 2026-02-26 | 2026-02-27 | A2030 |  |  |  |  | 0d |  | SQM-PIPING |  |  | PTK | un | 0 | 1.10.13 | 1.10.13 |
| A2070 |  | Tie-In N° 5404B - TAG: 160-LMB-5759-P7-3352 a Descarga TAG: 5817-BBA-5005 |  | 1d | 2026-02-27 | 2026-02-28 | A2050 |  |  |  |  | 0d |  | SQM-PIPING |  |  | PTK | un | 0 | 1.10.15 | 1.10.15 |

| ID | WBS | Activity | Duration | Start | Finish | Predecessors | Complete | Remaining | Planned start | Planned finish | Total float | Free float | Resources | Cost | Actual cost | Área | Unidad | Cantidad | Ítem LP | Ìtem EDP |
| --- | --- | --- | --- | --- | --- | --- | --- | --- | --- | --- | --- | --- | --- | --- | --- | --- | --- | --- | --- | --- |
|  | 5 | **OBRAS ELÉCTRICAS PATIO DE ESTANQUES** |  | 2025-10-30 | 2026-01-19 |  |  |  |  |  |  |  |  |  |  |  |  |  |  |  |
|  | 1 | **TENDIDO Y CONEXIONADO DE CABLES BAJA TENSIÓN PATIO DE ESTANQUES** |  | 2025-12-01 | 2026-01-10 |  |  |  |  |  |  |  |  |  |  |  |  |  |  |  |
| A2090 |  | Cable Multiconductor para VDF BT (3C#6 + 3C#12) AWG | 8.73d | 2025-12-01 A | 2025-12-29 | A2080 FF, A2190 SS | 8% | 8d | 2025-12-22 | 2025-12-29 | 50.33d | 0d | SQM-ELÉCTRICO |  |  | PTK | m | 0 | 1.1.2 | 2.1.2 |
| A2100 |  | Cable Multiconductor para VDF BT (3C#2 + 3C#10) AWG | 4.36d | 2025-12-01 A | 2025-12-25 | A2090 SS | 8% | 4d | 2025-12-22 | 2025-12-25 | 50.33d | 0d | SQM-ELÉCTRICO |  |  | PTK | m | 0 | 1.1.3 | 2.1.3 |
| A2110 |  | Cable Multiconductor para VDF BT (3C#2/0 + 3C#6) AWG | 3.27d | 2025-12-01 A | 2025-12-24 | A2100 SS | 8% | 3d | 2025-12-22 | 2025-12-24 | 50.33d | 0d | SQM-ELÉCTRICO |  |  | PTK | m | 0 | 1.1.4 | 2.1.4 |
| A2140 |  | Cable de Fuerza Multiconductor de Cobre Blando, 1x4C #6 AWG | 4.36d | 2025-12-01 A | 2026-01-03 | A2130 FF | 6% | 4.1d | 2025-12-28 | 2025-12-31 | 50.33d | 0d | SQM-ELÉCTRICO [123 h] | 62,432.34 | 3,705.33 | PTK | m | 475 | 1.1.7 | 2.1.7 |
| A2150 |  | Cable de Fuerza Multiconductor de Cobre Blando, 1x4C #4 AWG | 6.55d | 2025-12-01 A | 2026-01-05 | A2140 SS | 1% | 6.46d | 2025-12-28 | 2026-01-02 | 50.33d | 0d | SQM-ELÉCTRICO [300.2 h] | 152,375.52 | 1,904.44 | PTK | m | 845 | 1.1.8 | 2.1.8 |
| A2170 |  | Cable de Fuerza Multiconductor de Cobre Blando, 1x3C #6 AWG | 15.27d | 2025-12-01 A | 2026-01-08 | A2160 FF | 16% | 12.81d | 2026-01-03 | 2026-01-16 | 50.33d | 1.66d | SQM-ELÉCTRICO [432.96 h] | 219,761.84 | 35,385.43 | PTK | m | 770 | 1.1.10 | 2.1.10 |
| A2180 |  | Cable de Fuerza Multiconductor de Cobre Blando, 1x5C #14 AWG | 30.55d | 2025-12-01 A | 2026-01-10 | A2170 FF | 13% | 26.57d | 2026-01-03 | 2026-01-30 | 48.67d |  | SQM-ELÉCTRICO [1185.72 h] | 601,847.76 | 78,426.19 | PTK | m | 2080 | 1.1.11 | 2.1.11 |
| A2080 |  | Cable de Fuerza Monoconductor de Cobre Blando, 1C #500 MCM | 13.09d | 2025-12-16 | 2025-12-29 | A2430 SS |  |  |  |  | 50.33d | 0d | SQM-ELÉCTRICO [631.2 h] | 320,384.5 |  | PTK | m | 40 | 1.1.1 | 2.1.1 |
| A2120 |  | Cable de Fuerza Multiconductor de Cobre Blando, 1x4C #10 AWG | 3.27d | 2025-12-25 | 2025-12-28 | A2110 |  |  |  |  | 50.33d | 0d | SQM-ELÉCTRICO [79.95 h] | 40,581.02 |  | PTK | m | 34 | 1.1.5 | 2.1.5 |
| A2130 |  | Cable de Fuerza Multiconductor de Cobre Blando, 1x4C #8 AWG | 6d | 2025-12-28 | 2026-01-03 | A2120 |  |  |  |  | 50.33d | 0d | SQM-ELÉCTRICO |  |  | PTK | m | 0 | 1.1.6 | 2.1.6 |
| A2160 |  | Cable de Fuerza Multiconductor de Cobre Blando, 1x4C #2 AWG | 3.27d | 2026-01-05 | 2026-01-08 | A2150 |  |  |  |  | 50.33d | 0d | SQM-ELÉCTRICO [94.8 h] | 48,118.58 |  | PTK | m | 580 | 1.1.9 | 2.1.9 |
|  | 2 | **MONTAJE DE CANALIZACIÓN Y FERRETERÍA PATIO DE ESTANQUES** |  | 2025-12-01 | 2026-01-16 |  |  |  |  |  |  |  |  |  |  |  |  |  |  |  |
| A2190 |  | Conduit de Acero Galvanizado, 6"Ø, tipo Conduit ANSI C80.1 | 3.27d | 2025-12-01 A | 2025-12-17 | A2400 SS | 67% | 1.09d | 2025-12-10 | 2025-12-12 | 55.42d | 0d | SQM-ELÉCTRICO [31.5 h] | 15,988.77 | 10,659.18 | PTK | m | 15 | 1.1.13 | 2.1.13 |
| A2200 |  | Conduit Flexible Metálico con Cubierta PVC 6" Ø Trabajo Pesado | 2.18d | 2025-12-01 A | 2025-12-18 | A2190 SS | 20% | 1.75d | 2025-12-13 | 2025-12-14 | 66.51d | 0d | SQM-ELÉCTRICO [16.8 h] | 8,527.34 | 1,705.47 | PTK | m | 10 | 1.1.14 | 2.1.14 |
| A2210 |  | Copla para Cañería de Acero Galvanizado 6"Ø | 2.18d | 2025-12-01 A | 2025-12-18 | A2200 SS | 40% | 1.31d | 2025-12-13 | 2025-12-14 | 66.51d | 0d | SQM-ELÉCTRICO [5.6 h] | 2,842.45 | 1,136.98 | PTK | c/u | 10 | 1.1.15 | 2.1.15 |
| A2220 |  | Conexión Terminal para Cañería de Acero Galvanizado 6"Ø | 1.09d | 2025-12-01 A | 2025-12-17 | A2210 SS | 80% | 0.22d | 2025-12-13 | 2025-12-13 | 66.51d | 0d | SQM-ELÉCTRICO [2.8 h] | 1,421.22 | 1,136.98 | PTK | c/u | 5 | 1.1.16 | 2.1.16 |
| A2230 |  | Conduit de Acero Galvanizado 3"Ø, tipo Conduit ANSI C80.1 | 5.45d | 2025-12-01 A | 2025-12-21 | A2190 SS | 20% | 4.36d | 2025-12-10 | 2025-12-14 | 66.51d | 0d | SQM-ELÉCTRICO [220.5 h] | 111,921.39 | 22,384.28 | PTK | m | 210 | 1.1.17 | 2.1.17 |
| A2240 |  | Conduit Flexible Metálico con Cubierta PVC 3" Ø Trabajo Pesado | 2.18d | 2025-12-01 A | 2025-12-18 | A2230 SS, A2220 SS | 20% | 1.75d | 2025-12-14 | 2025-12-15 | 66.51d | 0d | SQM-ELÉCTRICO [10.5 h] | 5,329.59 | 1,065.92 | PTK | m | 10 | 1.1.18 | 2.1.18 |
| A2250 |  | Copla para Cañería de Acero Galvanizado 3"Ø. Incluye Copla | 3.27d | 2025-12-01 A | 2025-12-19 | A2240 SS | 20% | 2.62d | 2025-12-14 | 2025-12-16 | 66.51d | 0d | SQM-ELÉCTRICO [18.48 h] | 9,380.08 | 1,876.02 | PTK | c/u | 88 | 1.1.19 | 2.1.19 |
| A2260 |  | Conexión Terminal para Cañería de Acero Galvanizado 3"Ø | 4.36d | 2025-12-01 A | 2025-12-20 | A2250 SS | 20% | 3.49d | 2025-12-14 | 2025-12-17 | 66.51d | 0d | SQM-ELÉCTRICO [4.2 h] | 2,131.84 | 426.37 | PTK | c/u | 20 | 1.1.20 | 2.1.20 |
| A2270 |  | Conduit de Acero Galvanizado 2 1/2"Ø, tipo Conduit ANSI C80.1. Incluye Copla | 5.45d | 2025-12-01 A | 2025-12-22 | A2260 SS | 3% | 5.27d | 2025-12-14 | 2025-12-18 | 66.51d | 0d | SQM-ELÉCTRICO [220.5 h] | 111,921.39 | 3,730.71 | PTK | m | 210 | 1.1.21 | 2.1.21 |
| A2280 |  | Conduit Flexible Metálico con Cubierta PVC 2 1/2" Ø Trabajo Pesado | 3.27d | 2025-12-01 A | 2025-12-19 | A2270 SS | 10% | 2.95d | 2025-12-14 | 2025-12-16 | 66.51d | 0d | SQM-ELÉCTRICO [21 h] | 10,659.18 | 1,065.92 | PTK | m | 20 | 1.1.22 | 2.1.22 |
| A2290 |  | Conexión Terminal para Cañería de Acero Galvanizado 2 1/2"Ø | 3.27d | 2025-12-01 A | 2025-12-19 | A2280 SS | 15% | 2.78d | 2025-12-14 | 2025-12-16 | 66.51d | 0d | SQM-ELÉCTRICO [8.4 h] | 4,263.67 | 639.55 | PTK | c/u | 40 | 1.1.23 | 2.1.23 |
| A2300 |  | Conduit de Acero Galvanizado, 2"Ø, tipo Conduit ANSI C80.1.Incluye Copla | 8.73d | 2025-12-01 A | 2025-12-22 | A2290 SS | 30% | 6.09d | 2025-12-17 | 2025-12-24 | 66.51d | 0d | SQM-ELÉCTRICO [840.26 h] | 426,500.44 | 128,986.23 | PTK | m | 800.25 | 1.1.24 | 2.1.24 |
| A2310 |  | Conduit Flexible Metálico con Cubierta PVC 2" Ø Trabajo Pesado | 8.73d | 2025-12-01 A | 2025-12-23 | A2300 SS | 20% | 6.98d | 2025-12-17 | 2025-12-24 | 66.51d | 0d | SQM-ELÉCTRICO [252 h] | 127,910.16 | 25,582.03 | PTK | m | 240 | 1.1.25 | 2.1.25 |
| A2320 |  | Conexión Terminal para Cañería de Acero Galvanizado 2"Ø | 3.27d | 2025-12-01 A | 2025-12-19 | A2310 SS | 25% | 2.45d | 2025-12-17 | 2025-12-19 | 66.51d | 24.42d | SQM-ELÉCTRICO [9.45 h] | 4,796.63 | 1,199.16 | PTK | c/u | 45 | 1.1.26 | 2.1.26 |
| A2330 |  | Conduit de Acero Galvanizado, 1 1/2"Ø, tipo Conduit ANSI C80.1. Incluye Copla | 8.73d | 2025-12-01 A | 2025-12-23 | A2300 SS+2.18d | 23% | 6.68d | 2025-12-19 | 2025-12-26 | 68.96d | 0d | SQM-ELÉCTRICO [516.6 h] | 262,215.83 | 61,549.15 | PTK | m | 820 | 1.1.27 | 2.1.27 |
| A2340 |  | Conduit Flexible Metálico con Cubierta PVC 1 1/2" Ø Trabajo Pesado | 5.45d | 2025-12-01 A | 2025-12-21 | A2330 SS | 15% | 4.61d | 2025-12-27 | 2025-12-31 | 68.96d | 26.88d | SQM-ELÉCTRICO [37.8 h] | 19,186.52 | 2,970.82 | PTK | m | 60 | 1.1.28 | 2.1.28 |
| A2350 |  | Conexión Terminal para Cañería de Acero Galvanizado 1 1/2"Ø | 4.36d | 2025-12-01 A | 2026-01-16 | A2340 SS, A2330 SS, A1570 FF | 17% | 3.62d | 2026-01-01 | 2026-01-04 | 42.08d | 0d | SQM-ELÉCTRICO [22.05 h] | 11,192.14 | 1,919.67 | PTK | c/u | 105 | 1.1.29 | 2.1.29 |

| ID | WBS | Activity | Duration | Start | Finish | Predecessors | Complete | Remaining | Planned start | Planned finish | Total float | Free float | Resources | Cost | Actual cost | Área | Unidad | Cantidad | Ítem LP | Ìtem EDP | Corregir |
| --- | --- | --- | --- | --- | --- | --- | --- | --- | --- | --- | --- | --- | --- | --- | --- | --- | --- | --- | --- | --- | --- |
|  | 3 | **MONTAJE DE ESCALERILLAS Y PIEZAS ESPECIALES PATIO DE ESTANQUES** |  | 2025-11-26 | 2025-12-24 |  |  |  |  |  |  |  |  |  |  |  |  |  |  |  |  |
| A2360 |  | EPC Porta Conductores 600x100mm e:2 mm, tiras 3m. Incluir tapa dos aguas, eclisas y pernos de unión. | 10.91d | 2025-11-26 A | 2025-12-24 | A1370 SS, A1460 SS | 34% | 7.21d | 2025-11-26 | 2025-12-05 | 50.33d | 0d | SQM-ELÉCTRICO [1904 h] | 966,432.32 | 327,781.46 | PTK | m | 160 | 1.3.1 | 2.2.1 |  |
| A2410 |  | EPC Porta Conductores 400x100mm e:2mm, tiras 3m. Incluir tapa dos aguas, eclisas y pernos de unión. | 6.55d | 2025-12-01 A | 2025-12-22 | A2400 SS | 8% | 6d | 2025-12-10 | 2025-12-15 | 50.33d | 0d | SQM-ELÉCTRICO |  |  | PTK | m | 0 | 1.3.6 | 2.2.6 |  |
| A2420 |  | EPC Curva Vertical Interior de 90°, 400x100mm e:2mm. Incluir tapa dos aguas, eclisas y pernos de unión. | 7.64d | 2025-12-01 A | 2025-12-23 | A2410 SS | 8% | 7d | 2025-12-10 | 2025-12-16 | 50.33d | 0d | SQM-ELÉCTRICO |  |  | PTK | c/u | 0 | 1.3.7 | 2.2.7 |  |
| A2370 |  | EPC Curva Horizontal de 90°, 600x100mm e:2mm. Incluir tapa dos aguas, eclisas y pernos de unión. | 4.36d | 2025-12-04 A | 2025-12-20 | A2360 SS | 8% | 4d | 2025-12-04 | 2025-12-07 | 50.33d | 0d | SQM-ELÉCTRICO |  |  | PTK | c/u | 0 | 1.3.2 | 2.2.2 | R FF |
| A2380 |  | EPC Curva Vertical Interior de 90°, 600x100mm e:2mm. Incluir tapa dos aguas, eclisas y pernos de unión. | 2.18d | 2025-12-04 A | 2025-12-18 | A2370 SS | 8% | 2d | 2025-12-04 | 2025-12-05 | 50.33d | 0d | SQM-ELÉCTRICO |  |  | PTK | c/u | 0 | 1.3.3 | 2.2.3 |  |
| A2390 |  | EPC Curva Vertical Exterior de 90°, 600x100mm e:2mm. Incluir tapa dos aguas, eclisas y pernos de unión. | 2.18d | 2025-12-06 A | 2025-12-18 | A2380 SS | 8% | 2d | 2025-12-06 | 2025-12-07 | 50.33d | 0d | SQM-ELÉCTRICO |  |  | PTK | c/u | 0 | 1.3.4 | 2.2.4 |  |
| A2400 |  | EPC Derivación tipo TEE, 600x100mm e:2mm. Incluir tapa dos aguas, eclisas y pernos de unión. | 4.36d | 2025-12-06 A | 2025-12-20 | A2390 SS | 13% | 3.78d | 2025-12-06 | 2025-12-09 | 50.33d | 0d | SQM-ELÉCTRICO [44.8 h] | 22,739.58 | 3,031.78 | PTK | c/u | 6 | 1.3.5 | 2.2.5 |  |
| A2430 |  | EPC Derivación tipo TEE, 400x100mm e:2mm. Incluir tapa dos aguas, eclisas y pernos de unión. | 7d | 2025-12-16 | 2025-12-23 | A2420 SS |  |  |  |  | 50.33d | 0d | SQM-ELÉCTRICO |  |  | PTK | c/u | 0 | 1.3.8 | 2.2.8 |  |
|  | 4 | **MONTAJE DE EQUIPOS ELÉCTRICOS PATIO DE ESTANQUES** |  | 2025-12-01 | 2026-01-19 |  |  |  |  |  |  |  |  |  |  |  |  |  |  |  |  |
| A2440 |  | Estación Local Marca Allen Bradley o Equivalente, para Trabajo Pesado, NEMA 4X | 10.91d | 2025-12-01 A | 2026-01-18 | A2350 SS, A2520 SS | 50% | 5.41d | 2026-01-05 | 2026-01-14 | 42.08d | 0d | SQM-ELÉCTRICO [588 h] | 298,457.04 | 150,349.26 | PTK | c/u | 27 | 1.5.1 | 2.5.1 |  |
| A2450 |  | Tablero Partidor de Motores Tag. N° 5817-TPM-7501 | 5.45d | 2026-01-12 | 2026-01-18 | A2440 SS |  |  |  |  | 42.08d | 0d | SQM-ELÉCTRICO [288 h] | 146,183.04 |  | PTK | gl | 1 | 1.5.2 | 2.5.2 |  |
| A2460 |  | Fabricación de Fundaciones y Montaje de Transformador TAG:5817-TRF-7501 | 6.55d | 2026-01-12 | 2026-01-19 | A2450 SS, A2320 |  |  |  |  | 42.08d | 0d | SQM-ELÉCTRICO [432 h] | 219,274.56 |  | PTK | gl | 1 | 1.5.4 | 2.5.4 |  |
|  | 5 | **MONTAJE DE SISTEMA DE ILUMINACIÓN PATIO DE ESTANQUES** |  | 2025-10-30 | 2025-12-23 |  |  |  |  |  |  |  |  |  |  |  |  |  |  |  |  |
| A2510 |  | Poste Recto Acero Galvanizado 3" Ø 2,5m | 2.18d | 2025-10-30 A | 2025-12-16 | A1120 | 18% | 1.78d | 2025-10-30 | 2025-10-31 | 66.9d | 0d | SQM-ELÉCTRICO [50.4 h] | 25,582.03 | 4,690.04 | PTK | c/u | 6 | 1.6.5 | 2.6.5 |  |
| A2500 |  | Postes Abatible Swivelpole Acero Galvanizado 1½" Ø x 4m | 7.64d | 2025-11-01 A | 2025-12-21 | A2510 SS | 11% | 6.81d | 2025-11-01 | 2025-11-07 | 66.9d | 0d | SQM-ELÉCTRICO [294 h] | 149,228.52 | 16,166.42 | PTK | c/u | 28 | 1.6.4 | 2.6.4 |  |
| A2490 |  | Postes Abatible Swivelpole Acero Galvanizado 1½" Ø x 4m | 10.91d | 2025-11-08 A | 2025-12-22 | A2500 SS | 33% | 7.32d | 2025-11-08 | 2025-11-17 | 66.9d | 0d | SQM-ELÉCTRICO [285.6 h] | 144,964.85 | 47,678.51 | PTK | c/u | 34 | 1.6.3 | 2.6.3 |  |
| A2480 |  | Proyector de Área LED 200W - 220VAC - 50Hz, IP65, 2.200°K, 12.800 Lm | 10.91d | 2025-11-18 A | 2025-12-23 | A2490 SS | 18% | 8.91d | 2025-11-18 | 2025-11-27 | 66.9d | 0d | SQM-ELÉCTRICO [499.8 h] | 253,688.48 | 46,509.56 | PTK | c/u | 34 | 1.6.2 | 2.6.2 |  |
| A2470 |  | Luminaria LED Tipo Campana Industrial Según DS N°1 35W - 220VAC - 50Hz, IP65 o Nema4X, 2.200°K, 432,0 Lm | 12d | 2025-11-28 A | 2025-12-22 | A2480 SS | 40% | 7.15d | 2025-11-28 | 2025-12-08 | 66.9d | 0d | SQM-ELÉCTRICO [645.8 h] | 327,795.16 | 132,403.54 | PTK | m | 34 | 1.6.1 | 2.6.1 |  |
| A2520 |  | Caja de Conexión Hermética 100x100x60 mm. Nema 4X con 6 Bornes de 6mm. | 5.45d | 2025-12-01 A | 2025-12-19 | A2470 SS | 15% | 4.64d | 2025-12-09 | 2025-12-13 | 66.9d | 0d | SQM-ELÉCTRICO [144 h] | 73,091.52 | 10,963.73 | PTK | m | 28 | 1.6.6 | 2.6.6 |  |
| A2530 |  | Instalación y Conexión de !quipos de Iluminación. | 4.36d | 2025-12-13 A | 2025-12-18 | A2520 SS | 9% | 3.97d | 2026-01-17 | 2026-01-21 | 66.9d | 24.82d | SQM-ELÉCTRICO [168 h] | 85,273.44 | 7,669.53 | PTK | gl | 1 | 1.6.7 | 2.6.7 |  |
|  | 6 | **MONTAJE SISTEMA PUESTA A TIERRA PATIO DE ESTANQUES** |  | 2025-12-01 | 2026-01-17 |  |  |  |  |  |  |  |  |  |  |  |  |  |  |  |  |
| A2540 |  | Cable de Cobre Desnudo Temple Blando, Nº 250 MCM , 19 Hebra. | 6.55d | 2025-12-01 A | 2025-12-23 | A2430 FF | 97% | 0.22d | 2025-12-17 | 2025-12-22 | 62.18d | 0d | SQM-ELÉCTRICO [200.72 h] | 101,881.46 | 98,485.41 | PTK | m | 260 | 1.8.1 | 2.8.1 |  |
| A2550 |  | Cable de Cobre Desnudo Temple Blando, Nº 2/0 AWG, 19 Hebras. | 21.82d | 2025-12-01 A | 2026-01-11 | A2540 SS | 12% | 19.27d | 2025-12-23 | 2026-01-11 | 62.18d | 0d | SQM-ELÉCTRICO [1080.8 h] | 548,592.46 | 64,002.45 | PTK | m | 1400 | 1.8.2 | 2.8.2 |  |
| A2560 |  | Barra Copperweld 5/8" Ø x 3 metros de largo. | 2.18d | 2025-12-23 | 2025-12-25 | A2650 SS |  |  |  |  | 62.18d | 0d | SQM-ELÉCTRICO [42 h] | 21,318.36 |  | PTK | c/u | 18 | 1.8.3 | 2.8.3 |  |
| A2570 |  | Cámara de registro de Concreto 8" Ø con Tapa. | 2.18d | 2025-12-23 | 2025-12-25 | A2550 SS |  |  |  |  | 62.18d | 0d | SQM-ELÉCTRICO [28 h] | 14,212.24 |  | PTK | c/u | 3 | 1.8.4 | 2.8.4 |  |
| A2580 |  | Molde Cadweld para Unión Termofusión Conexión "TA", Móldelo TAC-2G2G. | 1.09d | 2025-12-23 | 2025-12-24 | A2560 SS |  |  |  |  | 62.18d | 0d | SQM-ELÉCTRICO [3.5 h] | 1,776.53 |  | PTK | c/u | 5 | 1.8.5 | 2.8.5 |  |
| A2590 |  | Molde Cadweld para Unión Termofusión Conexión "XB", Modelo XBM-2G2G. | 1.09d | 2025-12-23 | 2025-12-24 | A2580 SS |  |  |  |  | 62.18d | 0d | SQM-ELÉCTRICO [3.5 h] | 1,776.53 |  | PTK | c/u | 5 | 1.8.6 | 2.8.6 |  |
| A2600 |  | Molde Cadweld para Unión Termofusión Conexión "GY", Modelo GYE-162V. | 1.09d | 2025-12-23 | 2025-12-24 | A2590 SS |  |  |  |  | 62.18d | 0d | SQM-ELÉCTRICO [3.5 h] | 1,776.53 |  | PTK | c/u | 5 | 1.8.7 | 2.8.7 |  |
| A2610 |  | Molde Cadweld para Unión Termofusión Conexión a Superficie Metálica, Modelo HSC-2G. | 1.09d | 2025-12-23 | 2025-12-24 | A2600 SS |  |  |  |  | 62.18d | 0d | SQM-ELÉCTRICO [3.5 h] | 1,776.53 |  | PTK | c/u | 5 | 1.8.8 | 2.8.8 |  |
| A2620 |  | Carga para Termofusión Número 150. | 2.18d | 2025-12-23 | 2025-12-25 | A2610 SS |  |  |  |  | 62.18d | 0d | SQM-ELÉCTRICO [42 h] | 21,318.36 |  | PTK | c/u | 60 | 1.8.9 | 2.8.9 |  |
| A2630 |  | Carga para Termofusión Número 200. | 2.18d | 2025-12-23 | 2025-12-25 | A2620 SS |  |  |  |  | 62.18d | 20.1d | SQM-ELÉCTRICO [42 h] | 21,318.36 |  | PTK | c/u | 60 | 1.8.10 | 2.8.10 |  |
| A2650 |  | Caja de Barra Puesta a Tierra 500x400x200mm, de Poliéster con Tapa. | 10.91d | 2025-12-23 | 2026-01-03 | A2570 SS |  |  |  |  | 62.18d | 0d | SQM-ELÉCTRICO [420 h] | 213,183.6 |  | PTK | c/u | 10 | 1.8.12 | 2.8.12 |  |
| A2640 |  | Carga para Termofusión Número 90. | 4.36d | 2026-01-12 | 2026-01-17 | A2630 SS, A2460 SS, A2530 |  |  |  |  | 42.08d |  | SQM-ELÉCTRICO [84 h] | 42,636.72 |  | PTK | c/u | 120 | 1.8.11 | 2.8.11 |  |

| ID | WBS | Activity | Duration | Start | Finish | Predecessors | Complete | Remaining | Planned start | Planned finish | Total float | Free float | Resources | Área | Unidad | Cantidad | Ítem LP | Ìtem EDP | Corregir |
| --- | --- | --- | --- | --- | --- | --- | --- | --- | --- | --- | --- | --- | --- | --- | --- | --- | --- | --- | --- |
|  | 6 | **OBRAS DE INSTRUMENTACIÓN PATIO DE ESTANQUES** |  | 2025-12-01 | 2026-01-05 |  |  |  |  |  |  |  |  |  |  |  |  |  |  |
|  | 1 | **TENDIDO Y CONEXIONADO DE CABLES DE COMUNICACIÓN PATIO DE ESTANQUES** |  | 2025-12-01 | 2025-12-22 |  |  |  |  |  |  |  |  |  |  |  |  |  |  |
| A2660 |  | Cable Fibra Óptica Multimodo Exterior 12 fibras OM3 LSZH | 8.73d | 2025-12-01 A | 2025-12-22 | A2800 SS | 76% | 2.12d | 2025-12-22 | 2025-12-29 | 60.59d | 0d | SQM-INSTRUMENTACIÓN [478 h] | PTK | m | 1000 | 2.1.1 | 3.1.1 |  |
| A2670 |  | Cable de Comunicaciones de Datos 1x4 Par #22 AWG Apantallado, Categoría 6 | 2.18d | 2025-12-01 A | 2025-12-22 | A2660 SS | 10% | 1.96d | 2025-12-30 | 2025-12-31 | 60.88d | 0d | SQM-INSTRUMENTACIÓN [29.52 h] | PTK | m | 60 | 2.1.2 | 3.1.2 |  |
|  | 2 | **TENDIDO Y CONEXIONADO DE CABLES DE INSTRUMENTACIÓN PATIO DE ESTANQUES** |  | 2025-12-01 | 2026-01-05 |  |  |  |  |  |  |  |  |  |  |  |  |  |  |
| A2680 |  | Cable de Instrumentación (Señales Análogas), 1x1 par #16 AWG Apantallado | 13.09d | 2025-12-01 A | 2026-01-01 | A2670 SS | 10% | 11.78d | 2026-01-01 | 2026-01-12 | 60.88d | 0d | SQM-INSTRUMENTACIÓN [636.4 h] | PTK | m | 2150 | 2.2.1 | 3.2.1 |  |
| A2690 |  | Cable de Control Multiconductor de Cobre Blando, 1x3c #14 AWG, Clase 1,0 kV | 4.36d | 2025-12-01 A | 2026-01-01 | A2680 FF | 10% | 3.93d | 2026-01-09 | 2026-01-12 | 60.88d | 0d | SQM-INSTRUMENTACIÓN [162.8 h] | PTK | m | 550 | 2.2.2 | 3.2.2 | R FF |
| A2700 |  | Cable de Control Multiconductor de Cobre Blando, 1x3c #14 AWG, Clase 0,3 kV | 8.73d | 2025-12-01 A | 2026-01-05 | A2690 SS | 10% | 7.85d | 2026-01-13 | 2026-01-20 | 60.88d | 0d | SQM-INSTRUMENTACIÓN [251.6 h] | PTK | m | 850 | 2.2.3 | 3.2.3 |  |
|  | 3 | **TENDIDO Y CONEXIONADO DE CABLES DE ALIMENTACIÓN 120V PATIO DE ESTANQUES** |  | 2025-12-01 | 2026-01-05 |  |  |  |  |  |  |  |  |  |  |  |  |  |  |
| A2710 |  | Cable de Control Multiconductor de Cobre Blando, 1x3c #12 AWG, Clase 1,0 kV | 10.91d | 2025-12-01 A | 2026-01-05 | A2700 FF | 10% | 9.82d | 2026-01-11 | 2026-01-20 | 60.88d | 0d | SQM-INSTRUMENTACIÓN [355.2 h] | PTK | m | 1200 | 2.3.1 | 3.3.1 | R FF |
| A2720 |  | Cable de Control Multiconductor de Cobre Blando, 1 x 3c #8 AWG, Clase 1,0 kV | 3.27d | 2025-12-01 A | 2025-12-29 | A2710 SS | 10% | 2.95d | 2026-01-18 | 2026-01-20 | 60.88d |  | SQM-INSTRUMENTACIÓN [23.9 h] | PTK | m | 50 | 2.3.2 | 3.3.2 | R FF |
|  | 4 | **MONTAJE DE CANALIZACIÓN Y FERRETERÍA PATIO DE ESTANQUES** |  | 2025-12-01 | 2026-01-02 |  |  |  |  |  |  |  |  |  |  |  |  |  |  |
| A2770 |  | Conduit de acero galvanizado 1"Ø, tipo conduit ANSI C80.1 | 4.36d | 2025-12-01 A | 2025-12-21 | A2760 FF | 15% | 3.72d | 2025-12-10 | 2025-12-13 | 60.59d | 0d | SQM-INSTRUMENTACIÓN [346.5 h] | PTK | m | 550 | 2.4.5 | 3.4.5 |  |
| A2790 |  | Conduit flexible metálico con cubierta PVC 1/2" Ø | 3.27d | 2025-12-01 A | 2025-12-23 | A2780 FF | 10% | 2.94d | 2025-12-16 | 2025-12-18 | 60.59d | 0d | SQM-INSTRUMENTACIÓN [40.95 h] | PTK | m | 65 | 2.4.7 | 3.4.7 |  |
| A2800 |  | Caja metálica de distribución 100x100x65mm | 3.27d | 2025-12-01 A | 2025-12-23 | A2790 SS | 15% | 2.78d | 2025-12-19 | 2025-12-21 | 60.59d | 0d | SQM-INSTRUMENTACIÓN [288 h] | PTK | un | 30 | 2.12.1 | 3.12.1 |  |
| A2810 |  | Riel unistrut 42x42x2,5 mm, acero galvanizado, tiras de 3 metros | 3.27d | 2025-12-01 A | 2026-01-02 | A2730 FF | 28% | 2.34d | 2025-12-21 | 2025-12-23 | 58.32d | 0d | SQM-INSTRUMENTACIÓN [120 h] | PTK | un | 100 | 2.12.2 | 3.12.2 |  |
| A2730 |  | EPC porta conductores de acero galvanizado 600x100x2,5mm. Incluye eclipsas, pernos y tapa dos aguas. | 16.36d | 2025-12-16 | 2026-01-02 | A2360 SS |  |  |  |  | 58.32d | 0d | SQM-INSTRUMENTACIÓN [1344 h] | PTK | m | 240 | 2.4.1 | 3.4.1 |  |
| A2740 |  | EPC Curva Tipo "T", 600x100x2,5mm. Incluir tapa dos aguas, eclisas y pernos de unión. | 2.18d | 2025-12-19 | 2025-12-21 | A2730 SS+2.18d |  |  |  |  | 60.59d | 0d | SQM-INSTRUMENTACIÓN [33.6 h] | PTK | un | 6 | 2.4.2 | 3.4.2 |  |
| A2750 |  | EPC Curva Tipo "Cruz" 600x100x2,5mm. Incluye eclipsas, pernos y tapa dos aguas. | 1.09d | 2025-12-19 | 2025-12-20 | A2740 SS |  |  |  |  | 60.59d | 0d | SQM-INSTRUMENTACIÓN [11.2 h] | PTK | un | 2 | 2.4.3 | 3.4.3 |  |
| A2760 |  | Conduit de acero galvanizado 1"Ø, tipo conduit ANSI C80.1 | 1.09d | 2025-12-20 | 2025-12-21 | A2750 |  |  |  |  | 60.59d | 0d | SQM-INSTRUMENTACIÓN [9.66 h] | PTK | un | 20 | 2.4.4 | 3.4.4 |  |
| A2780 |  | Conduit flexible metálico con cubierta PVC 1" Ø | 2.18d | 2025-12-21 | 2025-12-23 | A2770 |  |  |  |  | 60.59d | 0d | SQM-INSTRUMENTACIÓN [3.15 h] | PTK | m | 5 | 2.4.6 | 3.4.6 |  |
|  | 5 | **ARMADO Y MONTAJE DE EQUIPOS E INSTRUMENTOS PATIO DE ESTANQUES** |  | 2025-12-22 | 2025-12-29 |  |  |  |  |  |  |  |  |  |  |  |  |  |  |
| A2820 |  | Tablero controlador Tag N° 5817-PLC-1201 | 2.18d | 2025-12-22 | 2025-12-24 | A2660 |  |  |  |  | 60.59d | 0d | SQM-INSTRUMENTACIÓN [170 h] | PTK | un | 1 | 2.5.1 | 3.5.1 |  |
| A2830 |  | Tablero de Distribución de Instrumentación Tag N°5817-TDI-1203 | 2.18d | 2025-12-24 | 2025-12-26 | A2820 |  |  |  |  | 60.59d | 0d | SQM-INSTRUMENTACIÓN [170 h] | PTK | un | 1 | 2.5.2 | 3.5.2 |  |
| A2840 |  | Fuente Ininterrumpida de Poder Tag N°5817-UPS-1202. Conexión de UPS a TPM de planta. | 2.18d | 2025-12-26 | 2025-12-29 | A2830 |  |  |  |  | 60.59d | 0d | SQM-INSTRUMENTACIÓN [170 h] | PTK | un | 1 | 2.5.3 | 3.5.3 |  |

| ID | WBS | Activity | Duration | Start | Finish | Predecessors | Complete | Remaining | Planned start | Planned finish | Total float | Free float | Resources | Área | Unidad | Cantidad | Ítem LP | Ìtem EDP |
| --- | --- | --- | --- | --- | --- | --- | --- | --- | --- | --- | --- | --- | --- | --- | --- | --- | --- | --- |
|  | 6 | **MONTAJE, CONEXIONADO Y PRUEBAS DE INSTRUMENTOS - SENSORES Y TRANSMISORES DE FLUJO** |  | 2025-12-01 | 2025-12-29 |  |  |  |  |  |  |  |  |  |  |  |  |  |
| A2850 |  | Tubo sensor de Flujo Magnético y Transmisor Remoto Tag FE/FIT-1301 | 1.09d | 2025-12-01 A | 2025-12-29 | A2840 FF | 52% | 0.52d | 2026-01-05 | 2026-01-05 | 60.59d | 0d | SQM-INSTRUMENTACIÓN [31.5 h] | PTK | un | 1 | 2.6.1 | 3.6.1 |
| A2860 |  | Tubo sensor de Flujo Magnético y Transmisor Remoto Tag FE/FIT-1306 | 1.09d | 2025-12-01 A | 2025-12-29 | A2850 SS | 52% | 0.52d | 2026-01-05 | 2026-01-05 | 60.59d | 0d | SQM-INSTRUMENTACIÓN [31.5 h] | PTK | un | 1 | 2.6.2 | 3.6.2 |
| A2880 |  | Tubo sensor de Flujo Magnético y Transmisor Remoto Tag FE/FIT-1204 | 1.09d | 2025-12-01 A | 2025-12-29 | A2870 SS | 10% | 0.98d | 2026-01-05 | 2026-01-05 | 60.59d | 0d | SQM-INSTRUMENTACIÓN [31.5 h] | PTK | un | 1 | 2.6.8 | 3.6.4 |
| A2890 |  | Tubo sensor de Flujo Magnético y Transmisor Remoto Tag FE/FIT-1207 | 1.09d | 2025-12-01 A | 2025-12-29 | A2880 SS | 52% | 0.52d | 2026-01-05 | 2026-01-05 | 60.59d | 0d | SQM-INSTRUMENTACIÓN [31.5 h] | PTK | un | 1 | 2.6.8 | 3.6.5 |
| A2900 |  | Tubo sensor de Flujo Magnético y Transmisor Remoto Tag FE/FIT-4102 | 1.09d | 2025-12-01 A | 2025-12-29 | A2890 SS | 10% | 0.98d | 2026-01-06 | 2026-01-06 | 60.59d | 0d | SQM-INSTRUMENTACIÓN [31.5 h] | PTK | un | 1 | 2.6.3 | 3.6.6 |
| A2910 |  | Tubo sensor de Flujo Magnético y Transmisor Remoto Tag FE/FIT-4103 | 1.09d | 2025-12-01 A | 2025-12-29 | A2900 SS | 10% | 0.98d | 2026-01-06 | 2026-01-06 | 60.59d | 0d | SQM-INSTRUMENTACIÓN [31.5 h] | PTK | un | 1 | 2.6.4 | 3.6.7 |
| A2920 |  | Tubo sensor de Flujo Magnético y Transmisor Remoto Tag FE/FIT-4104 | 1.09d | 2025-12-01 A | 2025-12-29 | A2910 SS | 10% | 0.98d | 2026-01-06 | 2026-01-06 | 60.59d | 0d | SQM-INSTRUMENTACIÓN [31.5 h] | PTK | un | 1 | 2.6.5 | 3.6.8 |
| A2930 |  | Tubo sensor de Flujo Magnético y Transmisor Remoto Tag FE/FIT-5102 | 1.09d | 2025-12-01 A | 2025-12-29 | A2920 SS | 10% | 0.98d | 2026-01-06 | 2026-01-06 | 60.59d | 0d | SQM-INSTRUMENTACIÓN [31.5 h] | PTK | un | 1 | 2.6.6 | 3.6.9 |
| A2870 |  | Tubo sensor de Flujo Magnético y Transmisor Remoto Tag FE/FIT-1307 | 1.09d | 2025-12-07 A | 2025-12-29 | A2860 SS | 10% | 0.98d | 2026-01-24 | 2026-01-25 | 60.59d | 0d | SQM-INSTRUMENTACIÓN [31.5 h] | PTK | un | 1 | 2.6.2 | 3.6.3 |
|  | 7 | **MONTAJE, PRUEBAS Y CONEXIONADO DE INSTRUMENTOS - TRANSMISORES DE NIVEL** |  | 2025-12-01 | 2025-12-29 |  |  |  |  |  |  |  |  |  |  |  |  |  |
| A2940 |  | Transmisor de Nivel Tag LT-1301 | 1.09d | 2025-12-01 A | 2025-12-29 | A2930 SS | 52% | 0.52d | 2026-01-07 | 2026-01-07 | 60.59d | 0d | SQM-INSTRUMENTACIÓN [19.35 h] | PTK | un | 1 | 2.7.1 | 3.7.1 |
| A2950 |  | Transmisor de Nivel Tag LT-1201 | 1.09d | 2025-12-01 A | 2025-12-29 | A2940 SS | 52% | 0.52d | 2026-01-07 | 2026-01-07 | 60.59d | 0d | SQM-INSTRUMENTACIÓN [19.35 h] | PTK | un | 1 | 2.7.2 | 3.7.2 |
| A2960 |  | Transmisor de Nivel Tag LT-4101 | 1.09d | 2025-12-01 A | 2025-12-29 | A2950 SS | 10% | 0.98d | 2026-01-07 | 2026-01-07 | 60.59d | 0d | SQM-INSTRUMENTACIÓN [19.35 h] | PTK | un | 1 | 2.7.3 | 3.7.3 |
| A2970 |  | Transmisor de Nivel Tag LT-4102 | 1.09d | 2025-12-01 A | 2025-12-29 | A2960 SS | 10% | 0.98d | 2026-01-07 | 2026-01-07 | 60.59d | 0d | SQM-INSTRUMENTACIÓN [19.35 h] | PTK | un | 1 | 2.7.4 | 3.7.4 |
| A2980 |  | Transmisor de Nivel Tag LT-5101 | 1.09d | 2025-12-01 A | 2025-12-29 | A2970 SS | 10% | 0.98d | 2026-01-08 | 2026-01-08 | 60.59d | 0d | SQM-INSTRUMENTACIÓN [19.35 h] | PTK | un | 1 | 2.7.5 | 3.7.5 |
|  | 8 | **MONTAJE, PRUEBAS Y CONEXIONADO DE INSTRUMENTOS - INTERRUPTOR DE PRESIÓN** |  | 2025-12-01 | 2025-12-29 |  |  |  |  |  |  |  |  |  |  |  |  |  |
| A2990 |  | Interruptor de Nivel Tag PSL-1301 | 1.09d | 2025-12-01 A | 2025-12-29 | A2980 SS | 10% | 0.98d | 2026-01-08 | 2026-01-08 | 60.59d | 0d | SQM-INSTRUMENTACIÓN [19.35 h] | PTK | un | 1 | 2.8.1 | 3.8.1 |
| A3000 |  | Interruptor de Nivel Tag PSL-1302 | 1.09d | 2025-12-01 A | 2025-12-29 | A2990 SS | 10% | 0.98d | 2026-01-08 | 2026-01-08 | 60.59d | 0d | SQM-INSTRUMENTACIÓN [19.35 h] | PTK | un | 1 | 2.8.2 | 3.8.2 |
|  | 9 | **MONTAJE, PRUEBAS Y CONEXIONADO DE INSTRUMENTOS - INTERRUPTOR DE NIVEL** |  | 2025-12-01 | 2025-12-29 |  |  |  |  |  |  |  |  |  |  |  |  |  |
| A3010 |  | Interruptor de Nivel Tag LCHL-1201 | 1.09d | 2025-12-01 A | 2025-12-29 | A3000 SS | 10% | 0.98d | 2026-01-08 | 2026-01-08 | 60.59d | 0d | SQM-INSTRUMENTACIÓN [19.35 h] | PTK | un | 1 | 2.9.1 | 3.9.1 |
| A3020 |  | Interruptor de Nivel Tag LCHL-4101 | 1.09d | 2025-12-01 A | 2025-12-29 | A3010 SS | 10% | 0.98d | 2026-01-09 | 2026-01-09 | 60.59d | 0d | SQM-INSTRUMENTACIÓN [19.35 h] | PTK | un | 1 | 2.9.2 | 3.9.2 |
| A3030 |  | Interruptor de Nivel Tag LCHL-5101 | 1.09d | 2025-12-01 A | 2025-12-29 | A3020 SS | 10% | 0.98d | 2026-01-09 | 2026-01-09 | 60.59d | 0d | SQM-INSTRUMENTACIÓN [19.35 h] | PTK | un | 1 | 2.9.3 | 3.9.3 |
|  | 10 | **MONTAJE, PRUEBAS Y CONEXIONADO DE INSTRUMENTOS - INTERRUPTOR DE FLUJO** |  | 2025-12-01 | 2025-12-29 |  |  |  |  |  |  |  |  |  |  |  |  |  |
| A3040 |  | Interruptor de Nivel Tag FS-4101 | 1.09d | 2025-12-01 A | 2025-12-29 | A3030 SS | 10% | 0.98d | 2026-01-09 | 2026-01-09 | 60.59d | 0d | SQM-INSTRUMENTACIÓN [19.35 h] | PTK | un | 1 | 2.10.1 | 3.10.1 |
| A3050 |  | Interruptor de Nivel Tag FS-4102 | 1.09d | 2025-12-01 A | 2025-12-29 | A3040 SS | 10% | 0.98d | 2026-01-09 | 2026-01-09 | 60.59d | 0d | SQM-INSTRUMENTACIÓN [19.35 h] | PTK | un | 1 | 2.10.2 | 3.10.2 |
| A3060 |  | Interruptor de Nivel Tag FS-5101 | 1.09d | 2025-12-01 A | 2025-12-29 | A3050 SS | 10% | 0.98d | 2026-01-10 | 2026-01-10 | 60.59d | 0d | SQM-INSTRUMENTACIÓN [19.35 h] | PTK | un | 1 | 2.10.3 | 3.10.3 |
| A3070 |  | Interruptor de Nivel Tag FS-8101 | 1.09d | 2025-12-01 A | 2025-12-29 | A3060 SS | 10% | 0.98d | 2026-01-10 | 2026-01-10 | 60.59d | 0d | SQM-INSTRUMENTACIÓN [19.35 h] | PTK | un | 1 | 2.10.4 | 3.10.4 |

| ID | WBS | Activity | Duration | Start | Finish | Predecessors | Complete | Remaining | Planned start | Planned finish | Total float | Free float | Resources | Área | Unidad | Cantidad | Ítem LP | Ìtem EDP |
| --- | --- | --- | --- | --- | --- | --- | --- | --- | --- | --- | --- | --- | --- | --- | --- | --- | --- | --- |
|  | 11 | **MONTAJE DE INSTRUMENTOS - INDICADORES DE PRESIÓN (MANÓMETROS)** |  | 2025-12-01 | 2025-12-31 |  |  |  |  |  |  |  |  |  |  |  |  |  |
| A3080 |  | Indicador de Presión (manómetro) Tag PI-1201 | 1.09d | 2025-12-01 A | 2025-12-29 | A3070 SS | 10% | 0.98d | 2026-01-10 | 2026-01-10 | 60.59d | 0d | SQM-INSTRUMENTACIÓN [2.5 h] | PTK | un | 1 | 2.11.1 | 3.11.1 |
| A3090 |  | Indicador de Presión (manómetro) Tag PI-1202 | 1.09d | 2025-12-01 A | 2025-12-29 | A3080 SS | 10% | 0.98d | 2026-01-10 | 2026-01-10 | 60.59d | 0d | SQM-INSTRUMENTACIÓN [2.5 h] | PTK | un | 1 | 2.11.2 | 3.11.2 |
| A3100 |  | Indicador de Presión (manómetro) Tag PI-1203 | 1.09d | 2025-12-01 A | 2025-12-29 | A3090 SS | 10% | 0.98d | 2026-01-11 | 2026-01-11 | 60.59d | 0d | SQM-INSTRUMENTACIÓN [2.5 h] | PTK | un | 1 | 2.11.3 | 3.11.3 |
| A3110 |  | Indicador de Presión (manómetro) Tag PI-1205 | 1.09d | 2025-12-01 A | 2025-12-29 | A3100 SS | 10% | 0.98d | 2026-01-11 | 2026-01-11 | 60.59d | 0d | SQM-INSTRUMENTACIÓN [2.5 h] | PTK | un | 1 | 2.11.4 | 3.11.4 |
| A3120 |  | Indicador de Presión (manómetro) Tag PI-1206 | 1.09d | 2025-12-01 A | 2025-12-29 | A3110 SS | 10% | 0.98d | 2026-01-11 | 2026-01-11 | 60.59d | 0d | SQM-INSTRUMENTACIÓN [2.5 h] | PTK | un | 1 | 2.11.5 | 3.11.5 |
| A3130 |  | Indicador de Presión (manómetro) Tag PI-1301 | 1.09d | 2025-12-01 A | 2025-12-29 | A3120 SS | 10% | 0.98d | 2026-01-11 | 2026-01-11 | 60.59d | 0d | SQM-INSTRUMENTACIÓN [2.5 h] | PTK | un | 1 | 2.11.6 | 3.11.6 |
| A3140 |  | Indicador de Presión (manómetro) Tag PI-1302 | 1.09d | 2025-12-01 A | 2025-12-29 | A3130 SS | 10% | 0.98d | 2026-01-12 | 2026-01-12 | 60.59d | 0d | SQM-INSTRUMENTACIÓN [2.5 h] | PTK | un | 1 | 2.11.7 | 3.11.7 |
| A3150 |  | Indicador de Presión (manómetro) Tag PI-1303 | 1.09d | 2025-12-01 A | 2025-12-29 | A3140 SS | 10% | 0.98d | 2026-01-12 | 2026-01-12 | 60.59d | 0d | SQM-INSTRUMENTACIÓN [2.5 h] | PTK | un | 1 | 2.11.8 | 3.11.8 |
| A3160 |  | Indicador de Presión (manómetro) Tag PI-1304 | 1.09d | 2025-12-01 A | 2025-12-29 | A3150 SS | 10% | 0.98d | 2026-01-12 | 2026-01-12 | 60.59d | 0d | SQM-INSTRUMENTACIÓN [2.5 h] | PTK | un | 1 | 2.11.9 | 3.11.9 |
| A3170 |  | Indicador de Presión (manómetro) Tag PI-1305 | 1.09d | 2025-12-01 A | 2025-12-29 | A3160 SS | 10% | 0.98d | 2026-01-12 | 2026-01-12 | 60.59d | 0d | SQM-INSTRUMENTACIÓN [2.5 h] | PTK | un | 1 | 2.11.10 | 3.11.10 |
| A3180 |  | Indicador de Presión (manómetro) Tag PI-4103 | 1.09d | 2025-12-01 A | 2025-12-29 | A3170 SS | 10% | 0.98d | 2026-01-13 | 2026-01-13 | 60.59d | 0d | SQM-INSTRUMENTACIÓN [2.5 h] | PTK | un | 1 | 2.11.11 | 3.11.11 |
| A3190 |  | Indicador de Presión (manómetro) Tag PI-4104 | 1.09d | 2025-12-01 A | 2025-12-29 | A3180 SS | 10% | 0.98d | 2026-01-13 | 2026-01-13 | 60.59d | 0d | SQM-INSTRUMENTACIÓN [2.5 h] | PTK | un | 1 | 2.11.12 | 3.11.12 |
| A3200 |  | Indicador de Presión (manómetro) Tag PI-4105 | 1.09d | 2025-12-01 A | 2025-12-29 | A3190 SS | 10% | 0.98d | 2026-01-13 | 2026-01-13 | 60.59d | 0d | SQM-INSTRUMENTACIÓN [2.5 h] | PTK | un | 1 | 2.11.13 | 3.11.13 |
| A3210 |  | Indicador de Presión (manómetro) Tag PI-4106 | 1.09d | 2025-12-01 A | 2025-12-29 | A3200 SS | 10% | 0.98d | 2026-01-13 | 2026-01-13 | 60.59d | 0d | SQM-INSTRUMENTACIÓN [2.5 h] | PTK | un | 1 | 2.11.14 | 3.11.14 |
| A3220 |  | Indicador de Presión (manómetro) Tag PI-4107 | 1.09d | 2025-12-01 A | 2025-12-29 | A3210 SS | 10% | 0.98d | 2026-01-14 | 2026-01-14 | 60.59d | 0d | SQM-INSTRUMENTACIÓN [2.5 h] | PTK | un | 1 | 2.11.15 | 3.11.15 |
| A3240 |  | Indicador de Presión (manómetro) Tag PI-5103 | 1.09d | 2025-12-01 A | 2025-12-29 | A3230 SS | 10% | 0.98d | 2026-01-14 | 2026-01-14 | 60.59d | 2.27d | SQM-INSTRUMENTACIÓN [2.5 h] | PTK | un | 1 | 2.11.17 | 3.11.17 |
| A3250 |  | Indicador de Presión (manómetro) Tag PI-5104 | 1.09d | 2025-12-01 A | 2025-12-31 | A3240 SS, A2810 SS | 10% | 0.98d | 2026-01-14 | 2026-01-14 | 58.32d |  | SQM-INSTRUMENTACIÓN [2.5 h] | PTK | un | 1 | 2.11.18 | 3.11.18 |
| A3230 |  | Indicador de Presión (manómetro) Tag PI-4108 | 1.09d | 2025-12-12 A | 2025-12-29 | A3220 SS | 10% | 0.98d | 2026-01-31 | 2026-02-01 | 60.59d | 0d | SQM-INSTRUMENTACIÓN [2.5 h] | PTK | un | 1 | 2.11.16 | 3.11.16 |
|  | 2 | **SECTOR SX5** |  | 2025-12-01 | 2025-12-25 |  |  |  |  |  |  |  |  |  |  |  |  |  |
|  | 1 | **OBRAS ELÉCTRICAS SX5** |  | 2025-12-01 | 2025-12-25 |  |  |  |  |  |  |  |  |  |  |  |  |  |
|  | 1 | **TENDIDO Y CONEXIONADO DE CABLES BAJA TENSIÓN SX5** |  | 2025-12-01 | 2025-12-25 |  |  |  |  |  |  |  |  |  |  |  |  |  |
| A3260 |  | Cable de fuerza Multiconductor de Cobre Blando 1x4C #6 AWG. Clase de Aislación 1 kV. Categoría C. | 5.45d | 2025-12-01 A | 2025-12-25 | A3300 SS | 8% | 5d | 2026-01-07 | 2026-01-11 | 65.42d | 0d | SQM-ELÉCTRICO | SX5 | m | 0 | 1.1.1 | 4.1.1 |
| A3270 |  | Cable de Control Multiconductor de Cobre Blando 1x5C #14 AWG. Clase de Aislación 1 kV. Categoría C. | 3.27d | 2025-12-01 A | 2025-12-23 | A3260 SS | 8% | 3d | 2026-01-12 | 2026-01-14 | 65.42d | 0d | SQM-ELÉCTRICO | SX5 | m | 0 | 1.1.2 | 4.1.2 |
| A3280 |  | Cable de Control Multiconductor de Cobre Blando 1x5C #14 AWG. Tensión de Servicio 1.0 kV. | 4.36d | 2025-12-01 A | 2025-12-24 | A3270 SS, A3320 SS | 8% | 4d | 2026-01-15 | 2026-01-18 | 65.42d |  | SQM-ELÉCTRICO | SX5 | m | 0 | 1.1.3 | 4.1.3 |

Notes:
- A3260: Corregir: REVISAR SI QUEDA FUERA DEL ALCANCE / REVISAR SI TIENE QUE VER CON UNAS BOMBAS QUE YA ESTAN MONTADAS

| ID | WBS | Activity | Duration | Start | Finish | Predecessors | Complete | Remaining | Planned start | Planned finish | Total float | Free float | Resources | Cost | Actual cost | Área | Unidad | Cantidad | Ítem LP | Ìtem EDP | Corregir |
| --- | --- | --- | --- | --- | --- | --- | --- | --- | --- | --- | --- | --- | --- | --- | --- | --- | --- | --- | --- | --- | --- |
|  | 2 | **MONTAJE DE CANALIZACIÓN Y FERRETERÍA SX5** |  | 2025-12-01 | 2025-12-24 |  |  |  |  |  |  |  |  |  |  |  |  |  |  |  |  |
| A3290 |  | Conduit Acero Galvanizado Ø 2" con Cubierta PVC | 4.36d | 2025-12-01 A | 2025-12-24 | A3330 FF | 8% | 4d | 2026-01-01 | 2026-01-04 | 65.42d | 0d | SQM-ELÉCTRICO |  |  | SX5 | m | 0 | 1.2.1 | 4.2.1 |  |
| A3300 |  | Conduit Flexible Metálico de Ø 2" con Cubierta PVC | 2.18d | 2025-12-01 A | 2025-12-22 | A3290 SS | 8% | 2d | 2026-01-05 | 2026-01-06 | 65.42d | 0d | SQM-ELÉCTRICO |  |  | SX5 | c/u | 0 | 1.2.2 | 4.2.2 |  |
|  | 3 | **ARMADO, MONTAJE Y HABILITACIÓN DE EQUIPOS SX5** |  | 2025-12-01 | 2025-12-24 |  |  |  |  |  |  |  |  |  |  |  |  |  |  |  |  |
| A3310 |  | Variador de Frecuencia 30kW, 400Vca. Ya instalado en Sala Eléctrica Existente. | 3.27d | 2025-12-01 A | 2025-12-23 | A3290 SS | 8% | 3d | 2026-01-01 | 2026-01-03 | 65.42d | 0d | SQM-ELÉCTRICO |  |  | SX5 | un | 0 | 1.3.1 | 4.3.1 |  |
| A3320 |  | Estación de Control con Cubierta “Rosite Glass Polyester” | 4.36d | 2025-12-01 A | 2025-12-24 | A3310 SS | 8% | 4d | 2026-01-04 | 2026-01-07 | 65.42d | 0d | SQM-ELÉCTRICO |  |  | SX5 | un | 0 | 1.3.2 | 4.3.2 |  |
|  | 4 | **MONTAJE DE SISTEMA PUESTA A TIERRA SX5** |  | 2025-12-22 | 2025-12-24 |  |  |  |  |  |  |  |  |  |  |  |  |  |  |  |  |
| A3330 |  | Cable de Cobre Desnudo Temple Blando, Nº 2/0 AWG, 19 Hebras. | 2.18d | 2025-12-22 | 2025-12-24 | A2660 |  |  |  |  | 65.42d | 0d | SQM-ELÉCTRICO [46.32 h] | 23,511.11 |  | SX5 | m | 60 | 1.4.1 | 4.4.1 |  |
|  | 2 | **CONTRATO ADDENDUM 01 - OOCC Y MEM MISCELÁNEOS** |  | 2025-09-11 | 2026-02-05 |  |  |  |  |  |  |  |  |  |  |  |  |  |  |  |  |
|  | 1 | **HABILITACIÓN DATA CENTER ZONA NORTE - ÁREA 5801** |  | 2025-09-21 | 2025-12-29 |  |  |  |  |  |  |  |  |  |  |  |  |  |  |  |  |
|  | 1 | **ÁREA 5801 - SECTOR DATA CENTER** |  | 2025-09-21 | 2025-12-29 |  |  |  |  |  |  |  |  |  |  |  |  |  |  |  |  |
|  | 1 | **OBRAS CIVILES DATA CENTER** |  | 2025-10-16 | 2025-12-16 |  |  |  |  |  |  |  |  |  |  |  |  |  |  |  |  |
|  | 1 | **SUMINISTRO Y MONTAJE ASOCIADO A CERCO PERIMETRAL DATA CENTER** |  | 2025-10-16 | 2025-12-16 |  |  |  |  |  |  |  |  |  |  |  |  |  |  |  |  |
| A3340 |  | Excavación para Fundaciones Cerco Perimetral Data Center | 2.18d | 2025-10-16 A | 2025-12-15 | A3460 | 85% | 0.33d | 2025-10-16 | 2025-10-17 | 88.6d | 0d | SQM-OOCC [18.38 h] | 18.38 | 15.59 | 5801-DC | m3 | 16.87 | 3.3.4 a | 1.1.1.1 |  |
| A3350 |  | Emplantillado (G-05) para Fundaciones Cerco Perimetral Data Center | 1.09d | 2025-10-18 A | 2025-12-15 | A3340 SS | 90% | 0.11d | 2025-10-18 | 2025-10-18 | 88.6d | 0d | SQM-OOCC [5.6 h] | 5.6 | 5.04 | 5801-DC | m3 | 0.9704396 | 3.3.14 | 1.1.1.2 |  |
| A3370 |  | Armadura de Refuerzo para Fundaciones Cerco Perimetral Data Center | 4.36d | 2025-10-19 A | 2025-12-16 | A3350 SS | 56% | 1.91d | 2025-10-19 | 2025-10-22 | 88.6d | 0d | SQM-OOCC [122.4 h] | 122.4 | 68.89 | 5801-DC | kg | 1350 | 3.3.16 a | 1.1.1.4 |  |
| A3360 |  | Hormigonado (G-25) para Fundaciones Cerco Perimetral Data Center | 2.18d | 2025-10-23 A | 2025-10-25 A | A3370 SS | 100% |  | 2025-10-23 | 2025-10-24 |  |  | SQM-OOCC [96 h] | 96 | 96 | 5801-DC | m3 | 14.8683004 | 3.3.15 | 1.1.1.3 |  |
| A3390 |  | Pilar prefabricado PP7530 Cerco Perimetral Data Center | 7.64d | 2025-10-25 A | 2025-12-11 A | A3360 | 100% |  | 2025-10-25 | 2025-10-31 |  |  | SQM-OOCC [723.25 h] | 723.25 | 723.25 | 5801-DC | un | 44 | 3.3.28.1 | 1.1.1.6 |  |
| A3380 |  | Cierro Fijo ACMAFOR Data Center | 3.27d | 2025-11-01 A | 2025-12-11 A | A3390 | 100% |  | 2025-11-01 | 2025-11-03 |  |  | SQM-OOCC [291.25 h] | 291.25 | 291.25 | 5801-DC | m2 | 200 | 3.3.28 | 1.1.1.5 |  |
| A3400 |  | Accesos a Cierro Perimetral Data Center | 9.82d | 2025-11-04 A | 2025-12-15 | A3380 | 98% | 0.25d | 2025-11-04 | 2025-11-12 | 89.17d | 0d | SQM-OOCC [360 h] | 360 | 351 | 5801-DC | un | 4 | 3.3.30 | 1.1.1.7 |  |
|  | 2 | **OBRAS ESTRUCTURALES DATA CENTER** |  | 2025-11-13 | 2025-12-16 |  |  |  |  |  |  |  |  |  |  |  |  |  |  |  |  |
|  | 1 | **ACERO ESTRUCTURAL, PLATAFORMA DATA CENTER** |  | 2025-11-13 | 2025-12-16 |  |  |  |  |  |  |  |  |  |  |  |  |  |  |  |  |
| A3410 |  | Estructuras Livianas, Plataforma Data Center | 5.45d | 2025-11-13 A | 2025-12-15 | A3400 SS | 94% | 0.31d | 2025-11-13 | 2025-11-17 | 89.17d | 0d | SQM-ESTRUCTURA [396.26 h] | 396.26 | 373.59 | 5801-DC | kg | 1820.34 | 3.4.1.3 | 1.2.1.1 | MODIFIDCACIÓN DE ESTRUCTURA POR DIFERENCIA DE COTAS |
| A3430 |  | Barandas, Plataforma Data Center | 3.27d | 2025-11-18 A | 2025-12-15 | A3410 SS | 95% | 0.16d | 2025-11-18 | 2025-11-20 | 89.17d | 0d | SQM-ESTRUCTURA [150.48 h] | 150.48 | 142.96 | 5801-DC | kg | 971.94 | 3.4.1.6 | 1.2.1.3 |  |
| A3420 |  | Parrillas de Piso, Plataforma Data Center | 2.18d | 2025-11-21 A | 2025-12-15 | A3430 SS | 100% | 0d | 2025-11-21 | 2025-11-22 | 89.17d | 0d | SQM-ESTRUCTURA [6.08 h] | 6.08 | 6.08 | 5801-DC | kg | 1863.17 | 3.4.1.4 | 1.2.1.2 |  |
| A3440 |  | Escaleras, Plataforma Data Center | 3.27d | 2025-11-23 A | 2025-12-15 | A3420 SS | 95% | 0.16d | 2025-11-23 | 2025-11-25 | 89.17d | 0d | SQM-ESTRUCTURA [15.2 h] | 15.2 | 14.45 | 5801-DC | kg | 168.53 | 3.4.1.8 | 1.2.1.4 |  |
| A3450 |  | Grout Fundaciones Estructura Data Center | 3.27d | 2025-11-26 A | 2025-12-16 | A3440 SS | 59% | 1.33d | 2025-11-26 | 2025-11-28 | 89.17d | 0d | SQM-ESTRUCTURA [0.76 h] | 0.76 | 0.45 | 5801-DC | m3 | 0.012 | 3.4.1.12 | 1.2.1.5 |  |

| ID | WBS | Activity | Duration | Start | Finish | Predecessors | Complete | Remaining | Planned start | Planned finish | Total float | Free float | Resources | Cost | Actual cost | Área | Unidad | Cantidad | Ítem LP | Ìtem EDP | Corregir |
| --- | --- | --- | --- | --- | --- | --- | --- | --- | --- | --- | --- | --- | --- | --- | --- | --- | --- | --- | --- | --- | --- |
|  | 3 | **OBRAS MECÁNICAS DATA CENTER** |  | 2025-09-21 | 2025-12-15 |  |  |  |  |  |  |  |  |  |  |  |  |  |  |  |  |
|  | 1 | **MONTAJE Y PRUEBAS DE DATA CENTER** |  | 2025-09-21 | 2025-12-08 |  |  |  |  |  |  |  |  |  |  |  |  |  |  |  |  |
| A3460 |  | Data center TAG 5808-SDAT-1701 | 27.27d | 2025-09-21 A | 2025-12-08 A | A1070 SS+10.91d | 100% |  | 2025-09-21 | 2025-10-15 |  |  | SQM-MECANICA [1392 h] | 1,392 | 1,392 | 5801-DC | un | 1 | 3.5.1.1 | 1.3.1.1 |  |
|  | 2 | **MONTAJE Y PRUEBAS DE BOMBAS DOSIFICADORAS DATA CENTER** |  | 2025-10-20 | 2025-12-15 |  |  |  |  |  |  |  |  |  |  |  |  |  |  |  |  |
| A3470 |  | Bomba dosificadora TAG 5801-BBA-3100 | 4.36d | 2025-10-20 A | 2025-12-15 | A3520 | 80% | 0.87d | 2025-10-20 | 2025-10-23 | 54.18d | 0d | SQM-MECANICA [98.25 h] | 98.25 | 78.6 | 5801-DC | un | 1 | 3.5.2.1 | 1.3.2.1 | BOMBAS SE LIBERAN AYER 07.11 |
| A3480 |  | Bomba dosificadora TAG 5801-BBA-3103 | 4.36d | 2025-10-24 A | 2025-12-15 | A3470 SS | 80% | 0.87d | 2025-10-24 | 2025-10-27 | 54.18d | 0d | SQM-MECANICA [98.25 h] | 98.25 | 78.6 | 5801-DC | un | 1 | 3.5.2.1 | 1.3.2.2 |  |
|  | 3 | **MONTAJE Y PRUEBAS DE ESTANQUES DATA CENTER** |  | 2025-10-16 | 2025-12-08 |  |  |  |  |  |  |  |  |  |  |  |  |  |  |  |  |
| A3490 |  | Estanque IBC para almcenamiento de agua. TAG 5801-EST-3106 | 1.09d | 2025-10-16 A | 2025-12-08 A | A3460 | 100% |  | 2025-10-16 | 2025-10-16 |  |  | SQM-MECANICA [12.3 h] | 12.3 | 12.3 | 5801-DC | un | 1 | 3.5.3.1 | 1.3.3.1 |  |
| A3500 |  | Estanque IBC para almcenamiento de agua. TAG 5801-EST-3107 | 1.09d | 2025-10-17 A | 2025-12-08 A | A3490 | 100% |  | 2025-10-17 | 2025-10-17 |  |  | SQM-MECANICA [12.3 h] | 12.3 | 12.3 | 5801-DC | un | 1 | 3.5.3.2 | 1.3.3.2 |  |
| A3510 |  | Estanque IBC para almcenamiento de agua. | 1.09d | 2025-10-18 A | 2025-12-08 A | A3500 | 100% |  | 2025-10-18 | 2025-10-18 |  |  | SQM-MECANICA [12.3 h] | 12.3 | 12.3 | 5801-DC | un | 1 | 3.5.3.3 | 1.3.3.3 |  |
| A3520 |  | Estanque IBC para almcenamiento de agua. | 1.09d | 2025-10-19 A | 2025-12-08 A | A3510 | 100% |  | 2025-10-19 | 2025-10-19 |  |  | SQM-MECANICA [12.3 h] | 12.3 | 12.3 | 5801-DC | un | 1 | 3.5.3.4 | 1.3.3.4 |  |
|  | 4 | **OBRAS PIPING DATA CENTER** |  | 2025-10-28 | 2025-12-29 |  |  |  |  |  |  |  |  |  |  |  |  |  |  |  |  |
|  | 1 | **MONTAJE DE CAÑERÍA DATA CENTER** |  | 2025-10-28 | 2025-12-29 |  |  |  |  |  |  |  |  |  |  |  |  |  |  |  |  |
| A3540 |  | Ø 1" - Cañería Acero Inoxidable - Fabricación | 5.45d | 2025-10-28 A | 2025-12-15 | A3480 SS | 90% | 0.55d | 2025-10-28 | 2025-11-01 | 54.18d | 0d | SQM-PIPING [136 h] | 136 | 122.4 | 5801-DC | unión | 68 | 3.6.1.2 | 1.4.1.2 | ASOCIAR CON BOMBAS |
| A3530 |  | Ø 1 " - Cañería Acero Inoxidable - Montaje | 3.27d | 2025-10-30 A | 2025-12-15 | A3540 FF | 90% | 0.33d | 2025-10-30 | 2025-11-01 | 54.18d | 0d | SQM-PIPING [27.92 h] | 27.92 | 25.13 | 5801-DC | m | 25 | 3.6.1.1 | 1.4.1.1 |  |
| A3580 |  | Ø 1-1/4" - Cañería Acero Inoxidable - Fabricación | 2.18d | 2025-11-05 A | 2025-12-18 | A3550 FF | 90% | 0.22d | 2025-11-05 | 2025-11-06 | 54.18d | 0d | SQM-PIPING [6 h] | 6 | 5.4 | 5801-DC | unión | 2 | 3.6.1.6 | 1.4.1.6 |  |
| A3570 |  | Ø 1-1/4 " - Cañería Acero Inoxidable - Montaje | 2.18d | 2025-11-06 A | 2025-12-18 | A3580 SS+1.09d | 90% | 0.22d | 2025-11-06 | 2025-11-07 | 54.18d | 0d | SQM-PIPING [10.05 h] | 10.05 | 9.04 | 5801-DC | m | 6 | 3.6.1.5 | 1.4.1.5 | R FF |
| A3600 |  | Ø 2" - Cañería Acero Inoxidable - Fabricación | 3.27d | 2025-11-08 A | 2025-12-19 | A3570 SS | 82% | 0.58d | 2025-11-08 | 2025-11-10 | 54.18d | 4.2d | SQM-PIPING [111.11 h] | 111.11 | 91.41 | 5801-DC | unión | 22 | 3.6.1.8 | 1.4.1.8 |  |
| A3590 |  | Ø 2 " - Cañería Acero Inoxidable - Montaje | 3.27d | 2025-11-09 A | 2025-12-29 | A3610 FF, A3620 FF, A3600 SS+1.09d, A3480 SS | 83% | 0.54d | 2025-11-09 | 2025-11-11 | 76.11d | 0d | SQM-PIPING [33.5 h] | 33.5 | 27.96 | 5801-DC | m | 12 | 3.6.1.7 | 1.4.1.7 | R FF |
| A3560 |  | Ø 3/4" - Cañería Acero Inoxidable - Fabricación | 2.18d | 2025-12-15 | 2025-12-17 | A3530 |  |  |  |  | 54.18d | 0d | SQM-PIPING [3.5 h] | 3.5 |  | 5801-DC | unión | 2 | 3.6.1.4 | 1.4.1.4 |  |
| A3550 |  | Ø 3/4 " - Cañería Acero Inoxidable - Montaje | 2.18d | 2025-12-16 | 2025-12-18 | A3560 SS+1.09d |  |  |  |  | 54.18d | 0d | SQM-PIPING [6.3 h] | 6.3 |  | 5801-DC | m | 6 | 3.6.1.3 | 1.4.1.3 | R FF |
|  | 2 | **MONTAJE DE VÁLVULAS Y FITTING PIPING DATA CENTER** |  | 2025-12-15 | 2025-12-29 |  |  |  |  |  |  |  |  |  |  |  |  |  |  |  |  |
| A3610 |  | Montaje de Fitting Acero Inoxidable GL Data Center | 14.18d | 2025-12-15 | 2025-12-29 | A3530 SS |  |  |  |  | 76.11d | 0d | SQM-PIPING [387.61 h] | 387.61 |  | 5801-DC | un | 94 | 99.4 | 99.4 |  |
| A3620 |  | Válvulas Data Center (Global) | 14.18d | 2025-12-15 | 2025-12-29 | A3530 SS |  |  |  |  | 76.11d | 0d | SQM-PIPING [58.41 h] | 58.41 |  | 5801-DC | un | 15 | 99.13 | 99.13 |  |

| ID | WBS | Activity | Duration | Start | Finish | Predecessors | Complete | Remaining | Planned start | Planned finish | Total float | Free float | Resources | Cost | Actual cost | Área | Unidad | Cantidad | Ítem LP | Ìtem EDP | Corregir |
| --- | --- | --- | --- | --- | --- | --- | --- | --- | --- | --- | --- | --- | --- | --- | --- | --- | --- | --- | --- | --- | --- |
|  | 5 | **OBRAS ELÉCTRICAS DATA CENTER** |  | 2025-10-16 | 2025-12-28 |  |  |  |  |  |  |  |  |  |  |  |  |  |  |  |  |
|  | 1 | **MONTAJE Y CONEXIONADO CONDUCTORES FUERZA Y CONTROL** |  | 2025-10-18 | 2025-12-16 |  |  |  |  |  |  |  |  |  |  |  |  |  |  |  |  |
|  | 1 | **TENDIDO Y CONEXIONADO CABLES FUERZA MONOCONDUCTOR** |  | 2025-10-18 | 2025-12-15 |  |  |  |  |  |  |  |  |  |  |  |  |  |  |  |  |
| A3630 |  | Cable Fuerza 3x1c # 350 MCM | 5.45d | 2025-10-18 A | 2025-12-15 | A3730 SS | 99% | 0.07d | 2025-10-18 | 2025-10-22 | 79.55d | 0d | SQM-ELÉCTRICO [136.85 h] | 69,460.63 | 68,592.37 | 5801-DC | m | 284 | 3.7.1.1.1 | 1.5.1.1.1 |  |
| A3640 |  | Cable Fuerza 3x1c # 500 MCM | 4.36d | 2025-10-23 A | 2025-12-15 | A3630 SS | 99% | 0.05d | 2025-10-23 | 2025-10-26 | 79.55d | 0d | SQM-ELÉCTRICO [61.76 h] | 31,348.14 | 30,956.29 | 5801-DC | m | 79 | 3.7.1.1.2 | 1.5.1.1.2 |  |
| A3650 |  | Cable tierra 1x1c # 2/0 AWG (VERDE) | 2.18d | 2025-10-27 A | 2025-12-15 | A3640 SS | 94% | 0.12d | 2025-10-27 | 2025-10-28 | 79.55d | 0d | SQM-ELÉCTRICO [26.35 h] | 13,374.73 | 12,623.51 | 5801-DC | m | 75 | 3.7.1.1.3 | 1.5.1.1.3 |  |
|  | 2 | **TENDIDO Y CONEXIONADO CABLES FUERZA MULTICONDUCTOR** |  | 2025-10-29 | 2025-12-16 |  |  |  |  |  |  |  |  |  |  |  |  |  |  |  |  |
| A3660 |  | Cable Fuerza 1x4c # 12 AWG | 2.18d | 2025-10-29 A | 2025-12-15 | A3650 SS | 91% | 0.19d | 2025-10-29 | 2025-10-30 | 79.55d | 0d | SQM-ELÉCTRICO [23.38 h] | 11,867.9 | 10,853.58 | 5801-DC | m | 70 | 3.7.1.2.1 | 1.5.1.2.1 |  |
| A3670 |  | Cable Fuerza 1x4c # 8 AWG | 2.18d | 2025-10-31 A | 2025-12-16 | A3660 SS | 43% | 1.24d | 2025-10-31 | 2025-11-01 | 79.55d | 0d | SQM-ELÉCTRICO [8.12 h] | 4,119.01 | 1,777.55 | 5801-DC | m | 30 | 3.7.1.2.2 | 1.5.1.2.2 |  |
| A3680 |  | Cable Fuerza 1x5c # 8 AWG | 2.18d | 2025-11-02 A | 2025-12-16 | A3670 SS | 12% | 1.91d | 2025-11-02 | 2025-11-03 | 79.55d | 0d | SQM-ELÉCTRICO |  |  | 5801-DC | m | 0 | 3.7.1.2.3 | 1.5.1.2.3 |  |
| A3690 |  | Cables Control 1x5c # 14 AWG | 2.18d | 2025-11-04 A | 2025-12-15 | A3680 SS | 91% | 0.19d | 2025-11-04 | 2025-11-05 | 79.55d | 0d | SQM-ELÉCTRICO [22.49 h] | 11,413.11 | 10,430.77 | 5801-DC | m | 70 | 3.7.1.2.4 | 1.5.1.2.4 |  |
| A3700 |  | Cables Control 1x3c # 12 AWG | 2.18d | 2025-11-06 A | 2025-12-16 | A3690 SS | 53% | 1.03d | 2025-11-06 | 2025-11-07 | 79.55d | 2.25d | SQM-ELÉCTRICO [5.48 h] | 2,781.54 | 1,464.32 | 5801-DC | m | 26 | 3.7.1.2.5 | 1.5.1.2.5 |  |
|  | 2 | **MONTAJE DE CANALIZACIÓN Y FERRETERÍA DATA CENTER** |  | 2025-10-16 | 2025-12-15 |  |  |  |  |  |  |  |  |  |  |  |  |  |  |  |  |
| A3710 |  | C.A.G. 1", con Hilo y Copla de Unión, Según Norma ANSI C80-1. | 2.18d | 2025-10-16 A | 2025-12-15 | A3460 | 95% | 0.11d | 2025-10-16 | 2025-10-17 | 77.29d | 0d | SQM-ELÉCTRICO [25.2 h] | 12,791.02 | 12,151.47 | 5801-DC | m | 20 | 3.7.2.1 | 1.5.2.1 |  |
| A3720 |  | Conduit Flexible de Acero de 1" de Diámetro, con Chaqueta de PVC. | 2.18d | 2025-10-18 A | 2025-12-08 A | A3710 SS | 100% |  | 2025-10-18 | 2025-10-19 |  |  | SQM-ELÉCTRICO [25.2 h] | 12,791.02 | 12,791.02 | 5801-DC | m | 20 | 3.7.2.2 | 1.5.2.2 | R FF |
|  | 3 | **MONTAJE Y CONEXIONADO EQUIPOS DE ALUMBRADO** |  | 2025-10-18 | 2025-12-19 |  |  |  |  |  |  |  |  |  |  |  |  |  |  |  |  |
| A3730 |  | Cable Fuerza 1x3c #12 AWG | 2.18d | 2025-10-18 A | 2025-12-16 | A3710 SS | 45% | 1.2d | 2025-10-18 | 2025-10-19 | 77.29d | 0d | SQM-ELÉCTRICO [47.49 h] | 24,106.67 | 10,848 | 5801-DC | m | 130 | 3.7.3.1 | 1.5.3.1 |  |
| A3740 |  | Montaje y Soportación C.A.G. 1", con Hilo y Copla de Unión, Según Norma ANSI C80-1 | 2.18d | 2025-10-20 A | 2025-12-09 A | A3730 SS | 100% |  | 2025-10-20 | 2025-10-21 |  |  | SQM-ELÉCTRICO [138.6 h] | 70,350.59 | 70,350.59 | 5801-DC | m | 110 | 3.7.3.2 | 1.5.3.2 |  |
| A3760 |  | Poste Recto/Curvo de Acero Galvanizado, 6 m útiles. | 6.55d | 2025-10-22 A | 2025-12-19 | A3740 | 33% | 4.36d | 2025-10-22 | 2025-10-27 | 77.29d | 0d | SQM-ELÉCTRICO [276 h] | 140,092.08 | 46,793.8 | 5801-DC | c/u | 11 | 3.7.3.4 | 1.5.3.4 |  |
| A3750 |  | Equipo de Alumbrado Público LED de 120 W, para Poste Tubular 6m.(LUZ CALIDA) | 6.55d | 2025-10-28 A | 2025-12-18 | A3740 SS, A3760 SS, A3720 SS | 50% | 3.29d | 2025-10-28 | 2025-11-02 | 77.29d | 0d | SQM-ELÉCTRICO [276 h] | 140,092.08 | 69,721.19 | 5801-DC | c/u | 11 | 3.7.3.3 | 1.5.3.3 |  |
|  | 4 | **MONTAJE, CONEXIÓN Y PRUEBAS EQUIPOS DE CONTROL BOMBAS** |  | 2025-11-03 | 2025-12-15 |  |  |  |  |  |  |  |  |  |  |  |  |  |  |  |  |
| A3770 |  | Estación Local y Elementos Asociados. | 2.18d | 2025-11-03 A | 2025-12-15 | A3750 SS | 93% | 0.14d | 2025-11-03 | 2025-11-04 | 80.14d | 0d | SQM-ELÉCTRICO [84 h] | 42,636.72 | 39,824.73 | 5801-DC | c/u | 2 | 3.7.4.1 | 1.5.4.1 |  |
| A3780 |  | Cable de Cobre electrolítico Desnudo, 2/0 AWG | 3.27d | 2025-11-05 A | 2025-12-15 | A3770 SS | 86% | 0.44d | 2025-11-05 | 2025-11-07 | 80.14d | 2.85d | SQM-ELÉCTRICO [144 h] | 73,091.52 | 63,208.94 | 5801-DC | c/u | 50 | 3.7.4.2 | 1.5.4.2 | R FF |
|  | 5 | **MONTAJE/HABILITACÓN DE EQUIPOS ELÉCTRICOS PRINCIPALES DATA CENTER** |  | 2025-11-17 | 2025-12-28 |  |  |  |  |  |  |  |  |  |  |  |  |  |  |  |  |
| A3800 |  | Tablero de Distribución de Fuerza y Alumbrado TAG: 5870-PNL-3101 | 3.27d | 2025-11-17 A | 2025-12-28 | A3790 FF | 93% | 0.22d | 2025-11-17 | 2025-11-19 | 77.29d | 0d | SQM-ELÉCTRICO [124.1 h] | 62,990.68 | 58,791.3 | 5801-DC | c/u | 1 | 3.7.5.2 | 1.5.5.2 |  |
| A3810 |  | Tablero de Alumbrado TAG: 5870-TDA-3103 | 3.27d | 2025-11-20 A | 2025-12-28 | A3800 SS | 93% | 0.22d | 2025-11-20 | 2025-11-22 | 77.29d | 0d | SQM-ELÉCTRICO [124.1 h] | 62,990.68 | 58,791.3 | 5801-DC | c/u | 1 | 3.7.5.3 | 1.5.5.3 |  |
| A3820 |  | Tablero Eléctrico Orion TAG: 5870-PNL-3105 | 3.27d | 2025-11-23 A | 2025-12-28 | A3810 SS | 93% | 0.22d | 2025-11-23 | 2025-11-25 | 77.29d | 0d | SQM-ELÉCTRICO [124.1 h] | 62,990.68 | 58,791.3 | 5801-DC | c/u | 1 | 3.7.5.4 | 1.5.5.4 |  |
| A3830 |  | Sistema de Almacenamiento de Energía BESS TAG: 5870-BCB-3102 | 3.27d | 2025-11-26 A | 2025-12-28 | A3820 SS | 90% | 0.33d | 2025-11-26 | 2025-11-28 | 77.29d | 0d | SQM-ELÉCTRICO [124.1 h] | 62,990.68 | 56,691.61 | 5801-DC | c/u | 1 | 3.7.5.5 | 1.5.5.5 |  |
| A3790 |  | Subestación Unitaria TAG: 5870-SEU-3100 | 9.82d | 2025-12-18 | 2025-12-28 | A3460 FF, A3750, A3780, A3700 |  |  |  |  | 77.29d | 0d | SQM-ELÉCTRICO [360 h] | 182,728.8 |  | 5801-DC | c/u | 1 | 3.7.5.1 | 1.5.5.1 | R FF |

| ID | WBS | Activity | Duration | Start | Finish | Predecessors | Complete | Remaining | Planned start | Planned finish | Total float | Free float | Resources | Cost | Actual cost | Área | Unidad | Cantidad | Ítem LP | Ìtem EDP |
| --- | --- | --- | --- | --- | --- | --- | --- | --- | --- | --- | --- | --- | --- | --- | --- | --- | --- | --- | --- | --- |
|  | 6 | **OBRAS DE INSTRUMENTACIÓN SECTOR DATA CENTER** |  | 2025-11-29 | 2025-12-29 |  |  |  |  |  |  |  |  |  |  |  |  |  |  |  |
|  | 1 | **MONTAJE DE EQUIPOS DE COMUNICACIÓN Y CABECERAS DE F.O. EN RACK DE 19"** |  | 2025-11-29 | 2025-12-27 |  |  |  |  |  |  |  |  |  |  |  |  |  |  |  |
| A3840 |  | Switch cisco catalyst, 9500, 24x1 y colocación de TAGs | 1.09d | 2025-11-29 A | 2025-12-27 | A3830 SS | 90% | 0.11d | 2025-11-29 | 2025-11-29 | 77.29d | 0d | SQM-INSTRUMENTACIÓN [72 h] |  |  | 5801-DC | c/u | 2 | 3.8.1.1 | 1.6.1.1 |
| A3850 |  | Switch networking interr. Connectrix DS-6610B-L | 1.09d | 2025-11-30 A | 2025-12-27 | A3840 SS | 97% | 0.04d | 2025-11-30 | 2025-11-30 | 77.29d | 0d | SQM-INSTRUMENTACIÓN [72 h] |  |  | 5801-DC | c/u | 2 | 3.8.1.1 | 1.6.1.2 |
| A3860 |  | Servidores, poweredge, R660, DELL | 1.09d | 2025-12-01 A | 2025-12-27 | A3850 SS | 90% | 0.11d | 2025-12-01 | 2025-12-01 | 77.29d | 0d | SQM-INSTRUMENTACIÓN [240 h] |  |  | 5801-DC | c/u | 5 | 3.8.1.2 | 1.6.1.3 |
| A3870 |  | Servidores, poweredge, 500T, DELL | 1.09d | 2025-12-02 A | 2025-12-27 | A3860 SS | 90% | 0.11d | 2025-12-02 | 2025-12-02 | 77.29d | 0d | SQM-INSTRUMENTACIÓN [48 h] |  |  | 5801-DC | c/u | 1 | 3.8.1.2 | 1.6.1.4 |
| A3880 |  | TRANSCEIVER,QSFP,100GBASE,LR4 | 1.09d | 2025-12-03 A | 2025-12-27 | A3870 SS | 90% | 0.11d | 2025-12-03 | 2025-12-03 | 77.29d | 0d | SQM-INSTRUMENTACIÓN [6 h] |  |  | 5801-DC | c/u | 1 | 3.8.1.3 | 1.6.1.5 |
| A3890 |  | Conversor,SFP,TRANSCEIVER,10GBASE-T | 1.09d | 2025-12-04 A | 2025-12-27 | A3880 SS | 90% | 0.11d | 2025-12-04 | 2025-12-04 | 77.29d | 0d | SQM-INSTRUMENTACIÓN [120 h] |  |  | 5801-DC | c/u | 20 | 3.8.1.4 | 1.6.1.6 |
|  | 2 | **TENDIDO Y CONEXIONADO DE CABLES DE ALIMENTACIÓN DATA CENTER** |  | 2025-12-05 | 2025-12-13 |  |  |  |  |  |  |  |  |  |  |  |  |  |  |  |
| A3900 |  | Cable Alimentación Eléctrica de Switches. Considera Suministro y Preparación | 3.27d | 2025-12-05 A | 2025-12-13 A | A3890 SS | 100% |  | 2025-12-05 | 2025-12-07 |  |  | SQM-INSTRUMENTACIÓN [168 h] |  |  | 5801-DC | c/u | 6 | 3.8.2.1 | 1.6.2.1 |
|  | 3 | **SUMINSITRO Y MONTAJE DE PROTECCIONES ELÉCTRICAS** |  | 2025-12-05 | 2025-12-29 |  |  |  |  |  |  |  |  |  |  |  |  |  |  |  |
| A3910 |  | Protecciones Eléctricas (CB-01;CB-02;CB-03;CB-04;CB-01R;CB-02R;CB-03R;CB-04R), y Borneras | 3.27d | 2025-12-05 A | 2025-12-29 | A3900 SS, A3590 SS | 90% | 0.33d | 2025-12-05 | 2025-12-07 | 76.32d | 38.18d | SQM-ELÉCTRICO [168 h] | 85,273.44 | 76,746.1 | 5801-DC | un | 8 | 3.8.3.1 | 1.6.3.1 |
|  | 2 | **RED GN-GL L5 LiOH, ALIMENTACIÓN CALDERA UTILITIES - ÁREA 5801** |  | 2025-10-09 | 2025-12-30 |  |  |  |  |  |  |  |  |  |  |  |  |  |  |  |
|  | 1 | **ÁREA 5801 - SECTOR GNL** |  | 2025-10-09 | 2025-12-30 |  |  |  |  |  |  |  |  |  |  |  |  |  |  |  |
|  | 1 | **OBRAS CIVILES SECTOR LÍNEA DE GAS** |  | 2025-10-29 | 2025-12-18 |  |  |  |  |  |  |  |  |  |  |  |  |  |  |  |
|  | 1 | **MOVIMIENTO DE TIERRAS, EXCAVACIÓN PARA CRUCE DE CAMINO GNL** |  | 2025-11-02 | 2025-12-15 |  |  |  |  |  |  |  |  |  |  |  |  |  |  |  |
| A3920 |  | Excavación para Curce de Camino Norte Línes de Gas | 1.09d | 2025-11-02 A | 2025-12-15 | A3960 FF | 68% | 0.35d | 2025-11-02 | 2025-11-02 | 75.23d | 0d | SQM-OOCC [378 h] | 378 | 258.3 | 5801-GNL | m3 | 83.538 | 4,1,1 | 2.2.1.1 |
| A3940 |  | Transporte de Material a Botadero | 1.09d | 2025-11-03 A | 2025-12-14 A | A3920 SS, A3960 FF | 100% |  | 2025-11-03 | 2025-11-03 |  |  | SQM-OOCC [14.4 h] | 14.4 | 14.4 | 5801-GNL | m3 | 83.538 | 4,1,3 | 2.2.1.3 |
| A3950 |  | Arena para Relleno de Curce de Camino Norte Línes de Gas | 2.18d | 2025-11-13 A | 2025-12-15 | A3990 | 100% | 0d | 2025-11-13 | 2025-11-14 | 84.01d | 0d | SQM-OOCC [67.07 h] | 67.07 | 67.07 | 5801-GNL | m3 | 42 | 4,1,4 | 2.2.1.4 |
| A3930 |  | Relleno para Curce de Camino Norte Línes de Gas | 3.27d | 2025-11-19 A | 2025-12-12 A | A4000 SS | 100% |  | 2025-11-19 | 2025-11-21 |  |  | SQM-OOCC [170.4 h] | 170.4 | 170.4 | 5801-GNL | m3 | 83.538 | 4,1,2 | 2.2.1.2 |
|  | 2 | **EXCAVACIÓN PARA CAÑERÍA ENTERRADA GNL** |  | 2025-10-29 | 2025-12-13 |  |  |  |  |  |  |  |  |  |  |  |  |  |  |  |
| A3960 |  | Excavación para Curce de Camino Sur Línes de Gas | 5.45d | 2025-10-29 A | 2025-12-12 A | A4020 SS | 100% |  | 2025-10-29 | 2025-11-02 |  |  | SQM-OOCC [2094.75 h] | 2,094.75 | 2,094.75 | 5801-GNL | m3 | 129.675 | 4,2,1 | 2.2.2.1 |
| A3980 |  | Transporte de Material a Botadero | 3.27d | 2025-11-04 A | 2025-12-13 A | A3940 | 100% |  | 2025-11-04 | 2025-11-06 |  |  | SQM-OOCC [79.8 h] | 79.8 | 79.8 | 5801-GNL | m3 | 129.675 | 4,2,3 | 2.2.2.3 |
| A3990 |  | Arena para Relleno de Curce de Camino Sur Línes de Gas | 6.55d | 2025-11-07 A | 2025-12-13 A | A3980 | 100% |  | 2025-11-07 | 2025-11-12 |  |  | SQM-OOCC [123.89 h] | 123.89 | 123.89 | 5801-GNL | m3 | 60.8 | 4,2,4 | 2.2.2.4 |
| A3970 |  | Relleno para Curce de Camino Sur Línes de Gas | 3.27d | 2025-11-22 A | 2025-12-10 A | A3930 | 100% |  | 2025-11-22 | 2025-11-24 |  |  | SQM-OOCC [950.4 h] | 950.4 | 950.4 | 5801-GNL | m3 | 129.675 | 4,2,2 | 2.2.2.2 |

| ID | WBS | Activity | Type | Duration | Start | Finish | Predecessors | Complete | Remaining | Planned start | Planned finish | Total float | Free float | Resources | Cost | Actual cost | Área | Unidad | Cantidad | Ítem LP | Ìtem EDP |
| --- | --- | --- | --- | --- | --- | --- | --- | --- | --- | --- | --- | --- | --- | --- | --- | --- | --- | --- | --- | --- | --- |
|  | 3 | **SERVICIOS, CRUCE DE CAMINO GNL** |  |  | 2025-11-15 | 2025-12-18 |  |  |  |  |  |  |  |  |  |  |  |  |  |  |  |
| A4000 |  | Camisa de 8" para Cruce de Camino Norte y Sur, Línea de Gas |  | 4.36d | 2025-11-15 A | 2025-12-18 | A3950 SS | 26% | 3.22d | 2025-11-15 | 2025-11-18 | 84.01d | 0d | SQM-OOCC [441 h] | 441 | 115.46 | 5801-GNL | m | 275 | 5,1,1 | 2.3.1.1 |
|  | 2 | **OBRAS PIPING SECTOR LÍNEA DE GAS** |  |  | 2025-10-09 | 2025-12-30 |  |  |  |  |  |  |  |  |  |  |  |  |  |  |  |
|  | 1 | **MONTAJE DE CAÑERÍAS, LÍNEAS DE GAS** |  |  | 2025-10-09 | 2025-12-26 |  |  |  |  |  |  |  |  |  |  |  |  |  |  |  |
| A4020 |  | Ø 4" - Cañería Acero Carbono ASTM A106 Gr. B (100mm) |  | 21.82d | 2025-10-09 A | 2025-12-26 | A6040 SS | 49% | 11.12d | 2025-10-09 | 2025-10-28 | 66.08d | 0d | SQM-PIPING [3233.15 h] | 3,233.15 | 1,584.92 | 5801-GNL | m | 830 | 3,1,2 | 2.1.1.2 |
| A4010 |  | Ø 110 mm - Cañería HDPE, PE 100, PN10 (4") |  | 5.45d | 2025-11-19 A | 2025-12-19 | A4000 SS | 24% | 4.15d | 2025-11-19 | 2025-11-23 | 86.36d |  | SQM-PIPING [681.78 h] | 681.78 | 163.63 | 5801-GNL | m | 236 | 3,1,1 | 2.1.1.1 |
|  | 2 | **MONTAJE DE VÁLVULAS MANUALES Y FITTING, LÍNEA DE GAS** |  |  | 2025-10-09 | 2025-12-29 |  |  |  |  |  |  |  |  |  |  |  |  |  |  |  |
| A4030 |  | Montaje de Fitting para Líneas GNL | level of effort | 54.55d | 2025-10-09 A | 2025-12-29 | A4020 SS, A4010 SS | 74% | 14.4d | 2025-10-09 | 2025-11-27 | 76.11d | 0d | SQM-PIPING [738.95 h] | 738.95 | 352.6 | 5801-GNL | un | 180 | 99.5 | 99.5 |
| A4040 |  | Válvulas Línea de Gas (Global) | level of effort | 54.55d | 2025-10-09 A | 2025-12-29 | A4030 SS | 74% | 14.4d | 2025-10-09 | 2025-11-27 | 76.11d | 0d | SQM-PIPING [192 h] | 192 | 91.62 | 5801-GNL | un | 16 | 99.14 | 99.14 |
|  | 3 | **TIE-IN LÍNEAS ASOCIADAS A GNL** |  |  | 2025-12-26 | 2025-12-29 |  |  |  |  |  |  |  |  |  |  |  |  |  |  |  |
| A4050 |  | TIE-IN 5801-001 Acero Carbono Ø4" |  | 3.27d | 2025-12-26 | 2025-12-29 | A4020, A4040 FF, A4030 FF, A3970 |  |  |  |  | 76.11d | 0d | SQM-PIPING [76 h] | 76 |  | 5801-GNL | gl | 1 | 3,5,1 | 2.1.5.1 |
| A4060 |  | TIE-IN 5801-002 Acero Carbono Ø4" |  | 3.27d | 2025-12-26 | 2025-12-29 | A4050 FF |  |  |  |  | 76.11d | 37.97d | SQM-PIPING [120 h] | 120 |  | 5801-GNL | gl | 1 | 3,5,2 | 2.1.5.2 |
|  | 4 | **FABRICACIÓN Y MONTAJE DE SOPORTES** |  |  | 2025-10-30 | 2025-12-30 |  |  |  |  |  |  |  |  |  |  |  |  |  |  |  |
| A4070 |  | Soportes tipo SOP 01-A |  | 6.55d | 2025-10-30 A | 2025-12-17 | A4020 SS+22.91d | 60% | 2.6d | 2025-10-30 | 2025-11-04 | 66.08d | 0d | SQM-PIPING [3.75 h] | 3.75 | 2.26 | 5801-GNL | un | 10 | 3,6,1 | 2.1.6.1 |
| A4080 |  | Soportes tipo SOP 01-B |  | 6.55d | 2025-12-17 | 2025-12-24 | A4070 |  |  |  |  | 66.08d | 0d | SQM-PIPING [55.5 h] | 55.5 |  | 5801-GNL | un | 6 | 3,6,2 | 2.1.6.2 |
| A4090 |  | Soportes tipo SOP 02 |  | 6.55d | 2025-12-24 | 2025-12-30 | A4080 |  |  |  |  | 66.08d | 27.22d | SQM-PIPING [97.88 h] | 97.88 |  | 5801-GNL | un | 281 | 3,6,3 | 2.1.6.3 |
|  | 3 | **ESTANQUE PIVOTE** |  |  | 2025-09-11 | 2026-02-05 |  |  |  |  |  |  |  |  |  |  |  |  |  |  |  |
|  | 1 | **ÁREA 5817 - SECTOR TK-6060** |  |  | 2025-09-11 | 2026-02-05 |  |  |  |  |  |  |  |  |  |  |  |  |  |  |  |
|  | 1 | **OBRAS CIVILES TK-6060** |  |  | 2025-09-11 | 2025-12-27 |  |  |  |  |  |  |  |  |  |  |  |  |  |  |  |
|  | 1 | **LOSA Y FUNDACIONES TK-6060** |  |  | 2025-09-11 | 2025-12-21 |  |  |  |  |  |  |  |  |  |  |  |  |  |  |  |
|  | 1 | **MOVIMIENTO MASIVO DE TIERRA** |  |  | 2025-09-11 | 2025-12-17 |  |  |  |  |  |  |  |  |  |  |  |  |  |  |  |
| A4100 |  | Excavación Losa Estanque Pivote |  | 3.27d | 2025-09-11 A | 2025-12-17 | A1070 SS | 11% | 2.91d | 2025-09-11 | 2025-09-13 | 38.14d | 0d | SQM-OOCC |  |  | 5817-TK6060 | m3 | 0 | 5.1.1. | 8.5.1.1 |
| A4110 |  | Relleno Losa Estanque Pivote |  | 2.18d | 2025-09-14 A | 2025-12-16 | A4100 SS | 12% | 1.91d | 2025-09-14 | 2025-09-15 | 38.14d | 0d | SQM-OOCC |  |  | 5817-TK6060 | m3 | 0 | 5.1.2. | 8.5.1.2 |
|  | 2 | **SISTEMA DE IMPERMEABILIZACIÓN** |  |  | 2025-09-16 | 2025-12-19 |  |  |  |  |  |  |  |  |  |  |  |  |  |  |  |
| A4120 |  | Carpeta de HDPE Losa Estanque Pivote |  | 3.27d | 2025-09-16 A | 2025-12-17 | A4110 SS | 11% | 2.91d | 2025-09-16 | 2025-09-18 | 38.14d | 0d | SQM-OOCC |  |  | 5817-TK6060 | m2 | 0 | 5.2.1. | 8.5.2.1 |
| A4130 |  | Membrana de Geotextil Losa Estanque Pivote |  | 5.45d | 2025-09-19 A | 2025-12-19 | A4120 SS | 10% | 4.91d | 2025-09-19 | 2025-09-23 | 38.14d | 0d | SQM-OOCC |  |  | 5817-TK6060 | m2 | 0 | 5.2.2. | 8.5.2.2 |

Notes:
- A4000: Corregir: SE SOLICITA POR ITO TODO LO QUE VAYA SOTERRADO LLEVARÍA ENCAMISADO
- A4020: Corregir: MODIFICAR FECHA DE INICIO
- A4050: Corregir: R FF

| ID | WBS | Activity | Duration | Start | Finish | Predecessors | Complete | Remaining | Planned start | Planned finish | Total float | Free float | Resources | Cost | Actual cost | Área | Unidad | Cantidad | Ítem LP | Ìtem EDP |
| --- | --- | --- | --- | --- | --- | --- | --- | --- | --- | --- | --- | --- | --- | --- | --- | --- | --- | --- | --- | --- |
|  | 3 | **FABRICACIÓN DE LOSA Y FUNDACIONES** |  | 2025-09-14 | 2025-12-21 |  |  |  |  |  |  |  |  |  |  |  |  |  |  |  |
| A4160 |  | Armadura de refuerzo A630-420H Losa Estanque Pivote | 7.64d | 2025-09-14 A | 2025-12-21 | A4100 SS | 10% | 6.91d | 2025-09-14 | 2025-09-20 | 38.14d | 0d | SQM-OOCC |  |  | 5817-TK6060 | kg | 0 | 5.4.1. | 8.5.4.1 |
| A4140 |  | Hormigón G30 Losa Fundación Estanque Pivote | 7.64d | 2025-09-24 A | 2025-12-21 | A4160 SS, A4130 SS | 10% | 6.91d | 2025-09-24 | 2025-09-30 | 38.14d | 0d | SQM-OOCC |  |  | 5817-TK6060 | m3 | 0 | 5.3.1. | 8.5.3.1 |
| A4150 |  | Hormigón G30 Pedestal PD-1 Bombas Estanque Pivote | 2.18d | 2025-10-01 A | 2025-12-16 | A4140 SS | 12% | 1.91d | 2025-10-01 | 2025-10-02 | 48.64d | 0d | SQM-OOCC |  |  | 5817-TK6060 | m3 | 0 | 5.3.2. | 8.5.3.2 |
| A4170 |  | Grating FRP T3232 Bomba Sumidero | 2.18d | 2025-10-03 A | 2025-12-10 A | A4150 SS | 100% |  | 2025-10-03 | 2025-10-04 |  |  | SQM-OOCC [4.55 h] | 4.55 | 4.55 | 5817-TK6060 | m2 | 1 | 1.7.1. | 8.1.1.1 |
| A4180 |  | Estructura Liviana de Bomba Sumidero | 2.18d | 2025-10-05 A | 2025-12-13 A | A4170 | 100% |  | 2025-10-05 | 2025-10-06 |  |  | SQM-OOCC [5.47 h] | 5.47 | 5.47 | 5817-TK6060 | kg | 36 | 1.8.1. | 8.1.2.1 |
|  | 2 | **CRUCE DE CAMINO** |  | 2025-09-24 | 2025-12-27 |  |  |  |  |  |  |  |  |  |  |  |  |  |  |  |
|  | 1 | **MOVIMIENTO MASIVO DE TIERRA PARA CRUCE DE CAMINOS** |  | 2025-09-24 | 2025-12-15 |  |  |  |  |  |  |  |  |  |  |  |  |  |  |  |
| A4190 |  | Excavación Cruce de Camino 1 | 7.64d | 2025-09-24 A | 2025-12-15 | A4130 SS | 92% | 0.63d | 2025-09-24 | 2025-09-30 | 49.98d | 0d | SQM-OOCC [513.98 h] | 513.98 | 471.65 | C.CAMINO | m3 | 55.16 | 6.1.1. | 8.6.1.6 |
| A4210 |  | Relleno Estructural Cruce de Camino 1 | 3.27d | 2025-10-01 A | 2025-12-15 | A4190 SS | 100% | 0d | 2025-10-01 | 2025-10-03 | 49.98d | 0d | SQM-OOCC [130.34 h] | 130.34 | 130.34 | C.CAMINO | m3 | 32.13 | 6.1.3. | 8.6.1.2 |
| A4230 |  | Excavación Cruce de Camino 2 | 5.45d | 2025-10-01 A | 2025-12-15 | A4190 SS | 91% | 0.47d | 2025-10-01 | 2025-10-05 | 87.23d | 0d | SQM-OOCC [367.13 h] | 367.13 | 335.42 | C.CAMINO | m3 | 51 | 6.1.5. | 8.6.1.5 |
| A4220 |  | Cama de Arena Cruce de Camino 1 | 1.09d | 2025-10-04 A | 2025-12-15 | A4210 SS | 100% | 0d | 2025-10-04 | 2025-10-04 | 49.98d | 0d | SQM-OOCC [8.44 h] | 8.44 | 8.44 | C.CAMINO | m3 | 2.8 | 6.1.4. | 8.6.1.8 |
| A4250 |  | Relleno Estructural Cruce de Camino 2 | 4.36d | 2025-10-06 A | 2025-12-15 | A4230 SS | 100% | 0d | 2025-10-06 | 2025-10-09 | 87.23d | 0d | SQM-OOCC [93.11 h] | 93.11 | 93.11 | C.CAMINO | m3 | 27 | 6.1.7. | 8.6.1.1 |
| A4260 |  | Cama de Arena Cruce de Camino 2 | 1.09d | 2025-10-10 A | 2025-12-15 | A4250 SS | 100% | 0d | 2025-10-10 | 2025-10-10 | 87.23d | 0d | SQM-OOCC [6.03 h] | 6.03 | 6.03 | C.CAMINO | m3 | 2.4 | 6.1.8. | 8.6.1.7 |
| A4200 |  | Relleno compactado Cruce de Camino 1 | 6.55d | 2025-10-17 A | 2025-12-15 | A4280 SS | 100% | 0d | 2025-10-17 | 2025-10-22 | 87.23d | 0d | SQM-OOCC [93.73 h] | 93.73 | 93.73 | C.CAMINO | m3 | 14.07 | 6.1.2. | 8.6.1.4 |
| A4240 |  | Relleno compactado Cruce de Camino 2 | 2.18d | 2025-10-28 A | 2025-12-15 | A4300 SS, A4200 SS, A4260 SS | 100% | 0d | 2025-10-28 | 2025-10-29 | 87.23d | 49.09d | SQM-OOCC [66.95 h] | 66.95 | 66.95 | C.CAMINO | m3 | 14.95 | 6.1.6. | 8.6.1.3 |
|  | 2 | **ENCAMISADO PARA CRUCE DE CAMINOS** |  | 2025-10-05 | 2025-12-27 |  |  |  |  |  |  |  |  |  |  |  |  |  |  |  |
| A4270 |  | Cañería 20" Cruce de Camino 1 | 14.18d | 2025-10-05 A | 2025-12-27 | A4220 SS | 9% | 12.91d | 2025-10-05 | 2025-10-17 | 77.6d | 0d | SQM-OOCC |  |  | C.CAMINO | kg | 0 | 6.2.1. | 8.6.2.2 |
| A4280 |  | Cañería 12" Cruce de Camino 1 | 9.82d | 2025-10-08 A | 2025-12-15 | A4270 SS+3.27d | 100% | 0d | 2025-10-08 | 2025-10-16 | 77.6d | 0d | SQM-OOCC [651.74 h] | 651.74 | 651.74 | C.CAMINO | kg | 6246 | 6.2.2. | 8.6.2.4 |
| A4290 |  | Cañería 20" Cruce de Camino 2 | 14.18d | 2025-10-17 A | 2025-12-27 | A4280 SS | 9% | 12.91d | 2025-10-17 | 2025-10-29 | 77.6d | 0d | SQM-OOCC |  |  | C.CAMINO | kg | 0 | 6.2.3. | 8.6.2.1 |
| A4300 |  | Cañería 12" Cruce de Camino 2 | 8.73d | 2025-10-20 A | 2025-12-15 | A4290 SS+3.27d | 100% | 0d | 2025-10-20 | 2025-10-27 | 87.23d | 0d | SQM-OOCC [481.72 h] | 481.72 | 481.72 | C.CAMINO | kg | 4858 | 6.2.4. | 8.6.2.3 |
|  | 3 | **OBRAS MECÁNICAS TK-6060** |  | 2025-10-01 | 2025-12-21 |  |  |  |  |  |  |  |  |  |  |  |  |  |  |  |
|  | 1 | **MONTAJE Y PRUEBAS DE EQUIPOS MECÁNICOS TK-6060** |  | 2025-10-01 | 2025-12-21 |  |  |  |  |  |  |  |  |  |  |  |  |  |  |  |
| A4320 |  | Estanque Pivote y Plataforma Sumerior TAG: 5817-EST-6060 | 54.55d | 2025-10-01 A | 2025-12-14 A | A4140 SS | 100% |  | 2025-10-01 | 2025-11-19 |  |  | SQM-MECANICA [2628 h] | 2,628 | 2,628 | 5817-TK6060 | un | 1 | 1.1.1 | 5.1.1.1 |
| A4340 |  | Bomba Centrífuga y Motor TAG: 5817-BBA-6069; 5817-MTR-6070 | 4.36d | 2025-10-03 A | 2025-12-16 | A4150 SS | 65% | 1.53d | 2025-10-03 | 2025-10-06 | 48.64d | 0d | SQM-MECANICA [139.9 h] | 139.9 | 90.94 | 5817-TK6060 | un | 1 | 1.1.3 | 5.1.1.5 |
| A4350 |  | Bomba Centrífuga y Motor TAG: 5817-BBA-6072; 5817-MTR-6073 | 4.36d | 2025-10-03 A | 2025-12-10 A | A4340 SS | 100% |  | 2025-10-03 | 2025-10-06 |  |  | SQM-MECANICA [139.9 h] | 139.9 | 139.9 | 5817-TK6060 | un | 1 | 1.1.4 | 5.1.1.6 |
| A4360 |  | Bomba Centrífuga y Motor TAG: 5817-BBA-6077; 5817-MTR-6078 | 4.36d | 2025-10-07 A | 2025-12-16 | A4350 | 65% | 1.53d | 2025-10-07 | 2025-10-10 | 48.64d | 0d | SQM-MECANICA [139.9 h] | 139.9 | 90.94 | 5817-TK6060 | un | 1 | 1.1.5 | 5.1.1.3 |
| A4330 |  | Agitador Vertical Estanque Pivote TAG: 5817-AGT-6061 / 5817-MTR-6062 | 10.91d | 2025-11-10 A | 2025-12-17 | A4320 FF | 80% | 2.18d | 2025-11-10 | 2025-11-19 | 48.64d | 0d | SQM-MECANICA [478.75 h] | 478.75 | 383 | 5817-TK6060 | un | 1 | 1.1.2 | 5.1.1.4 |
| A4370 |  | Bomba Sumidero y Motor TAG: 5817-BBS-6075; 5817-MTR-6076 | 4.36d | 2025-12-17 | 2025-12-21 | A4360, A4180, A4330 |  |  |  |  | 62.14d | 23.28d | SQM-MECANICA [139.9 h] | 139.9 |  | 5817-TK6060 | un | 1 | 1.1.6 | 5.1.1.2 |

| ID | WBS | Activity | Type | Duration | Start | Finish | Predecessors | Complete | Remaining | Planned start | Planned finish | Total float | Free float | Resources | Cost | Actual cost | Área | Unidad | Cantidad | Ítem LP | Ìtem EDP | Corregir |
| --- | --- | --- | --- | --- | --- | --- | --- | --- | --- | --- | --- | --- | --- | --- | --- | --- | --- | --- | --- | --- | --- | --- |
|  | 4 | **OBRAS PIPING TK-6060** |  |  | 2025-10-05 | 2026-02-05 |  |  |  |  |  |  |  |  |  |  |  |  |  |  |  |  |
|  | 1 | **MONTAJE Y FABRICACIÓN DE CAÑERÌAS TK-6060** |  |  | 2025-10-05 | 2026-02-05 |  |  |  |  |  |  |  |  |  |  |  |  |  |  |  |  |
|  | 1 | **FABRICACIÓN CAÑERÍAS TK-6060** |  |  | 2025-10-05 | 2026-02-04 |  |  |  |  |  |  |  |  |  |  |  |  |  |  |  |  |
| A4380 |  | Ø 6" - Cañería Acero Inoxidable - Fabricación |  | 49.09d | 2025-10-05 A | 2026-01-11 | A4320 SS+4.36d | 44% | 27.64d | 2025-10-05 | 2025-11-18 | 38.14d | 0d | SQM-PIPING [8216.02 h] | 8,216.02 | 3,589.94 | 5817-TK6060 | un | 632 | 2.1.49 | 5.2.1.9 |  |
| A4440 |  | Ø 4" - Cañería CPVC, SCH 80 - Fabricación |  | 13.09d | 2025-12-01 A | 2026-02-04 | A4430 FF | 8% | 12.1d | 2025-12-14 | 2025-12-25 | 38.87d | 0d | SQM-PIPING [123.75 h] | 123.75 | 9.35 | 5817-TK6060 | un | 90 | 2.1.55 | 5.2.1.19 |  |
| A4390 |  | Ø 4" - Cañería Acero Inoxidable - Fabricación |  | 15.27d | 2025-12-29 | 2026-01-13 | A4380 FF+2.18d |  |  |  |  | 38.87d | 0d | SQM-PIPING [813.2 h] | 813.2 |  | 5817-TK6060 | un | 107 | 2.1.50 | 5.2.1.18 | R FF |
| A4400 |  | Ø 2" - Cañería Acero Inoxidable - Fabricación |  | 13.09d | 2026-01-13 | 2026-01-26 | A4390, A4330, A4370 |  |  |  |  | 38.87d | 0d | SQM-PIPING [1416.4 h] | 1,416.4 |  | 5817-TK6060 | un | 345 | 2.1.51 | 5.2.1.33 |  |
| A4450 |  | Ø 2" - Cañería CPVC, SCH 80 - Fabricación |  | 3.27d | 2026-01-23 | 2026-01-26 | A4440 SS |  |  |  |  | 47.7d | 0d | SQM-PIPING [11.55 h] | 11.55 |  | 5817-TK6060 | un | 14 | 2.1.56 | 5.2.1.34 |  |
| A4420 |  | Ø 1-1/2" - Cañería Acero Inoxidable - Fabricación |  | 2.18d | 2026-01-26 | 2026-01-29 | A4400, A4090 |  |  |  |  | 38.87d | 0d | SQM-PIPING [6 h] | 6 |  | 5817-TK6060 | un | 2 | 2.1.53 | 5.2.1.54 |  |
| A4410 |  | Ø 1" - Cañería Acero Inoxidable - Fabricación |  | 3.27d | 2026-01-29 | 2026-02-01 | A4420 |  |  |  |  | 38.87d | 0d | SQM-PIPING [30 h] | 30 |  | 5817-TK6060 | un | 15 | 2.1.52 | 5.2.1.50 |  |
| A4430 |  | Ø 8" - Cañería CPVC, SCH 80 - Fabricación |  | 3.27d | 2026-02-01 | 2026-02-04 | A4410 |  |  |  |  | 38.87d | 0d | SQM-PIPING [30.25 h] | 30.25 |  | 5817-TK6060 | un | 11 | 2.1.54 | 5.2.1.1 |  |
|  | 2 | **MONTAJE CAÑERÍAS TK-6060** |  |  | 2025-10-12 | 2026-02-05 |  |  |  |  |  |  |  |  |  |  |  |  |  |  |  |  |
| A4490 |  | Ø 6" - Cañería Acero Inoxidable - Montaje |  | 65.45d | 2025-10-12 A | 2026-01-22 | A4380 SS+7.64d | 41% | 38.9d | 2025-10-12 | 2025-12-10 | 38.14d | 0d | SQM-PIPING [4222.01 h] | 4,222.01 | 1,712.85 | 5817-TK6060 | m | 1370 | 2.1.4 | 5.2.1.15 | R FF |
| A4470 |  | Ø 4" - Cañería CPVC, SCH 80 - Montaje |  | 15.27d | 2025-12-01 A | 2026-01-26 | A4460 FF | 45% | 8.4d | 2026-01-01 | 2026-01-14 | 47.7d | 9.55d | SQM-PIPING [380.58 h] | 380.58 | 171.26 | 5817-TK6060 | m | 96 | 2.1.2 | 5.2.1.29 |  |
| A4500 |  | Ø 4" - Cañería Acero Inoxidable - Montaje |  | 13.09d | 2026-01-22 | 2026-02-04 | A4490 |  |  |  |  | 38.52d | 0d | SQM-PIPING [130.62 h] | 130.62 |  | 5817-TK6060 | m | 128 | 2.1.5 | 5.2.1.30 |  |
| A4510 |  | Ø 2" - Cañería Acero Inoxidable - Montaje |  | 10.91d | 2026-01-22 | 2026-02-02 | A4500 SS |  |  |  |  | 38.52d | 0d | SQM-PIPING [348.44 h] | 348.44 |  | 5817-TK6060 | m | 124.8153931 | 2.1.6 | 5.2.1.48 |  |
| A4460 |  | Ø 8" - Cañería CPVC, SCH 80 - Montaje |  | 3.27d | 2026-01-23 | 2026-01-26 | A4450 SS, A4320 |  |  |  |  | 47.7d | 0d | SQM-PIPING [35.13 h] | 35.13 |  | 5817-TK6060 | m | 7.5 | 2.1.1 | 5.2.1.5 |  |
| A4530 |  | Ø 1" - Cañería Acero Inoxidable - Montaje |  | 5.45d | 2026-01-30 | 2026-02-04 | A4550 FF, A4520 FF, A4540 FF |  |  |  |  | 38.52d | 0d | SQM-PIPING [0.39 h] | 0.39 |  | 5817-TK6060 | m | 0.346754672 | 2.1.8 | 5.2.1.52 | R FF |
| A4480 |  | Ø 2" - Cañería CPVC, SCH 80 - Montaje |  | 3.27d | 2026-02-02 | 2026-02-05 | A4470 FF, A4660 SS, A4240 |  |  |  |  | 38.14d | 0d | SQM-PIPING [22.5 h] | 22.5 |  | 5817-TK6060 | m | 14.285853238 | 2.1.3 | 5.2.1.47 |  |
| A4520 |  | Ø 1-1/2" - Cañería Acero Inoxidable - Montaje |  | 2.18d | 2026-02-02 | 2026-02-04 | A4510 |  |  |  |  | 38.52d | 0d | SQM-PIPING [0.5 h] | 0.5 |  | 5817-TK6060 | m | 0.3 | 2.1.7 | 5.2.1.56 |  |
|  | 2 | **MONTAJE DE FITTING Y VÁLVULAS TK-6060** |  |  | 2025-10-05 | 2026-02-04 |  |  |  |  |  |  |  |  |  |  |  |  |  |  |  |  |
| A4540 |  | Montaje de Fitting para Líneas TK-6060 | level of effort | 104.73d | 2025-10-05 A | 2026-02-04 | A4380 SS | 50% | 51.99d | 2025-10-05 | 2026-01-08 | 38.52d | 0d | SQM-PIPING [6657.54 h] | 6,657.54 | 1,965.28 | 5817-TK6060 | un | 619 | 99.6 | 99.6 |  |
| A4550 |  | Válvulas Sector TK-6060 (Global) | level of effort | 104.73d | 2025-10-05 A | 2026-02-04 | A4540 SS | 50% | 51.99d | 2025-10-05 | 2026-01-08 | 38.52d | 0d | SQM-PIPING [762.1 h] | 762.1 | 224.97 | 5817-TK6060 | un | 74 | 99.15 | 99.15 |  |
|  | 3 | **FABRICACIÓN Y MONTAJE DE SOPORTES TK-6060** |  |  | 2025-10-24 | 2026-02-02 |  |  |  |  |  |  |  |  |  |  |  |  |  |  |  |  |
| A4580 |  | Soporte N°002 - Pedestal, Acero Estructural para Tuberías Diámetros Pequeños |  | 4.36d | 2025-10-24 A | 2025-12-28 | A4570 FF | 86% | 0.61d | 2025-10-24 | 2025-10-27 | 38.14d | 0d | SQM-PIPING [8.5 h] | 8.5 | 7.31 | 5817-TK6060 | un | 2 | 2.4.3 | 5.2.4.7 |  |
| A4560 |  | Soporte N°001A - Pedestal con Repisa de Acero Estructural para Tuberías Diámetros Pequeños |  | 2.18d | 2025-12-15 | 2025-12-17 | A4380 SS, A4490 SS |  |  |  |  | 38.14d | 0d | SQM-PIPING [4.25 h] | 4.25 |  | 5817-TK6060 | un | 1 | 2.4.1 | 5.2.4.9 |  |
| A4570 |  | Soporte N°001B - Pedestal con Repisa de Acero Estructural para Tuberías Diámetros Pequeños |  | 10.91d | 2025-12-17 | 2025-12-28 | A4560 |  |  |  |  | 38.14d | 0d | SQM-PIPING [21.25 h] | 21.25 |  | 5817-TK6060 | un | 5 | 2.4.2 | 5.2.4.8 |  |
| A4590 |  | Soporte N°003A - Pedestal Tipo TEE, Acero Estructural para Tuberías Diámetros Pequeños |  | 4.36d | 2025-12-28 | 2026-01-01 | A4580 |  |  |  |  | 38.14d | 0d | SQM-PIPING [8.5 h] | 8.5 |  | 5817-TK6060 | un | 2 | 2.4.4 | 5.2.4.6 |  |
| A4600 |  | Soporte N°003B - Pedestal Tipo TEE, Acero Estructural para Tuberías Diámetros Pequeños |  | 6.55d | 2026-01-01 | 2026-01-07 | A4590 |  |  |  |  | 38.14d | 0d | SQM-PIPING [12.75 h] | 12.75 |  | 5817-TK6060 | un | 3 | 2.4.5 | 5.2.4.5 |  |
| A4610 |  | Soporte N°004 - Arco Tipo Vertical, Acero Estructural |  | 2.18d | 2026-01-08 | 2026-01-10 | A4600 |  |  |  |  | 38.14d | 0d | SQM-PIPING [4.25 h] | 4.25 |  | 5817-TK6060 | un | 1 | 2.4.6 | 5.2.4.4 |  |
| A4620 |  | Soporte N°005 - Pedestal y Voladizo Tipo Simple, Acero Estructural para Tuberías Diámetros Pequeños |  | 4.36d | 2026-01-10 | 2026-01-14 | A4610 |  |  |  |  | 38.14d | 0d | SQM-PIPING [8.5 h] | 8.5 |  | 5817-TK6060 | un | 2 | 2.4.7 | 5.2.4.3 |  |
| A4630 |  | Soporte N°006 - Pedestal y Voladizo Tipo Simple, Acero Estructural para Tuberías Diámetros Pequeños |  | 4.36d | 2026-01-14 | 2026-01-18 | A4620 |  |  |  |  | 38.14d | 0d | SQM-PIPING [8.5 h] | 8.5 |  | 5817-TK6060 | un | 2 | 2.4.8 | 5.2.4.2 |  |
| A4640 |  | Soporte Primario Tipo "U" (Para Uso General) |  | 14.18d | 2026-01-18 | 2026-02-02 | A4630 |  |  |  |  | 38.14d | 0d | SQM-PIPING [5 h] | 5 |  | 5817-TK6060 | un | 450 | 2.4.9 | 5.2.4.1 |  |

| ID | WBS | Activity | Type | Duration | Start | Finish | Predecessors | Complete | Remaining | Planned start | Planned finish | Total float | Free float | Resources | Cost | Actual cost | Área | Unidad | Cantidad | Ítem LP | Ìtem EDP | Corregir |
| --- | --- | --- | --- | --- | --- | --- | --- | --- | --- | --- | --- | --- | --- | --- | --- | --- | --- | --- | --- | --- | --- | --- |
|  | 4 | **TIE-IN DE LÍNEAS ASOCIADAS A TK-6060** |  |  | 2026-01-30 | 2026-02-04 |  |  |  |  |  |  |  |  |  |  |  |  |  |  |  |  |
| A4650 |  | TIE-IN N° 1433 - 5836-EST-3015 a Línea Proyectada 100-DR-5817-P2-6630 |  | 2.18d | 2026-01-30 | 2026-02-01 | A4530 SS |  |  |  |  | 40.7d | 2.55d | SQM-PIPING [50.67 h] | 50.67 |  | 5817-TK6060 | un | 1 | 2.3.1 | 5.2.3.2 |  |
| A4660 |  | TIE-IN N° 1434 - 5836-EST-3015 a Línea Proyectada 100-DR-5817-P2-6610 |  | 2.18d | 2026-02-02 | 2026-02-04 | A4650 SS, A4640 |  |  |  |  | 38.14d | 0d | SQM-PIPING [50.67 h] | 50.67 |  | 5817-TK6060 | un | 1 | 2.3.2 | 5.2.3.1 |  |
|  | 5 | **AISLACIÓN LÍNEAS TK-6060** |  |  | 2025-11-05 | 2026-02-04 |  |  |  |  |  |  |  |  |  |  |  |  |  |  |  |  |
| A4670 |  | Ø 6" - Aislación de Lana Mineral de 1,5" de espesor |  | 39.27d | 2025-11-05 A | 2026-01-22 | A4490 FF | 20% | 31.6d | 2025-11-05 | 2025-12-10 | 51.61d | 37.82d | SQM-PIPING [6664.65 h] | 6,664.65 | 1,302.33 | 5817-TK6060 | un | 1370 | 2.1.9 | 5.2.1.16 |  |
| A4680 |  | Ø 4" - Aislación de Lana Mineral de 1,5" de espesor |  | 7.64d | 2025-12-01 A | 2026-02-04 | A4500 FF, A4670 SS | 10% | 6.87d | 2025-12-23 | 2025-12-29 | 38.52d | 0d | SQM-PIPING [258.72 h] | 258.72 | 25.87 | 5817-TK6060 | un | 96 | 2.1.10 | 5.2.1.31 |  |
| A4690 |  | Ø 2" - Aislación de Lana Mineral de 1,5" de espesor |  | 15.27d | 2026-01-20 | 2026-02-04 | A4510 FF, A4680 FF |  |  |  |  | 38.52d | 0.37d | SQM-PIPING [52.3 h] | 52.3 |  | 5817-TK6060 | un | 16.342386578 | 2.1.11 | 5.2.1.49 |  |
|  | 6 | **RED DE AIRE** |  |  | 2026-01-10 | 2026-02-01 |  |  |  |  |  |  |  |  |  |  |  |  |  |  |  |  |
|  | 1 | **FABRICACIÓN Y MONTAJE DE CAÑERÍAS RED DE AIRE** |  |  | 2026-01-10 | 2026-02-01 |  |  |  |  |  |  |  |  |  |  |  |  |  |  |  |  |
| A4710 |  | Ø 3/4" - Cañería Acero Inoxidable - Fabricación |  | 15.27d | 2026-01-10 | 2026-01-25 | A4720 FF |  |  |  |  | 42.14d | 0d | SQM-PIPING [224 h] | 224 |  | AIRE | un | 128 | 2.1.14 | 9.1.1.1 |  |
| A4700 |  | Ø 1" - Cañería Acero Inoxidable - Fabricación |  | 15.27d | 2026-01-17 | 2026-02-01 | A4410 FF |  |  |  |  | 42.14d | 0d | SQM-PIPING [396 h] | 396 |  | AIRE | un | 198 | 2.1.13 | 9.1.1.10 |  |
| A4720 |  | Ø 1" - Cañería Acero Inoxidable - Montaje |  | 5.45d | 2026-01-20 | 2026-01-25 | A4700 SS+3.27d |  |  |  |  | 42.14d | 0d | SQM-PIPING [173.99 h] | 173.99 |  | AIRE | m | 155.8135 | 2.1.1 | 9.1.1.14 |  |
| A4730 |  | Ø 3/4" - Cañería Acero Inoxidable - Montaje |  | 3.27d | 2026-01-22 | 2026-01-25 | A4740 FF, A4750 FF, A4710 FF |  |  |  |  | 42.14d | 0d | SQM-PIPING [8.64 h] | 8.64 |  | AIRE | m | 11.059 | 2.1.2 | 9.1.1.7 | R FF |
|  | 2 | **MONTAJE DE FITTING Y VÁLVULAS RED DE AIRE** |  |  | 2026-01-17 | 2026-01-25 |  |  |  |  |  |  |  |  |  |  |  |  |  |  |  |  |
| A4740 |  | Fitting Líneas de Aire (Global) | level of effort | 8.73d | 2026-01-17 | 2026-01-25 | A4700 SS |  |  |  |  | 42.14d | 0d | SQM-PIPING [674.11 h] | 674.11 |  | AIRE | un | 229.972347629797 | 99.7 | 99.7 |  |
| A4750 |  | Válvulas Líneas de Aire (Global) | level of effort | 8.73d | 2026-01-17 | 2026-01-25 | A4700 SS |  |  |  |  | 42.14d | 0d | SQM-PIPING [325.88 h] | 325.88 |  | AIRE | un | 114 | 99.16 | 99.16 |  |
|  | 3 | **TIE-IN DE LÍNEAS ASOCIADAS A RED DE AIRE** |  |  | 2026-01-21 | 2026-01-31 |  |  |  |  |  |  |  |  |  |  |  |  |  |  |  |  |
| A4760 |  | TIE-IN N° 1425 - 150-IA-5771-I1-2486 a Línea Proyectada 25-IA-5771-I1-1630 |  | 4.36d | 2026-01-21 | 2026-01-25 | A4730 FF |  |  |  |  | 42.14d | 0d | SQM-PIPING [46.67 h] | 46.67 |  | AIRE | un | 1 | 2.3.1 | 9.1.3.6 |  |
| A4770 |  | TIE-IN N° 1426 - 25-IA-5871-I1-1644 a Línea Proyectada 25-IA-5871-I1-1634 |  | 1.09d | 2026-01-25 | 2026-01-26 | A4760 |  |  |  |  | 42.14d | 0d | SQM-PIPING [29 h] | 29 |  | AIRE | un | 1 | 2.3.2 | 9.1.3.5 |  |
| A4780 |  | TIE-IN N° 1427 - 25-IA-5871-I1-1644 a Línea Proyectada 25-IA-5871-I1-1638 |  | 1.09d | 2026-01-26 | 2026-01-28 | A4770 |  |  |  |  | 42.14d | 0d | SQM-PIPING [29 h] | 29 |  | AIRE | un | 1 | 2.3.3 | 9.1.3.4 |  |
| A4790 |  | TIE-IN N° 1428 - Líne Existente (TAG por Confirmar) a Línea Proyectada 25-IA-5871-I1-1642 |  | 1.09d | 2026-01-28 | 2026-01-29 | A4780 |  |  |  |  | 42.14d | 0d | SQM-PIPING [29 h] | 29 |  | AIRE | un | 1 | 2.3.4 | 9.1.3.3 |  |
| A4800 |  | TIE-IN N° 1429 - Línea Existente (TAG por Confirmar) a Línea Proyectada 25-IA-5871-I1-1646 |  | 1.09d | 2026-01-29 | 2026-01-30 | A4790 |  |  |  |  | 42.14d | 0d | SQM-PIPING [29 h] | 29 |  | AIRE | un | 1 | 2.3.5 | 9.1.3.2 |  |
| A4810 |  | TIE-IN N° 1430 - Línea Existente (TAG por Confirmar) a Línea Proyectada 25-IA-5871-I1-1649 |  | 1.09d | 2026-01-30 | 2026-01-31 | A4800 |  |  |  |  | 42.14d | 0d | SQM-PIPING [29 h] | 29 |  | AIRE | un | 1 | 2.3.6 | 9.1.3.1 |  |
|  | 5 | **OBRAS ELÉCTRICAS TK-6060** |  |  | 2025-11-08 | 2026-01-25 |  |  |  |  |  |  |  |  |  |  |  |  |  |  |  |  |
|  | 1 | **MONTAJE DE CANALIZACIÓN Y FERRETERÍA TK-6060** |  |  | 2025-11-08 | 2025-12-25 |  |  |  |  |  |  |  |  |  |  |  |  |  |  |  |  |
| A4820 |  | EPC y Copla Porta Conductores 600x100mm e:2,5 mm, tiras 3m. Incluir tapa dos aguas, eclisas y pernos de unión. |  | 13.09d | 2025-11-08 A | 2025-12-19 | A4360 SS, A4330 SS | 64% | 4.78d | 2025-11-08 | 2025-11-19 | 48.64d | 0d | SQM-ELÉCTRICO [1120 h] | 568,489.6 | 361,076.17 | 5817-TK6060 | m | 200 | 3.2.1 | 5.3.2.1 | MODIFICAR FECHA PARA QUE TERMINE DESPUES DEL PIPING |
| A4830 |  | EPC Curva de 90°, 600x100mm e:2,5mm. Incluir tapa dos aguas, eclisas y pernos de unión. |  | 3.27d | 2025-11-17 A | 2025-12-19 | A4820 FF | 47% | 1.73d | 2025-11-17 | 2025-11-19 | 61.89d | 0d | SQM-ELÉCTRICO [56 h] | 28,424.48 | 13,421.94 | 5817-TK6060 | un | 10 | 3.2.2 | 5.3.2.2 | R FF |
| A4840 |  | Canalización y Copla de Conduit de Acero Galvanizado 6"Ø, Conduit ANSI C80.1 |  | 7.64d | 2025-11-20 A | 2025-12-24 | A4830 SS | 17% | 6.35d | 2025-11-20 | 2025-11-26 | 74.86d | 0d | SQM-ELÉCTRICO [441.21 h] | 223,949.37 | 37,791.46 | 5817-TK6060 | m | 110 | 3.2.3 | 5.3.2.7 |  |
| A4900 |  | Canalización y Copla de Conduit de Acero Galvanizado 1 ½"Ø, Conduit ANSI C80.1 |  | 7.64d | 2025-11-23 A | 2025-12-23 | A4880 FF | 36% | 4.85d | 2025-11-23 | 2025-11-29 | 48.64d | 0d | SQM-ELÉCTRICO [441 h] | 223,842.78 | 81,548.5 | 5817-TK6060 | m | 350 | 3.2.9 | 5.3.2.10 |  |
| A4850 |  | Canalización y Copla de Conduit Flexible Metálico con Cubierta PVC 6" Ø Trabajo Pesado |  | 3.27d | 2025-11-27 A | 2025-12-20 | A4840 SS | 15% | 2.78d | 2025-11-27 | 2025-11-29 | 74.86d | 0d | SQM-ELÉCTRICO [50.4 h] | 25,582.03 | 3,837.3 | 5817-TK6060 | m | 15 | 3.2.4 | 5.3.2.3 |  |
| A4910 |  | Canalización y Copla de Conduit Flexible Metálico con Cubierta PVC 1 ½" Ø Trabajo Pesado |  | 4.36d | 2025-12-02 A | 2025-12-25 | A4890 FF | 28% | 3.12d | 2025-12-02 | 2025-12-05 | 48.64d | 0d | SQM-ELÉCTRICO [75.6 h] | 38,373.05 | 10,896.73 | 5817-TK6060 | m | 60 | 3.2.10 | 5.3.2.6 |  |
| A4880 |  | Canalización y Copla de Conduit de Acero Galvanizado 2"Ø, Conduit ANSI C80.1 |  | 3.27d | 2025-12-19 | 2025-12-23 | A4820 |  |  |  |  | 48.64d | 0d | SQM-ELÉCTRICO [56.7 h] | 28,779.79 |  | 5817-TK6060 | m | 30 | 3.2.7 | 5.3.2.8 |  |
| A4860 |  | Canalización y Copla de Conduit de Acero Galvanizado 2 ½"Ø, Conduit ANSI C80.1 |  | 3.27d | 2025-12-20 | 2025-12-24 | A4850 |  |  |  |  | 74.86d | 12.97d | SQM-ELÉCTRICO [85.05 h] | 43,169.68 |  | 5817-TK6060 | m | 45 | 3.2.5 | 5.3.2.9 |  |
| A4870 |  | Canalización y Copla de Conduit Flexible Metálico con Cubierta PVC 2 ½" Ø Trabajo Pesado |  | 1.09d | 2025-12-23 | 2025-12-24 | A4900 |  |  |  |  | 48.64d | 0d | SQM-ELÉCTRICO [9.45 h] | 4,796.63 |  | 5817-TK6060 | m | 5 | 3.2.6 | 5.3.2.5 |  |
| A4920 |  | Perno de Ensamble de Malla a Tierra en E.P.C. |  | 2.18d | 2025-12-23 | 2025-12-25 | A4900 |  |  |  |  | 63.83d | 0d | SQM-ELÉCTRICO [12.6 h] | 6,395.51 |  | 5817-TK6060 | un | 200 | 3.1.5 | 5.3.1.1 |  |
| A4890 |  | Canalización y Copla de Conduit Flexible Metálico con Cubierta PVC 2" Ø Trabajo Pesado |  | 1.09d | 2025-12-24 | 2025-12-25 | A4870 |  |  |  |  | 48.64d | 0d | SQM-ELÉCTRICO [9.45 h] | 4,796.63 |  | 5817-TK6060 | m | 5 | 3.2.8 | 5.3.2.4 |  |

| ID | WBS | Activity | Duration | Start | Finish | Predecessors | Complete | Remaining | Planned start | Planned finish | Total float | Free float | Resources | Cost | Actual cost | Área | Unidad | Cantidad | Ítem LP | Ìtem EDP |
| --- | --- | --- | --- | --- | --- | --- | --- | --- | --- | --- | --- | --- | --- | --- | --- | --- | --- | --- | --- | --- |
|  | 2 | **TENDIDO Y CONEXIONADO DE CABLES DE ALIMENTACIÓN TK-6060** |  | 2025-12-01 | 2026-01-12 |  |  |  |  |  |  |  |  |  |  |  |  |  |  |  |
| A4940 |  | Cable Monoconductor de Cobre con Aislación XLPE, 1C #250 MCM, Clase 1 kV | 3.27d | 2025-12-01 A | 2026-01-11 | A4930 FF | 4% | 3.14d | 2025-12-22 | 2025-12-24 | 48.64d | 0d | SQM-ELÉCTRICO [107.44 h] | 54,534.4 | 2,172.44 | 5817-TK6060 | m | 426 | 3.3.2 | 5.3.3.8 |
| A4990 |  | Cable Multiconductor de Cobre con Aislación XLPE, 1X4C #2 AWG, Clase 1 kV | 2.18d | 2025-12-06 A | 2025-12-24 | A5000 SS | 25% | 1.64d | 2025-12-06 | 2025-12-07 | 63.83d | 0d | SQM-ELÉCTRICO [31.6 h] | 16,039.53 | 4,009.88 | 5817-TK6060 | m | 20 | 3.3.7 | 5.3.3.2 |
| A5000 |  | Cable Multiconductor de Cobre con Aislación de XLPE, 1x5C #12 AWG, Clase 1 kV | 2.18d | 2025-12-06 A | 2025-12-24 | A5010 SS, A4910 SS | 28% | 1.58d | 2025-12-06 | 2025-12-07 | 63.83d | 0d | SQM-ELÉCTRICO [47.49 h] | 24,106.67 | 6,679.75 | 5817-TK6060 | m | 62 | 3.3.8 | 5.3.3.6 |
| A4970 |  | Cable Multiconductor de Cobre con Aislación XLPE, 1X3C #4 AWG, Clase 1 kV | 3.27d | 2025-12-24 | 2025-12-27 | A4980 SS |  |  |  |  | 63.83d | 0d | SQM-ELÉCTRICO [157.36 h] | 79,872.79 |  | 5817-TK6060 | m | 196 | 3.3.5 | 5.3.3.5 |
| A4980 |  | Cable Multiconductor de Cobre con Aislación XLPE, 1X4C #10 AWG, Clase 1 kV | 2.18d | 2025-12-24 | 2025-12-26 | A4990 |  |  |  |  | 63.83d | 0d | SQM-ELÉCTRICO [10.82 h] | 5,492.02 |  | 5817-TK6060 | m | 10 | 3.3.6 | 5.3.3.3 |
| A4930 |  | Cable Monoconductor de Cobre con Aislación XLPE, 1C #500 MCM, Clase 1 kV | 17.45d | 2025-12-25 | 2026-01-11 | A4910 |  |  |  |  | 48.64d | 0d | SQM-ELÉCTRICO [1737 h] | 881,666.46 |  | 5817-TK6060 | m | 1800 | 3.3.1 | 5.3.3.7 |
| A4960 |  | Cable Multiconductor de Cobre con Aislación XLPE, 1X3C #8 AWG, Clase 1 kV | 8.73d | 2025-12-27 | 2026-01-05 | A4970 |  |  |  |  | 63.83d | 15.19d | SQM-ELÉCTRICO [384.11 h] | 194,966.55 |  | 5817-TK6060 | m | 445 | 3.3.4 | 5.3.3.4 |
| A4950 |  | Cable Multiconductor de Cobre con Aislación XLPE, 1X4C #8 AWG, Clase 1 kV | 1.09d | 2026-01-11 | 2026-01-12 | A4960 SS, A4940 |  |  |  |  | 48.64d | 0d | SQM-ELÉCTRICO [10.82 h] | 5,492.02 |  | 5817-TK6060 | m | 7 | 3.3.3 | 5.3.3.1 |
|  | 3 | **MONTAJE DE POSTACIÓN TK-6060** |  | 2025-12-11 | 2025-12-25 |  |  |  |  |  |  |  |  |  |  |  |  |  |  |  |
| A5010 |  | Poste de Acero Galvanizado para Iluminación. | 4.36d | 2025-12-11 A | 2025-12-25 | A4920 FF | 39% | 2.65d | 2025-12-25 | 2025-12-29 | 63.83d | 0d | SQM-ELÉCTRICO [130 h] | 65,985.4 | 25,981.75 | 5817-TK6060 | un | 16 | 3.6.1 | 5.3.6.1 |
|  | 4 | **MONTAJE Y CONEXIONADO DE EQUIPOS ELÉCTRICOS TK-6060** |  | 2025-12-25 | 2026-01-18 |  |  |  |  |  |  |  |  |  |  |  |  |  |  |  |
| A5020 |  | Tablero Partidor de Motores TAG: 5817-TPM-1501 | 5.45d | 2025-12-25 | 2025-12-30 | A4910 |  |  |  |  | 61.73d | 13.09d | SQM-ELÉCTRICO [124.1 h] | 62,990.68 |  | 5817-TK6060 | gl | 1 | 3.4.1 | 5.3.4.9 |
| A5030 |  | Conexión de Motor TAG: 5817-MTR-6078 a TPM TAG: 5817-TPM-1501. | 1.09d | 2026-01-12 | 2026-01-13 | A4950, A5020 |  |  |  |  | 48.64d | 0d | SQM-ELÉCTRICO [4.12 h] | 2,093.77 |  | 5817-TK6060 | gl | 1 | 3.4.2 | 5.3.4.2 |
| A5040 |  | Conexión de Motor TAG: 5817-MTR-6070 a TPM TAG: 5817-TPM-1501. | 1.09d | 2026-01-12 | 2026-01-13 | A5030 SS |  |  |  |  | 48.64d | 0d | SQM-ELÉCTRICO [4.12 h] | 2,093.77 |  | 5817-TK6060 | gl | 1 | 3.4.3 | 5.3.4.5 |
| A5050 |  | Conexión de Motor TAG: 5817-MTR-6073 a TPM TAG: 5817-TPM-1501. | 1.09d | 2026-01-13 | 2026-01-14 | A5040 |  |  |  |  | 48.64d | 0d | SQM-ELÉCTRICO [4.12 h] | 2,093.77 |  | 5817-TK6060 | gl | 1 | 3.4.4 | 5.3.4.4 |
| A5060 |  | Conexión de Motor TAG: 5817-MTR-6062 a TPM TAG: 5817-TPM-1501. | 1.09d | 2026-01-13 | 2026-01-14 | A5050 SS |  |  |  |  | 48.64d | 0d | SQM-ELÉCTRICO [4.12 h] | 2,093.77 |  | 5817-TK6060 | gl | 1 | 3.4.5 | 5.3.4.6 |
| A5070 |  | Conexión de Motor TAG: 5817-MTR-6076 a TPM TAG: 5817-TPM-1501. | 1.09d | 2026-01-14 | 2026-01-16 | A5060 |  |  |  |  | 48.64d | 0d | SQM-ELÉCTRICO [4.12 h] | 2,093.77 |  | 5817-TK6060 | gl | 1 | 3.4.6 | 5.3.4.3 |
| A5080 |  | Conexión de Tablero Partidor de Motores TAG: 5817-TPM-1501 a Sala Eléctrica TAG: SEL-4016. | 1.09d | 2026-01-14 | 2026-01-16 | A5070 SS |  |  |  |  | 48.64d | 0d | SQM-ELÉCTRICO [4.12 h] | 2,093.77 |  | 5817-TK6060 | gl | 1 | 3.4.7 | 5.3.4.1 |
| A5090 |  | Conexión de Luminarias Tipo Pedestal. | 2.18d | 2026-01-16 | 2026-01-18 | A5080 |  |  |  |  | 48.64d | 0d | SQM-ELÉCTRICO [28.88 h] | 14,656.37 |  | 5817-TK6060 | un | 7 | 3.4.8 | 5.3.4.8 |
| A5100 |  | Conexión de Luminarias Tipo Proyector. | 2.18d | 2026-01-16 | 2026-01-18 | A5090 SS, A5000 |  |  |  |  | 48.64d | 0d | SQM-ELÉCTRICO [37.12 h] | 18,843.91 |  | 5817-TK6060 | un | 9 | 3.4.9 | 5.3.4.7 |
|  | 5 | **PRUEBAS DE FUNCIONAMIENTO Y PEM TK-6060** |  | 2026-01-18 | 2026-01-25 |  |  |  |  |  |  |  |  |  |  |  |  |  |  |  |
| A5110 |  | Pruebas de Funcionamiento y Puesta en Marcha de Motor TAG: 5817-MTR-6078. | 1.09d | 2026-01-18 | 2026-01-19 | A5100 |  |  |  |  | 48.64d | 0d | SQM-ELÉCTRICO [12 h] | 6,090.96 |  | 5817-TK6060 | gl | 1 | 3.5.1 | 5.3.5.1 |
| A5120 |  | Pruebas de Funcionamiento y Puesta en Marcha de Motor TAG: 5817-MTR-6070. | 1.09d | 2026-01-19 | 2026-01-20 | A5110 |  |  |  |  | 48.64d | 0d | SQM-ELÉCTRICO [12 h] | 6,090.96 |  | 5817-TK6060 | gl | 1 | 3.5.2 | 5.3.5.4 |
| A5130 |  | Pruebas de Funcionamiento y Puesta en Marcha de Motor TAG: 5817-MTR-6073. | 1.09d | 2026-01-20 | 2026-01-21 | A5120 |  |  |  |  | 48.64d | 0d | SQM-ELÉCTRICO [12 h] | 6,090.96 |  | 5817-TK6060 | gl | 1 | 3.5.3 | 5.3.5.3 |
| A5140 |  | Pruebas de Funcionamiento y Puesta en Marcha de Motor TAG: 5817-MTR-6062. | 1.09d | 2026-01-21 | 2026-01-22 | A5130 |  |  |  |  | 48.64d | 0d | SQM-ELÉCTRICO [12 h] | 6,090.96 |  | 5817-TK6060 | gl | 1 | 3.5.4 | 5.3.5.5 |
| A5150 |  | Pruebas de Funcionamiento y Puesta en Marcha de Motor TAG: 5817-MTR-6076. | 1.09d | 2026-01-22 | 2026-01-23 | A5140 |  |  |  |  | 48.64d | 0d | SQM-ELÉCTRICO [12 h] | 6,090.96 |  | 5817-TK6060 | gl | 1 | 3.5.5 | 5.3.5.2 |
| A5160 |  | Pruebas de Funcionamiento y Puesta de Luminarias Tipo Pedestal. | 1.09d | 2026-01-23 | 2026-01-24 | A5150 |  |  |  |  | 48.64d | 0d | SQM-ELÉCTRICO [12 h] | 6,090.96 |  | 5817-TK6060 | gl | 1 | 3.5.6 | 5.3.5.7 |
| A5170 |  | Pruebas de Funcionamiento y Puesta de Luminarias Tipo Proyector. | 1.09d | 2026-01-24 | 2026-01-25 | A5160 |  |  |  |  | 48.64d | 10.5d | SQM-ELÉCTRICO [12 h] | 6,090.96 |  | 5817-TK6060 | gl | 1 | 3.5.7 | 5.3.5.6 |

| ID | WBS | Activity | Duration | Start | Finish | Predecessors | Complete | Remaining | Planned start | Planned finish | Total float | Free float | Resources | Área | Unidad | Cantidad | Ítem LP | Ìtem EDP |
| --- | --- | --- | --- | --- | --- | --- | --- | --- | --- | --- | --- | --- | --- | --- | --- | --- | --- | --- |
|  | 6 | **OBRAS DE INSTRUMENTACIÓN TK-6060** |  | 2025-11-20 | 2026-02-01 |  |  |  |  |  |  |  |  |  |  |  |  |  |
|  | 1 | **MONTAJE DE CANALIZACIÓN Y FERRETERÍA INST. TK-6060** |  | 2025-11-20 | 2026-01-11 |  |  |  |  |  |  |  |  |  |  |  |  |  |
| A5180 |  | EPC y Copla Porta Conductores 600x100mm e:2,5 mm, tiras 3m. Incluir tapa dos aguas, eclisas y pernos de unión. | 18.55d | 2025-11-20 A | 2026-01-03 | A4830 SS | 10% | 16.69d | 2025-11-20 | 2025-12-06 | 61.89d | 0d | SQM-INSTRUMENTACIÓN [1120 h] | 5817-TK6060 | m | 200 | 4.2.1 | 5.4.1.1 |
| A5200 |  | Canalización y Copla de Conduit de Acero Galvanizado 1"Ø, Conduit ANSI C80.1 | 22.91d | 2025-11-22 A | 2026-01-06 | A5180 SS+2.18d | 17% | 19.02d | 2025-11-22 | 2025-12-12 | 61.89d | 0d | SQM-INSTRUMENTACIÓN [1890 h] | 5817-TK6060 | m | 1500 | 4.2.3 | 5.4.1.3 |
| A5190 |  | EPC Curva de 90°, 600x100mm e:2,5mm. Incluir tapa dos aguas, eclisas y pernos de unión. | 3.27d | 2025-12-01 A | 2025-12-20 | A5180 SS | 10% | 2.95d | 2025-12-07 | 2025-12-09 | 71.53d | 0d | SQM-INSTRUMENTACIÓN [56 h] | 5817-TK6060 | un | 10 | 4.2.2 | 5.4.1.2 |
| A5210 |  | Canalización y Copla de Conduit Flexible Metálico con Cubierta PVC 1" Ø Trabajo Pesado | 5.45d | 2026-01-06 | 2026-01-11 | A5200, A4860 |  |  |  |  | 61.89d | 19.75d | SQM-INSTRUMENTACIÓN [189 h] | 5817-TK6060 | m | 150 | 4.2.4 | 5.4.1.4 |
|  | 2 | **TENDIDO Y CONEXIONADO DE CABLES DE INSTRUMENTACIÓN TK-6060** |  | 2025-12-01 | 2025-12-31 |  |  |  |  |  |  |  |  |  |  |  |  |  |
| A5220 |  | Cable Multiconductor de Cobre con Aislación de XLPE, 1x3C #12 AWG, Clase 1 kV | 15.27d | 2025-12-01 A | 2025-12-31 | A5190 SS | 10% | 13.75d | 2025-12-10 | 2025-12-23 | 71.53d | 0d | SQM-INSTRUMENTACIÓN [511.47 h] | 5817-TK6060 | m | 1400 | 4.3.1 | 5.4.2.1 |
| A5230 |  | Cable de Instrumentación (Señales Análogas), 1x1 par #16 AWG Apantallado | 5.45d | 2025-12-01 A | 2025-12-22 | A5220 SS | 10% | 4.91d | 2025-12-24 | 2025-12-28 | 71.53d | 0d | SQM-INSTRUMENTACIÓN [68.08 h] | 5817-TK6060 | m | 230 | 4.3.2 | 5.4.2.3 |
| A5240 |  | Cable Multiconductor de Cobre Blando 1x3C #12 AWG, Clase 0,3 | 4.36d | 2025-12-01 A | 2025-12-21 | A5230 SS | 10% | 3.93d | 2025-12-24 | 2025-12-27 | 71.53d | 0d | SQM-INSTRUMENTACIÓN [219.2 h] | 5817-TK6060 | m | 600 | 4.3.3 | 5.4.2.5 |
| A5250 |  | Cable Multiconductor de Cobre Blando 1x5C #12 AWG, Clase 0,3 | 4.36d | 2025-12-21 | 2025-12-26 | A5240 |  |  |  |  | 71.53d | 0d | SQM-INSTRUMENTACIÓN [219.2 h] | 5817-TK6060 | m | 600 | 4.3.4 | 5.4.2.4 |
| A5260 |  | Conductor Fibra Óptica Multimodo 12 Hilos | 3.27d | 2025-12-26 | 2025-12-29 | A5250 |  |  |  |  | 71.53d | 0d | SQM-INSTRUMENTACIÓN [406.3 h] | 5817-TK6060 | m | 850 | 4.3.5 | 5.4.2.2 |
|  | 3 | **MONTAJE Y CONEXIONADO DE EQUIPOS E INSTRUMENTOS TK-6060** |  | 2025-12-01 | 2026-01-02 |  |  |  |  |  |  |  |  |  |  |  |  |  |
| A5290 |  | Instrumento TAG: FIT-6207 a Panel de señales Remotas TAG: 5817-RIO-1501. | 1.09d | 2025-12-01 A | 2025-12-24 | A5280 FF | 10% | 0.98d | 2025-12-29 | 2025-12-29 | 74.7d | 0d | SQM-INSTRUMENTACIÓN [21.75 h] | 5817-TK6060 | gl | 1 | 4.4.3 | 5.4.3.33 |
| A5300 |  | Instrumento TAG: FIT-6209 a Panel de señales Remotas TAG: 5817-RIO-1501. | 1.09d | 2025-12-01 A | 2025-12-24 | A5290 SS | 10% | 0.98d | 2025-12-30 | 2025-12-30 | 74.7d | 0d | SQM-INSTRUMENTACIÓN [21.75 h] | 5817-TK6060 | gl | 1 | 4.4.4 | 5.4.3.32 |
| A5310 |  | Instrumento TAG: FIT-6260 a Panel de señales Remotas TAG: 5817-RIO-1501. | 1.09d | 2025-12-01 A | 2025-12-24 | A5300 SS | 10% | 0.98d | 2025-12-30 | 2025-12-30 | 74.7d | 0d | SQM-INSTRUMENTACIÓN [21.75 h] | 5817-TK6060 | gl | 1 | 4.4.5 | 5.4.3.31 |
| A5320 |  | Instrumento TAG: FIT-6261 a Panel de señales Remotas TAG: 5817-RIO-1501. | 1.09d | 2025-12-01 A | 2025-12-24 | A5310 SS | 10% | 0.98d | 2025-12-30 | 2025-12-30 | 74.7d | 0d | SQM-INSTRUMENTACIÓN [21.75 h] | 5817-TK6060 | gl | 1 | 4.4.6 | 5.4.3.30 |
| A5340 |  | Instrumento TAG: PIT-6226 a Panel de señales Remotas TAG: 5817-RIO-1501. | 1.09d | 2025-12-01 A | 2025-12-24 | A5330 FF | 10% | 0.98d | 2025-12-31 | 2025-12-31 | 74.7d | 0d | SQM-INSTRUMENTACIÓN [12 h] | 5817-TK6060 | gl | 1 | 4.4.8 | 5.4.3.26 |
| A5350 |  | Instrumento TAG: PIT-6236 a Panel de señales Remotas TAG: 5817-RIO-1501. | 1.09d | 2025-12-01 A | 2025-12-24 | A5340 SS | 10% | 0.98d | 2025-12-31 | 2025-12-31 | 74.7d | 0d | SQM-INSTRUMENTACIÓN [12 h] | 5817-TK6060 | gl | 1 | 4.4.9 | 5.4.3.25 |
| A5360 |  | Instrumento TAG: PIT-6222 a Panel de señales Remotas TAG: 5817-RIO-1501. | 1.09d | 2025-12-01 A | 2025-12-24 | A5350 SS | 10% | 0.98d | 2025-12-31 | 2025-12-31 | 74.7d | 0d | SQM-INSTRUMENTACIÓN [12 h] | 5817-TK6060 | gl | 1 | 4.4.10 | 5.4.3.27 |
| A5270 |  | Pruebas de Funcionamiento y Puesta en Marcha de TAG: 5817-RIO-1501. | 1.09d | 2025-12-22 | 2025-12-24 | A5230 |  |  |  |  | 74.7d | 0d | SQM-INSTRUMENTACIÓN [12 h] | 5817-TK6060 | gl | 1 | 4.4.1 | 5.4.3.35 |
| A5280 |  | Conexión de Fibra Óptica en RIO y Sala Eléctrica TAG: SEL-4016. | 1.09d | 2025-12-22 | 2025-12-24 | A5270 SS |  |  |  |  | 74.7d | 0d | SQM-INSTRUMENTACIÓN [4.12 h] | 5817-TK6060 | gl | 1 | 4.4.2 | 5.4.3.1 |
| A5330 |  | Instrumento TAG: DIT-6279 a Panel de señales Remotas TAG: 5817-RIO-1501. | 1.09d | 2025-12-23 | 2025-12-24 | A5320 SS |  |  |  |  | 74.7d | 0d | SQM-INSTRUMENTACIÓN [21.75 h] | 5817-TK6060 | gl | 1 | 4.4.7 | 5.4.3.34 |
| A5370 |  | Instrumento TAG: FV-6208 a Panel de señales Remotas TAG: 5817-RIO-1501. | 1.09d | 2025-12-23 | 2025-12-24 | A5360 SS |  |  |  |  | 74.7d | 0d | SQM-INSTRUMENTACIÓN [21.75 h] | 5817-TK6060 | gl | 1 | 4.4.11 | 5.4.3.29 |
| A5380 |  | Instrumento TAG: FV-6217 a Panel de señales Remotas TAG: 5817-RIO-1501. | 1.09d | 2025-12-24 | 2025-12-25 | A5370 |  |  |  |  | 74.7d | 0d | SQM-INSTRUMENTACIÓN [21.75 h] | 5817-TK6060 | gl | 1 | 4.4.12 | 5.4.3.28 |
| A5390 |  | Instrumento TAG: XV-1178 a Panel de señales Remotas TAG: 5817-RIO-1501. | 1.09d | 2025-12-24 | 2025-12-25 | A5380 SS |  |  |  |  | 74.7d | 0d | SQM-INSTRUMENTACIÓN [21.75 h] | 5817-TK6060 | gl | 1 | 4.4.13 | 5.4.3.24 |
| A5400 |  | Instrumento TAG: XV-1179 a Panel de señales Remotas TAG: 5817-RIO-1501. | 1.09d | 2025-12-24 | 2025-12-25 | A5390 SS |  |  |  |  | 74.7d | 0d | SQM-INSTRUMENTACIÓN [21.75 h] | 5817-TK6060 | gl | 1 | 4.4.14 | 5.4.3.23 |
| A5410 |  | Instrumento TAG: XV-1180 a Panel de señales Remotas TAG: 5817-RIO-1501. | 1.09d | 2025-12-24 | 2025-12-25 | A5400 SS |  |  |  |  | 74.7d | 0d | SQM-INSTRUMENTACIÓN [21.75 h] | 5817-TK6060 | gl | 1 | 4.4.15 | 5.4.3.22 |
| A5420 |  | Instrumento TAG: XV-1181 a Panel de señales Remotas TAG: 5817-RIO-1501. | 1.09d | 2025-12-25 | 2025-12-26 | A5410 |  |  |  |  | 74.7d | 0d | SQM-INSTRUMENTACIÓN [21.75 h] | 5817-TK6060 | gl | 1 | 4.4.16 | 5.4.3.21 |
| A5430 |  | Instrumento TAG: XV-1182 a Panel de señales Remotas TAG: 5817-RIO-1501. | 1.09d | 2025-12-25 | 2025-12-26 | A5420 SS |  |  |  |  | 74.7d | 0d | SQM-INSTRUMENTACIÓN [21.75 h] | 5817-TK6060 | gl | 1 | 4.4.17 | 5.4.3.20 |
| A5440 |  | Instrumento TAG: XV-6206 a Panel de señales Remotas TAG: 5817-RIO-1501. | 1.09d | 2025-12-25 | 2025-12-26 | A5430 SS |  |  |  |  | 74.7d | 0d | SQM-INSTRUMENTACIÓN [21.75 h] | 5817-TK6060 | gl | 1 | 4.4.18 | 5.4.3.19 |
| A5450 |  | Instrumento TAG: XV-6209 a Panel de señales Remotas TAG: 5817-RIO-1501. | 1.09d | 2025-12-25 | 2025-12-26 | A5440 SS |  |  |  |  | 74.7d | 3.16d | SQM-INSTRUMENTACIÓN [21.75 h] | 5817-TK6060 | gl | 1 | 4.4.19 | 5.4.3.18 |
| A5460 |  | Instrumento TAG: XV-6216 a Panel de señales Remotas TAG: 5817-RIO-1501. | 1.09d | 2025-12-29 | 2025-12-30 | A5450, A5260 |  |  |  |  | 71.53d | 0d | SQM-INSTRUMENTACIÓN [21.75 h] | 5817-TK6060 | gl | 1 | 4.4.20 | 5.4.3.17 |
| A5470 |  | Instrumento TAG: XV-6219 a Panel de señales Remotas TAG: 5817-RIO-1501. | 1.09d | 2025-12-29 | 2025-12-30 | A5460 SS |  |  |  |  | 71.53d | 0d | SQM-INSTRUMENTACIÓN [21.75 h] | 5817-TK6060 | gl | 1 | 4.4.21 | 5.4.3.16 |
| A5480 |  | Instrumento TAG: XV-6223 a Panel de señales Remotas TAG: 5817-RIO-1501. | 1.09d | 2025-12-29 | 2025-12-30 | A5470 SS |  |  |  |  | 71.53d | 0d | SQM-INSTRUMENTACIÓN [21.75 h] | 5817-TK6060 | gl | 1 | 4.4.22 | 5.4.3.15 |
| A5490 |  | Instrumento TAG: XV-6223 a Panel de señales Remotas TAG: 5817-RIO-1501. | 1.09d | 2025-12-29 | 2025-12-30 | A5480 SS |  |  |  |  | 71.53d | 0d | SQM-INSTRUMENTACIÓN [21.75 h] | 5817-TK6060 | gl | 1 | 4.4.23 | 5.4.3.14 |
| A5500 |  | Instrumento TAG: XV-6224 a Panel de señales Remotas TAG: 5817-RIO-1501. | 1.09d | 2025-12-30 | 2025-12-31 | A5490 |  |  |  |  | 71.53d | 0d | SQM-INSTRUMENTACIÓN [21.75 h] | 5817-TK6060 | gl | 1 | 4.4.24 | 5.4.3.13 |
| A5510 |  | Instrumento TAG: XV-6225 a Panel de señales Remotas TAG: 5817-RIO-1501. | 1.09d | 2025-12-30 | 2025-12-31 | A5500 SS |  |  |  |  | 71.53d | 0d | SQM-INSTRUMENTACIÓN [21.75 h] | 5817-TK6060 | gl | 1 | 4.4.25 | 5.4.3.12 |
| A5520 |  | Instrumento TAG: XV-6226 a Panel de señales Remotas TAG: 5817-RIO-1501. | 1.09d | 2025-12-30 | 2025-12-31 | A5510 SS |  |  |  |  | 71.53d | 0d | SQM-INSTRUMENTACIÓN [21.75 h] | 5817-TK6060 | gl | 1 | 4.4.26 | 5.4.3.11 |
| A5530 |  | Instrumento TAG: XV-6227 a Panel de señales Remotas TAG: 5817-RIO-1501. | 1.09d | 2025-12-30 | 2025-12-31 | A5520 SS |  |  |  |  | 71.53d | 0d | SQM-INSTRUMENTACIÓN [21.75 h] | 5817-TK6060 | gl | 1 | 4.4.27 | 5.4.3.10 |
| A5540 |  | Instrumento TAG: XV-6228 a Panel de señales Remotas TAG: 5817-RIO-1501. | 1.09d | 2025-12-31 | 2026-01-01 | A5530 |  |  |  |  | 71.53d | 0d | SQM-INSTRUMENTACIÓN [21.75 h] | 5817-TK6060 | gl | 1 | 4.4.28 | 5.4.3.9 |
| A5550 |  | Instrumento TAG: XV-6233 a Panel de señales Remotas TAG: 5817-RIO-1501. | 1.09d | 2025-12-31 | 2026-01-01 | A5540 SS |  |  |  |  | 71.53d | 0d | SQM-INSTRUMENTACIÓN [21.75 h] | 5817-TK6060 | gl | 1 | 4.4.29 | 5.4.3.8 |
| A5560 |  | Instrumento TAG: XV-6234 a Panel de señales Remotas TAG: 5817-RIO-1501. | 1.09d | 2025-12-31 | 2026-01-01 | A5550 SS |  |  |  |  | 71.53d | 0d | SQM-INSTRUMENTACIÓN [21.75 h] | 5817-TK6060 | gl | 1 | 4.4.30 | 5.4.3.7 |
| A5570 |  | Instrumento TAG: XV-6237 a Panel de señales Remotas TAG: 5817-RIO-1501. | 1.09d | 2025-12-31 | 2026-01-01 | A5560 SS |  |  |  |  | 71.53d | 0d | SQM-INSTRUMENTACIÓN [21.75 h] | 5817-TK6060 | gl | 1 | 4.4.31 | 5.4.3.6 |
| A5580 |  | Instrumento TAG: XV-6238 a Panel de señales Remotas TAG: 5817-RIO-1501. | 1.09d | 2026-01-01 | 2026-01-02 | A5570 |  |  |  |  | 71.53d | 0d | SQM-INSTRUMENTACIÓN [21.75 h] | 5817-TK6060 | gl | 1 | 4.4.32 | 5.4.3.5 |
| A5590 |  | Instrumento TAG: XV-6243 a Panel de señales Remotas TAG: 5817-RIO-1501. | 1.09d | 2026-01-01 | 2026-01-02 | A5580 SS |  |  |  |  | 71.53d | 0d | SQM-INSTRUMENTACIÓN [21.75 h] | 5817-TK6060 | gl | 1 | 4.4.33 | 5.4.3.4 |
| A5600 |  | Instrumento TAG: XV-6259 a Panel de señales Remotas TAG: 5817-RIO-1501. | 1.09d | 2026-01-01 | 2026-01-02 | A5590 SS |  |  |  |  | 71.53d | 0d | SQM-INSTRUMENTACIÓN [21.75 h] | 5817-TK6060 | gl | 1 | 4.4.34 | 5.4.3.3 |
| A5610 |  | Instrumento TAG: XV-6263 a Panel de señales Remotas TAG: 5817-RIO-1501. | 1.09d | 2026-01-01 | 2026-01-02 | A5600 SS |  |  |  |  | 71.53d | 0d | SQM-INSTRUMENTACIÓN [21.75 h] | 5817-TK6060 | gl | 1 | 4.4.35 | 5.4.3.2 |

| ID | WBS | Activity | Duration | Start | Finish | Predecessors | Total float | Free float | Resources | Área | Unidad | Cantidad | Ítem LP | Ìtem EDP |
| --- | --- | --- | --- | --- | --- | --- | --- | --- | --- | --- | --- | --- | --- | --- |
|  | 4 | **PRUEBAS DE FUNCIONAMIENTO Y PEM INST. TK-6060** |  | 2025-12-30 | 2026-02-01 |  |  |  |  |  |  |  |  |  |
| A5620 |  | Pruebas de Funcionamiento y Puesta en Marcha de TAG: 5817-RIO-1501. | 3.27d | 2025-12-30 | 2026-01-02 | A5610 FF | 71.53d | 0d | SQM-INSTRUMENTACIÓN [12 h] | 5817-TK6060 | gl | 1 | 4.5.1 | 5.4.4.34 |
| A5630 |  | Pruebas de Operación y Puesta en Marcha de Instrumento TAG: FIT-6207 | 1.09d | 2026-01-01 | 2026-01-02 | A5620 FF | 71.53d | 0d | SQM-INSTRUMENTACIÓN [12 h] | 5817-TK6060 | gl | 1 | 4.5.2 | 5.4.4.32 |
| A5640 |  | Pruebas de Operación y Puesta en Marcha de Instrumento TAG: FIT-6209 | 1.09d | 2026-01-01 | 2026-01-02 | A5630 SS | 71.53d | 0d | SQM-INSTRUMENTACIÓN [12 h] | 5817-TK6060 | gl | 1 | 4.5.3 | 5.4.4.31 |
| A5650 |  | Pruebas de Operación y Puesta en Marcha de Instrumento TAG: FIT-6260 | 1.09d | 2026-01-01 | 2026-01-02 | A5640 SS | 71.53d | 0d | SQM-INSTRUMENTACIÓN [12 h] | 5817-TK6060 | gl | 1 | 4.5.4 | 5.4.4.30 |
| A5660 |  | Pruebas de Operación y Puesta en Marcha de Instrumento TAG: FIT-6261 | 1.09d | 2026-01-01 | 2026-01-02 | A5650 SS | 71.53d | 0d | SQM-INSTRUMENTACIÓN [12 h] | 5817-TK6060 | gl | 1 | 4.5.5 | 5.4.4.29 |
| A5670 |  | Pruebas de Operación y Puesta en Marcha de Instrumento TAG: DIT-6279 | 1.09d | 2026-01-01 | 2026-01-02 | A5660 SS | 71.53d | 0d | SQM-INSTRUMENTACIÓN [12 h] | 5817-TK6060 | gl | 1 | 4.5.6 | 5.4.4.33 |
| A5680 |  | Pruebas de Operación y Puesta en Marcha de Instrumento TAG: PIT-6226 | 1.09d | 2026-01-01 | 2026-01-02 | A5670 FF | 71.53d | 0d | SQM-INSTRUMENTACIÓN [12 h] | 5817-TK6060 | gl | 1 | 4.5.7 | 5.4.4.25 |
| A5690 |  | Pruebas de Operación y Puesta en Marcha de Instrumento TAG: PIT-6236 | 1.09d | 2026-01-01 | 2026-01-02 | A5680 SS | 71.53d | 0d | SQM-INSTRUMENTACIÓN [12 h] | 5817-TK6060 | gl | 1 | 4.5.8 | 5.4.4.24 |
| A5700 |  | Pruebas de Operación y Puesta en Marcha de Instrumento TAG: PIT-6222 | 1.09d | 2026-01-01 | 2026-01-02 | A5690 SS | 71.53d | 0d | SQM-INSTRUMENTACIÓN [12 h] | 5817-TK6060 | gl | 1 | 4.5.9 | 5.4.4.26 |
| A5710 |  | Pruebas de Operación y Puesta en Marcha de Instrumento TAG: FV-6208 | 1.09d | 2026-01-01 | 2026-01-02 | A5700 SS | 71.53d | 0d | SQM-INSTRUMENTACIÓN [12 h] | 5817-TK6060 | gl | 1 | 4.5.10 | 5.4.4.28 |
| A5720 |  | Pruebas de Operación y Puesta en Marcha de Instrumento TAG: FV-6217 | 1.09d | 2026-01-01 | 2026-01-02 | A5710 SS | 71.53d | 0d | SQM-INSTRUMENTACIÓN [12 h] | 5817-TK6060 | gl | 1 | 4.5.11 | 5.4.4.27 |
| A5730 |  | Pruebas de Operación y Puesta en Marcha de Instrumento TAG: XV-1178 | 1.09d | 2026-01-01 | 2026-01-02 | A5720 FF | 71.53d | 0d | SQM-INSTRUMENTACIÓN [12 h] | 5817-TK6060 | gl | 1 | 4.5.12 | 5.4.4.23 |
| A5740 |  | Pruebas de Operación y Puesta en Marcha de Instrumento TAG: XV-1179 | 1.09d | 2026-01-01 | 2026-01-02 | A5730 SS | 71.53d | 0d | SQM-INSTRUMENTACIÓN [12 h] | 5817-TK6060 | gl | 1 | 4.5.13 | 5.4.4.22 |
| A5750 |  | Pruebas de Operación y Puesta en Marcha de Instrumento TAG: XV-1180 | 1.09d | 2026-01-01 | 2026-01-02 | A5740 SS | 71.53d | 0d | SQM-INSTRUMENTACIÓN [12 h] | 5817-TK6060 | gl | 1 | 4.5.14 | 5.4.4.21 |
| A5760 |  | Pruebas de Operación y Puesta en Marcha de Instrumento TAG: XV-1181 | 1.09d | 2026-01-01 | 2026-01-02 | A5750 SS | 71.53d | 0d | SQM-INSTRUMENTACIÓN [12 h] | 5817-TK6060 | gl | 1 | 4.5.15 | 5.4.4.20 |
| A5770 |  | Pruebas de Operación y Puesta en Marcha de Instrumento TAG: XV-1182 | 1.09d | 2026-01-01 | 2026-01-02 | A5760 SS | 71.53d | 0d | SQM-INSTRUMENTACIÓN [12 h] | 5817-TK6060 | gl | 1 | 4.5.16 | 5.4.4.19 |
| A5780 |  | Pruebas de Operación y Puesta en Marcha de Instrumento TAG: XV-6206 | 1.09d | 2026-01-01 | 2026-01-02 | A5770 FF | 71.53d | 0d | SQM-INSTRUMENTACIÓN [12 h] | 5817-TK6060 | gl | 1 | 4.5.17 | 5.4.4.18 |
| A5790 |  | Pruebas de Operación y Puesta en Marcha de Instrumento TAG: XV-6209 | 1.09d | 2026-01-01 | 2026-01-02 | A5780 SS | 71.53d | 0d | SQM-INSTRUMENTACIÓN [12 h] | 5817-TK6060 | gl | 1 | 4.5.18 | 5.4.4.17 |
| A5800 |  | Pruebas de Operación y Puesta en Marcha de Instrumento TAG: XV-6216 | 1.09d | 2026-01-01 | 2026-01-02 | A5790 SS | 71.53d | 0d | SQM-INSTRUMENTACIÓN [12 h] | 5817-TK6060 | gl | 1 | 4.5.19 | 5.4.4.16 |
| A5810 |  | Pruebas de Operación y Puesta en Marcha de Instrumento TAG: XV-6219 | 1.09d | 2026-01-01 | 2026-01-02 | A5800 SS | 71.53d | 0d | SQM-INSTRUMENTACIÓN [12 h] | 5817-TK6060 | gl | 1 | 4.5.20 | 5.4.4.15 |
| A5820 |  | Pruebas de Operación y Puesta en Marcha de Instrumento TAG: XV-6223 | 1.09d | 2026-01-01 | 2026-01-02 | A5810 SS | 71.53d | 0d | SQM-INSTRUMENTACIÓN [12 h] | 5817-TK6060 | gl | 1 | 4.5.21 | 5.4.4.13 |
| A5830 |  | Pruebas de Operación y Puesta en Marcha de Instrumento TAG: XV-6223 | 1.09d | 2026-01-01 | 2026-01-02 | A5820 FF | 71.53d | 0d | SQM-INSTRUMENTACIÓN [12 h] | 5817-TK6060 | gl | 1 | 4.5.22 | 5.4.4.13 |
| A5840 |  | Pruebas de Operación y Puesta en Marcha de Instrumento TAG: XV-6224 | 1.09d | 2026-01-01 | 2026-01-02 | A5830 SS | 71.53d | 0d | SQM-INSTRUMENTACIÓN [12 h] | 5817-TK6060 | gl | 1 | 4.5.23 | 5.4.4.12 |
| A5850 |  | Pruebas de Operación y Puesta en Marcha de Instrumento TAG: XV-6225 | 1.09d | 2026-01-01 | 2026-01-02 | A5840 SS | 71.53d | 0d | SQM-INSTRUMENTACIÓN [12 h] | 5817-TK6060 | gl | 1 | 4.5.24 | 5.4.4.11 |
| A5860 |  | Pruebas de Operación y Puesta en Marcha de Instrumento TAG: XV-6226 | 1.09d | 2026-01-01 | 2026-01-02 | A5850 SS | 71.53d | 0d | SQM-INSTRUMENTACIÓN [12 h] | 5817-TK6060 | gl | 1 | 4.5.25 | 5.4.4.10 |
| A5870 |  | Pruebas de Operación y Puesta en Marcha de Instrumento TAG: XV-6227 | 1.09d | 2026-01-01 | 2026-01-02 | A5860 SS | 71.53d | 0d | SQM-INSTRUMENTACIÓN [12 h] | 5817-TK6060 | gl | 1 | 4.5.26 | 5.4.4.9 |
| A5880 |  | Pruebas de Operación y Puesta en Marcha de Instrumento TAG: XV-6228 | 1.09d | 2026-01-01 | 2026-01-02 | A5870 FF | 71.53d | 0d | SQM-INSTRUMENTACIÓN [12 h] | 5817-TK6060 | gl | 1 | 4.5.27 | 5.4.4.8 |
| A5890 |  | Pruebas de Operación y Puesta en Marcha de Instrumento TAG: XV-6233 | 1.09d | 2026-01-01 | 2026-01-02 | A5880 SS | 71.53d | 0d | SQM-INSTRUMENTACIÓN [12 h] | 5817-TK6060 | gl | 1 | 4.5.28 | 5.4.4.7 |
| A5900 |  | Pruebas de Operación y Puesta en Marcha de Instrumento TAG: XV-6234 | 1.09d | 2026-01-01 | 2026-01-02 | A5890 SS | 71.53d | 0d | SQM-INSTRUMENTACIÓN [12 h] | 5817-TK6060 | gl | 1 | 4.5.29 | 5.4.4.6 |
| A5910 |  | Pruebas de Operación y Puesta en Marcha de Instrumento TAG: XV-6237 | 1.09d | 2026-01-01 | 2026-01-02 | A5900 SS | 71.53d | 0d | SQM-INSTRUMENTACIÓN [12 h] | 5817-TK6060 | gl | 1 | 4.5.30 | 5.4.4.5 |
| A5920 |  | Pruebas de Operación y Puesta en Marcha de Instrumento TAG: XV-6238 | 1.09d | 2026-01-01 | 2026-01-02 | A5910 SS | 71.53d | 0d | SQM-INSTRUMENTACIÓN [12 h] | 5817-TK6060 | gl | 1 | 4.5.31 | 5.4.4.4 |
| A5930 |  | Pruebas de Operación y Puesta en Marcha de Instrumento TAG: XV-6243 | 1.09d | 2026-01-01 | 2026-01-02 | A5920 FF | 71.53d | 0d | SQM-INSTRUMENTACIÓN [12 h] | 5817-TK6060 | gl | 1 | 4.5.32 | 5.4.4.3 |
| A5940 |  | Pruebas de Operación y Puesta en Marcha de Instrumento TAG: XV-6259 | 1.09d | 2026-01-01 | 2026-01-02 | A5930 SS | 71.53d | 29.39d | SQM-INSTRUMENTACIÓN [12 h] | 5817-TK6060 | gl | 1 | 4.5.33 | 5.4.4.2 |
| A5950 |  | Pruebas de Operación y Puesta en Marcha de Instrumento TAG: XV-6263 | 1.09d | 2026-01-31 | 2026-02-01 | A5940 SS, A5210, A4810 | 42.14d | 4d | SQM-INSTRUMENTACIÓN [12 h] | 5817-TK6060 | gl | 1 | 4.5.34 | 5.4.4.1 |

| ID | WBS | Activity | Duration | Start | Finish | Predecessors | Complete | Remaining | Planned start | Planned finish | Total float | Free float | Resources | Cost | Actual cost | Área | Unidad | Cantidad | Ítem LP | Ìtem EDP |
| --- | --- | --- | --- | --- | --- | --- | --- | --- | --- | --- | --- | --- | --- | --- | --- | --- | --- | --- | --- | --- |
|  | 2 | **ÁREA 5772 - SECTOR TK-800** |  | 2025-09-11 | 2026-01-24 |  |  |  |  |  |  |  |  |  |  |  |  |  |  |  |
|  | 1 | **OBRAS CIVILES TK-800** |  | 2025-10-05 | 2025-12-15 |  |  |  |  |  |  |  |  |  |  |  |  |  |  |  |
|  | 1 | **OOCC SECTOR ESTANQUE DE AGUA BLANDA TAG:5772-EST-800** |  | 2025-10-05 | 2025-12-15 |  |  |  |  |  |  |  |  |  |  |  |  |  |  |  |
| A5970 |  | Nivelación Pedestal | 3.27d | 2025-10-05 A | 2025-12-10 A | A4220 SS | 100% |  | 2025-10-05 | 2025-10-07 |  |  | SQM-OOCC [2.7 h] | 2.7 | 2.7 | 5772-TK800 | m3 | 0.03 | 3.1.2. | 8.3.1.2 |
| A5980 |  | Armadura de Refuerzo A630-420H para Estructura Monorriel | 3.27d | 2025-10-08 A | 2025-12-15 | A5970 | 95% | 0.16d | 2025-10-08 | 2025-10-10 | 49.98d | 0d | SQM-OOCC [8.95 h] | 8.95 | 8.5 | 5772-TK800 | kg | 65 | 3.2.1. | 8.3.2.1 |
| A5960 |  | Ampliación Pedestal (TAG: 5772-BBA-1601 y TAG: 5772-BBA-1604) | 3.27d | 2025-10-11 A | 2025-12-15 | A5980 SS | 100% | 0d | 2025-10-11 | 2025-10-13 | 49.98d | 0d | SQM-OOCC [8.06 h] | 8.06 | 8.06 | 5772-TK800 | m3 | 1.05 | 3.1.1. | 8.3.1.1 |
| A6000 |  | Emplantillado Estructura Monorriel | 3.27d | 2025-10-14 A | 2025-12-10 A | A5960 SS | 100% |  | 2025-10-14 | 2025-10-16 |  |  | SQM-OOCC [0.22 h] | 0.22 | 0.22 | 5772-TK800 | m3 | 0.02 | 3.4.1. | 8.3.4.1 |
| A5990 |  | Estructura Monorriel | 3.27d | 2025-10-17 A | 2025-12-15 | A6000 | 95% | 0.16d | 2025-10-17 | 2025-10-19 | 49.98d | 0d | SQM-OOCC [168.22 h] | 168.22 | 159.81 | 5772-TK800 | kg | 1106.7 | 3.3.1. | 8.3.3.1 |
|  | 2 | **OBRAS MECÁNICAS TK-800** |  | 2025-10-14 | 2025-12-17 |  |  |  |  |  |  |  |  |  |  |  |  |  |  |  |
|  | 1 | **MONTAJE Y PRUEBAS DE EQUIPOS MECÁNICOS ÁREA 5772 SECTOR TK-800** |  | 2025-10-14 | 2025-12-17 |  |  |  |  |  |  |  |  |  |  |  |  |  |  |  |
| A6010 |  | Bomba Centrífuga y Motor TAG: 5772-BBA-1601; 5772-MTR-1602 | 4.36d | 2025-10-14 A | 2025-12-16 | A5960 SS | 59% | 1.79d | 2025-10-14 | 2025-10-17 | 57.65d | 0d | SQM-MECANICA [139.9 h] | 139.9 | 82.58 | 5772-TK800 | un | 1 | 1.1.1 | 4.1.1.1 |
| A6020 |  | Bomba Centrífuga y Motor TAG: 5772-BBA-1604; 5772-MTR-1605 | 4.36d | 2025-10-18 A | 2025-12-16 | A6010 SS | 65% | 1.53d | 2025-10-18 | 2025-10-21 | 57.65d | 0d | SQM-MECANICA [139.9 h] | 139.9 | 90.98 | 5772-TK800 | un | 1 | 1.1.2 | 4.1.1.2 |
| A6030 |  | Tecle Mantenimiento de Bombas TAG: 5772-TEC-1607 | 3.27d | 2025-10-22 A | 2025-12-17 | A5990 SS, A6020 SS | 32% | 2.21d | 2025-10-22 | 2025-10-24 | 57.65d | 0d | SQM-MECANICA [62 h] | 62 | 20.15 | 5772-TK800 | un | 1 | 1.1.3 | 4.1.1.3 |
|  | 3 | **OBRAS PIPING TK-800** |  | 2025-09-11 | 2026-01-24 |  |  |  |  |  |  |  |  |  |  |  |  |  |  |  |
|  | 1 | **FABRICACIÓN Y MONTAJE DE CAÑERÍAS ÁREA TK-800** |  | 2025-09-11 | 2026-01-23 |  |  |  |  |  |  |  |  |  |  |  |  |  |  |  |
| A6040 |  | Ø 200 mm - Cañería HDPE, PE 100, PN20 (8") - Fabricación | 30.55d | 2025-09-11 A | 2025-12-25 | A1070 SS | 64% | 10.9d | 2025-09-11 | 2025-10-08 | 40.33d | 0d | SQM-PIPING [227.5 h] | 227.5 | 146.3 | 5772-TK800 | un | 65 | 2.1.31 | 4.2.1.3 |
| A6060 |  | Ø 6" - Cañería Acero Inoxidable - Fabricación | 7.64d | 2025-10-09 A | 2025-12-13 A | A6040 SS | 100% |  | 2025-10-09 | 2025-10-15 |  |  | SQM-PIPING [481 h] | 481 | 481 | 5772-TK800 | un | 37 | 2.1.33 | 4.2.1.15 |
| A6110 |  | Ø 200 mm - Cañería HDPE, PE 100, PN20 (8") - Montaje | 45.82d | 2025-10-09 A | 2025-12-15 | A6040 SS | 100% | 0d | 2025-10-09 | 2025-11-19 | 59.96d | 0d | SQM-PIPING [439.84 h] | 439.84 | 439.84 | 5772-TK800 | m | 235 | 2.1.1 | 4.2.1.10 |
| A6130 |  | Ø 6" - Cañería Acero Inoxidable - Montaje | 7.64d | 2025-10-28 A | 2025-12-12 A | A6110 SS | 100% |  | 2025-10-28 | 2025-11-03 |  |  | SQM-PIPING [13.74 h] | 13.74 | 13.74 | 5772-TK800 | m | 10 | 2.1.3 | 4.2.1.20 |
| A6050 |  | Ø 8" - Cañería Acero Inoxidable - Fabricación | 5.45d | 2025-12-15 | 2025-12-20 | A6040 SS |  |  |  |  | 50.14d | 9.82d | SQM-PIPING [59.2 h] | 59.2 |  | 5772-TK800 | un | 4 | 2.1.32 | 4.2.1.4 |
| A6070 |  | Ø 4" - Cañería Acero Inoxidable - Fabricación | 15.27d | 2025-12-15 | 2025-12-30 | A6060 SS |  |  |  |  | 40.33d | 0d | SQM-PIPING [600.4 h] | 600.4 |  | 5772-TK800 | un | 79 | 2.1.34 | 4.2.1.21 |
| A6080 |  | Ø 3" - Cañería Acero Inoxidable - Fabricación | 2.18d | 2025-12-30 | 2026-01-01 | A6070, A6050 |  |  |  |  | 40.33d | 0d | SQM-PIPING [22.4 h] | 22.4 |  | 5772-TK800 | un | 4 | 2.1.35 | 4.2.1.28 |
| A6120 |  | Ø 8" - Cañería Acero Inoxidable - Montaje | 5.45d | 2025-12-30 | 2026-01-04 | A6070 |  |  |  |  | 54.51d | 14.18d | SQM-PIPING [7.26 h] | 7.26 |  | 5772-TK800 | m | 0.65 | 2.1.2 | 4.2.1.11 |
| A6090 |  | Ø 2" - Cañería Acero Inoxidable - Fabricación | 4.36d | 2026-01-01 | 2026-01-05 | A6080 |  |  |  |  | 40.33d | 0d | SQM-PIPING [49.27 h] | 49.27 |  | 5772-TK800 | un | 12 | 2.1.36 | 4.2.1.33 |
| A6100 |  | Ø 1" - Cañería Acero Inoxidable - Fabricación | 2.18d | 2026-01-01 | 2026-01-03 | A6090 SS |  |  |  |  | 40.33d | 0d | SQM-PIPING [2 h] | 2 |  | 5772-TK800 | un | 1 | 2.1.37 | 4.2.1.36 |
| A6140 |  | Ø 4" - Cañería Acero Inoxidable - Montaje | 15.27d | 2026-01-03 | 2026-01-18 | A6130, A6100 |  |  |  |  | 40.33d | 0d | SQM-PIPING [48.55 h] | 48.55 |  | 5772-TK800 | m | 20.704785914 | 2.1.4 | 4.2.1.27 |
| A6150 |  | Ø 3" - Cañería Acero Inoxidable - Montaje | 4.36d | 2026-01-18 | 2026-01-23 | A6140, A6120 |  |  |  |  | 40.33d | 0d | SQM-PIPING [0.4 h] | 0.4 |  | 5772-TK800 | m | 0.20092 | 2.1.5 | 4.2.1.31 |
| A6160 |  | Ø 2" - Cañería Acero Inoxidable - Montaje | 3.27d | 2026-01-18 | 2026-01-22 | A6150 SS, A6180 SS, A6170 SS |  |  |  |  | 40.33d | 0d | SQM-PIPING [8.69 h] | 8.69 |  | 5772-TK800 | m | 3.111241137 | 2.1.6 | 4.2.1.35 |

Notes:
- A6000: Corregir: ATRASO POR INTERFERENCIA POR TERRENO Y LLEGADA DE EQUIPO TECLE
- A6030: Corregir: LLEGADA DE TECLE, SE RETIRA EL 7-11
- A6160: Corregir: R FF

| ID | WBS | Activity | Duration | Start | Finish | Predecessors | Complete | Remaining | Planned start | Planned finish | Total float | Free float | Resources | Cost | Actual cost | Área | Unidad | Cantidad | Ítem LP | Ìtem EDP | Corregir |
| --- | --- | --- | --- | --- | --- | --- | --- | --- | --- | --- | --- | --- | --- | --- | --- | --- | --- | --- | --- | --- | --- |
|  | 2 | **MONTAJE DE VÁLVULAS Y FITTING SECTOR TK-800** |  | 2025-09-11 | 2026-01-07 |  |  |  |  |  |  |  |  |  |  |  |  |  |  |  |  |
| A6170 |  | Fitting Sector TK-800 (Global) | 32.73d | 2025-09-11 A | 2026-01-07 | A6040 SS | 29% | 23.12d | 2025-09-11 | 2025-10-10 | 67.38d | 34.91d | SQM-PIPING [1666.71 h] | 1,666.71 | 489.06 | 5772-TK800 | un | 118 | 99.8 | 99.8 |  |
| A6180 |  | Válvulas Sector TK-800 (Global) | 32.73d | 2025-09-11 A | 2026-01-07 | A6040 SS | 29% | 23.12d | 2025-09-11 | 2025-10-10 | 67.38d | 34.91d | SQM-PIPING [251.25 h] | 251.25 | 73.72 | 5772-TK800 | un | 21 | 99.17 | 99.17 |  |
|  | 3 | **TIE IN LÍNEAS ASOCIADAS A TK-800** |  | 2026-01-22 | 2026-01-24 |  |  |  |  |  |  |  |  |  |  |  |  |  |  |  |  |
| A6190 |  | TIE-IN N° 1431 - 5772-EST-800 FRP a Línea Proyectada 150-TW-5772-I1-1661 | 2.18d | 2026-01-22 | 2026-01-24 | A6160 |  |  |  |  | 40.33d | 0d | SQM-PIPING [50.67 h] | 50.67 |  | 5772-TK800 | un | 1 | 2.3.1 | 4.2.3.2 |  |
| A6200 |  | TIE-IN N° 1432 - 5772-EST-800 FRP a Línea Proyectada 150-TW-5772-I1-1663 | 2.18d | 2026-01-22 | 2026-01-24 | A6190 SS |  |  |  |  | 40.33d | 0d | SQM-PIPING [50.67 h] | 50.67 |  | 5772-TK800 | un | 1 | 2.3.2 | 4.2.3.1 |  |
| A6210 |  | Perforación de Estanque Existente TK-800 para TIE-IN N°1431 y 1432. | 2.18d | 2026-01-22 | 2026-01-24 | A6200 SS, A6250 |  |  |  |  | 40.33d | 0d | SQM-PIPING [101.33 h] | 101.33 |  | 5772-TK800 | un | 2 | 2.1.39 | 4.2.1.39 |  |
|  | 4 | **FABRICACIÓN Y MONTAJE DE SOPORTES TK-800** |  | 2025-12-15 | 2025-12-19 |  |  |  |  |  |  |  |  |  |  |  |  |  |  |  |  |
| A6220 |  | Soporte N°001 - Pedestal Tipo TEE, Acero Estructural para Tuberías Diámetros Pequeños | 4.36d | 2025-12-15 | 2025-12-19 | A6110 FF |  |  |  |  | 75.23d | 0d | SQM-PIPING [9 h] | 9 |  | 5772-TK800 | un | 2 | 2.4.1 | 4.2.4.4 | R FF |
| A6230 |  | Soporte N°002B - Pedestal con Repisa de Acero Estructural para Tuberías Diámetros Pequeños | 4.36d | 2025-12-15 | 2025-12-19 | A6220 SS |  |  |  |  | 75.23d | 0d | SQM-PIPING [9 h] | 9 |  | 5772-TK800 | un | 2 | 2.4.2 | 4.2.4.3 |  |
| A6240 |  | Soporte N°003 - Tirángulo Tipo Repisa (Existente), Acero Estructural (NOTA 4) | 0.91d | 2025-12-15 | 2025-12-15 | A6230 SS |  |  |  |  | 75.23d | 0d | SQM-PIPING |  |  | 5772-TK800 | (NOTA 4) | 0 | 2.4.3 | 4.2.4.2 |  |
| A6250 |  | Soporte Primario Tipo "U" (Para Uso General) | 3.27d | 2025-12-15 | 2025-12-18 | A6240 SS |  |  |  |  | 75.23d | 34.91d | SQM-PIPING [1 h] | 1 |  | 5772-TK800 | un | 75 | 2.4.4 | 4.2.4.1 |  |
|  | 4 | **OBRAS ELÉCTRICAS TK-800** |  | 2025-10-25 | 2025-12-24 |  |  |  |  |  |  |  |  |  |  |  |  |  |  |  |  |
|  | 1 | **MONTAJE DE CANALIZACIÓN Y FERRETERÍA TK-800** |  | 2025-10-25 | 2025-12-24 |  |  |  |  |  |  |  |  |  |  |  |  |  |  |  |  |
| A6260 |  | Canalización y Copla de Conduit de Acero Galvanizado 6"Ø, Conduit ANSI C80.1 | 10.91d | 2025-10-25 A | 2025-12-24 | A6030 SS | 12% | 9.57d | 2025-10-25 | 2025-11-03 | 57.65d | 0d | SQM-ELÉCTRICO [521.43 h] | 264,667.44 | 32,574.45 | 5772-TK800 | m | 130 | 3.2.1 | 4.3.1.3 |  |
| A6270 |  | Canalización y Copla de Conduit Flexible Metálico con Cubierta PVC 6" Ø Trabajo Pesado | 2.18d | 2025-11-04 A | 2025-12-16 | A6260 SS | 30% | 1.53d | 2025-11-04 | 2025-11-05 | 57.65d | 0d | SQM-ELÉCTRICO [33.6 h] | 17,054.69 | 5,116.41 | 5772-TK800 | m | 10 | 3.2.2 | 4.3.1.1 |  |
| A6280 |  | Canalización y Copla de Conduit de Acero Galvanizado 1 ½"Ø, Conduit ANSI C80.1 | 4.36d | 2025-11-06 A | 2025-12-18 | A6270 SS | 22% | 3.4d | 2025-11-06 | 2025-11-09 | 57.65d | 0d | SQM-ELÉCTRICO [126 h] | 63,955.08 | 14,078.24 | 5772-TK800 | m | 100 | 3.2.3 | 4.3.1.4 |  |
| A6290 |  | Canalización y Copla de Conduit Flexible Metálico con Cubierta PVC 1 ½" Ø Trabajo Pesado | 2.18d | 2025-12-10 A | 2025-12-16 | A6280 SS | 40% | 1.31d | 2025-12-17 | 2025-12-19 | 57.65d | 0d | SQM-ELÉCTRICO [6.3 h] | 3,197.75 | 1,279.1 | 5772-TK800 | m | 5 | 3.2.4 | 4.3.1.2 |  |
|  | 2 | **TENDIDO Y CONEXIONADO DE CABLES DE ALIMENTACIÓN TK-800** |  | 2025-11-12 | 2025-12-16 |  |  |  |  |  |  |  |  |  |  |  |  |  |  |  |  |
| A6300 |  | Cable Monoconductor de Cobre con Aislación XLPE, 1C #350 MCM, Clase 1 kV | 15.27d | 2025-11-12 A | 2025-12-16 | A6290 SS, A6280 SS | 89% | 1.72d | 2025-11-12 | 2025-11-25 | 68.88d | 0d | SQM-ELÉCTRICO [1930 h] | 979,629.4 | 869,421.09 | 5772-TK800 | m | 920 | 3.3.1 | 4.3.2.2 |  |
| A6310 |  | Cable Multiconductor de Cobre con Aislación de XLPE, 1x5C #12 AWG, Clase 1 kV | 5.45d | 2025-11-21 A | 2025-12-16 | A6300 FF | 99% | 0.07d | 2025-11-21 | 2025-11-25 | 68.88d | 0d | SQM-ELÉCTRICO [182.67 h] | 92,717.95 | 91,558.97 | 5772-TK800 | m | 174 | 3.3.2 | 4.3.2.1 | R FF |
|  | 3 | **MONTAJE Y CONEXIONADO DE EQUIPOS ELÉCTRICOS TK-800** |  | 2025-11-26 | 2025-12-16 |  |  |  |  |  |  |  |  |  |  |  |  |  |  |  |  |
| A6320 |  | Variador de Frecuencia TAG: 5772-VSD-1603 en SEL-403. | 2.18d | 2025-11-26 A | 2025-12-12 A | A6310 SS | 100% |  | 2025-11-26 | 2025-11-27 |  |  | SQM-ELÉCTRICO [36 h] | 18,272.88 | 18,272.88 | 5772-TK800 | gl | 1 | 3.4.1 | 4.3.3.2 |  |
| A6330 |  | Variador de Frecuencia TAG: 5772-VSD-1605 en SEL-403. | 2.18d | 2025-11-28 A | 2025-12-13 A | A6320 | 100% |  | 2025-11-28 | 2025-11-29 |  |  | SQM-ELÉCTRICO [36 h] | 18,272.88 | 18,272.88 | 5772-TK800 | gl | 1 | 3.4.2 | 4.3.3.1 |  |
| A6340 |  | Modificación de Cubiculo Existente en TAG: 5770-CCM-488, para Suministro de Energía de TAG: 5772-VSD-1603. | 2.18d | 2025-11-30 A | 2025-12-13 A | A6330 | 100% |  | 2025-11-30 | 2025-12-01 |  |  | SQM-ELÉCTRICO [35 h] | 17,765.3 | 17,765.3 | 5772-TK800 | gl | 1 | 3.4.3 | 4.3.3.4 |  |
| A6350 |  | Modificación de Cubiculo Existente en TAG: 5770-CCM-488, para Suministro de Energía de TAG: 5772-VSD-1605. | 2.18d | 2025-12-02 A | 2025-12-12 A | A6340 | 100% |  | 2025-12-02 | 2025-12-03 |  |  | SQM-ELÉCTRICO [35 h] | 17,765.3 | 17,765.3 | 5772-TK800 | gl | 1 | 3.4.4 | 4.3.3.3 |  |
| A6360 |  | Conexión de entre CCM TAG: 5770-CCM-488 y VDF TAG: 5772-VSD-1603. | 1.09d | 2025-12-04 A | 2025-12-16 | A6350 | 100% | 0d | 2025-12-04 | 2025-12-04 | 87.77d | 0d | SQM-ELÉCTRICO [4.12 h] | 2,093.77 | 2,093.77 | 5772-TK800 | gl | 1 | 3.4.5 | 4.4.4.6 |  |
| A6370 |  | Conexión de entre CCM TAG: 5770-CCM-488 y VDF TAG: 5772-VSD-1605. | 1.09d | 2025-12-04 A | 2025-12-16 | A6360 SS | 100% | 0d | 2025-12-04 | 2025-12-04 | 87.77d | 0d | SQM-ELÉCTRICO [4.12 h] | 2,093.77 | 2,093.77 | 5772-TK800 | gl | 1 | 3.4.6 | 4.4.4.5 |  |
| A6380 |  | Conexión de entre VDF TAG: 5772-VSD-1603 y Motor TAG: 5772-MTR-1602. | 1.09d | 2025-12-04 A | 2025-12-16 | A6370 SS | 100% | 0d | 2025-12-04 | 2025-12-04 | 87.77d | 0d | SQM-ELÉCTRICO [4.12 h] | 2,093.77 | 2,093.77 | 5772-TK800 | gl | 1 | 3.4.7 | 4.4.4.4 |  |
| A6390 |  | Conexión de entre VDF TAG: 5772-VSD-1605 y Motor TAG: 5772-MTR-1604. | 1.09d | 2025-12-04 A | 2025-12-16 | A6380 SS | 100% | 0d | 2025-12-04 | 2025-12-04 | 87.77d | 0d | SQM-ELÉCTRICO [4.12 h] | 2,093.77 | 2,093.77 | 5772-TK800 | gl | 1 | 3.4.8 | 4.4.4.3 |  |

| ID | WBS | Activity | Duration | Start | Finish | Predecessors | Complete | Remaining | Planned start | Planned finish | Total float | Free float | Resources | Cost | Actual cost | Área | Unidad | Cantidad | Ítem LP | Ìtem EDP | Corregir |
| --- | --- | --- | --- | --- | --- | --- | --- | --- | --- | --- | --- | --- | --- | --- | --- | --- | --- | --- | --- | --- | --- |
|  | 4 | **PRUEBAS DE FUNCIONAMIENTO Y PEM TK-800** |  | 2025-12-06 | 2025-12-06 |  |  |  |  |  |  |  |  |  |  |  |  |  |  |  |  |
| A6400 |  | Pruebas de Funcionamiento y Puesta en Marcha de Motor TAG: 5772-MTR-1602. | 1.09d | 2025-12-06 A | 2025-12-06 A | A6390 SS | 100% |  | 2025-12-20 | 2025-12-21 |  |  | SQM-ELÉCTRICO [12 h] | 6,090.96 | 6,090.96 | 5772-TK800 | gl | 1 | 3.5.1 | 4.3.4.2 |  |
| A6410 |  | Pruebas de Funcionamiento y Puesta en Marcha de Motor TAG: 5772-MTR-1604. | 1.09d | 2025-12-06 A | 2025-12-06 A | A6400 FF | 100% |  | 2025-12-22 | 2025-12-23 |  |  | SQM-ELÉCTRICO [12 h] | 6,090.96 | 6,090.96 | 5772-TK800 | gl | 1 | 3.5.2 | 4.3.4.1 |  |
|  | 5 | **OBRAS DE INSTRUMENTACIÓN TK-800** |  | 2025-12-04 | 2026-01-08 |  |  |  |  |  |  |  |  |  |  |  |  |  |  |  |  |
|  | 1 | **MONTAJE DE CANALIZACIÓN Y FERRETERÍA INST. TK-800** |  | 2025-12-16 | 2025-12-26 |  |  |  |  |  |  |  |  |  |  |  |  |  |  |  |  |
| A6420 |  | Canalización y Copla de Conduit de Acero Galvanizado 1"Ø, Conduit ANSI C80.1 | 7.64d | 2025-12-16 | 2025-12-23 | A6290 |  |  |  |  | 57.65d | 0d | SQM-INSTRUMENTACIÓN [151.2 h] |  |  | 5772-TK800 | m | 120 | 4.2.1 | 4.4.1.1 |  |
| A6430 |  | Canalización y Copla de Conduit Flexible Metálico con Cubierta PVC 1" Ø Trabajo Pesado | 2.18d | 2025-12-23 | 2025-12-26 | A6420 |  |  |  |  | 57.65d | 0d | SQM-INSTRUMENTACIÓN [12.6 h] |  |  | 5772-TK800 | m | 10 | 4.2.2 | 4.4.1.2 |  |
|  | 2 | **TENDIDO Y CONEXIONADO DE CABLES INSTRUMENTACIÓN TK-800** |  | 2025-12-26 | 2026-01-08 |  |  |  |  |  |  |  |  |  |  |  |  |  |  |  |  |
| A6440 |  | Cable Multiconductor de Cobre con Aislación de XLPE, 1x3C #12 AWG, Clase 1 kV | 3d | 2025-12-26 | 2025-12-29 | A6430 |  |  |  |  | 57.65d | 0d | SQM-INSTRUMENTACIÓN |  |  | 5772-TK800 | m | 0 | 4.3.1 | 4.4.2.1 |  |
| A6450 |  | Cable de Instrumentación (Señales Análogas), 1x1 par #16 AWG Apantallado | 10d | 2025-12-29 | 2026-01-08 | A6440 |  |  |  |  | 57.65d | 0d | SQM-INSTRUMENTACIÓN |  |  | 5772-TK800 | m | 0 | 4.3.2 | 4.4.2.2 |  |
|  | 3 | **MONTAJE Y CONEXIONADO DE EQUIPOS E INSTRUMENTOSTK-800** |  | 2025-12-04 | 2025-12-15 |  |  |  |  |  |  |  |  |  |  |  |  |  |  |  |  |
| A6460 |  | Instrumento TAG: PIT-1151 | 1.09d | 2025-12-04 A | 2025-12-15 | A6260 SS | 90% | 0.11d | 2025-12-04 | 2025-12-04 | 87.81d | 0d | SQM-INSTRUMENTACIÓN [12 h] |  |  | 5772-TK800 | gl | 1 | 4.4.1 | 4.4.3.1 |  |
| A6470 |  | Instrumento TAG: FIT-1152 | 1.09d | 2025-12-05 A | 2025-12-15 | A6460 SS | 52% | 0.52d | 2025-12-05 | 2025-12-05 | 87.81d | 0d | SQM-INSTRUMENTACIÓN [12 h] |  |  | 5772-TK800 | gl | 1 | 4.4.2 | 4.4.3.2 |  |
|  | 4 | **PRUEBAS DE FUNCIONAMIENTO Y PEM INST. TK-800** |  | 2025-12-15 | 2025-12-17 |  |  |  |  |  |  |  |  |  |  |  |  |  |  |  |  |
| A6480 |  | Pruebas de Operación y Puesta en Marcha de Instrumento TAG: PIT-1151 | 1.09d | 2025-12-15 | 2025-12-16 | A6470 |  |  |  |  | 87.81d | 0.04d | SQM-INSTRUMENTACIÓN [12 h] |  |  | 5772-TK800 | gl | 1 | 4.5.1 | 4.4.4.1 |  |
| A6490 |  | Pruebas de Operación y Puesta en Marcha de Instrumento TAG: FIT-1152 | 1.09d | 2025-12-16 | 2025-12-17 | A6480, A6410 |  |  |  |  | 87.77d | 49.62d | SQM-INSTRUMENTACIÓN [12 h] |  |  | 5772-TK800 | gl | 1 | 4.5.2 | 4.4.4.2 |  |
|  | 3 | **ÁREA 5728 - SECTOR TK-3000** |  | 2025-10-27 | 2026-02-03 |  |  |  |  |  |  |  |  |  |  |  |  |  |  |  |  |
|  | 1 | **OBRAS CIVILES TK-3000** |  | 2025-10-27 | 2025-12-22 |  |  |  |  |  |  |  |  |  |  |  |  |  |  |  |  |
|  | 1 | **EXTRACCIÓN DE ESTRUCTURA, FUNDACIONES Y DEM TK3000** |  | 2025-12-15 | 2025-12-18 |  |  |  |  |  |  |  |  |  |  |  |  |  |  |  |  |
| A6500 |  | Recorte de Grating Existente a Plomo Peldaño Escalera | 1.09d | 2025-12-15 | 2025-12-16 | A5990 |  |  |  |  | 49.98d | 0d | SQM-OOCC [0.55 h] | 0.55 |  | 5728-TK3000 | m3 | 0.12 | 4.1.1. | 8.4.1.1 | ACTIVIDADES DEL 001 |
| A6510 |  | Extracción Columnas Existentes de Estructura Monorriel | 3.27d | 2025-12-15 | 2025-12-18 | A6500 SS |  |  |  |  | 49.98d | 0d | SQM-OOCC [9.94 h] | 9.94 |  | 5728-TK3000 | kg | 108 | 4.1.2. | 8.4.1.2 |  |
| A6520 |  | Extracción Diagonales Existentes de Estructura Monorriel | 1.09d | 2025-12-15 | 2025-12-16 | A6510 SS |  |  |  |  | 49.98d | 0d | SQM-OOCC [1.11 h] | 1.11 |  | 5728-TK3000 | kg | 12.02 | 4.1.3. | 8.4.1.3 |  |
| A6530 |  | Extracción de Ducha | 1.09d | 2025-12-16 | 2025-12-17 | A6520 |  |  |  |  | 49.98d | 0d | SQM-OOCC [9.15 h] | 9.15 |  | 5728-TK3000 | cant | 1 | 4.1.4. | 8.4.1.4 |  |
|  | 2 | **FABRICACIÓN Y MONTAJE DE ESTRUCTURA MONORRIEL TK-3000** |  | 2025-10-27 | 2025-12-22 |  |  |  |  |  |  |  |  |  |  |  |  |  |  |  |  |
| A6560 |  | Columna Nueva de Estructura Monorriel | 3.27d | 2025-10-27 A | 2025-12-15 | A5970 | 95% | 0.16d | 2025-10-27 | 2025-10-29 | 82.71d | 0d | SQM-OOCC [12.84 h] | 12.84 | 12.2 | 5728-TK3000 | kg | 84.48 | 4.4.1. | 8.4.4.1 |  |
| A6570 |  | Diagonales Nuevas de Refuerzo Estructura Monorriel | 2.18d | 2025-12-15 | 2025-12-17 | A6560 |  |  |  |  | 82.71d | 42.38d | SQM-OOCC [5.12 h] | 5.12 |  | 5728-TK3000 | kg | 33.66 | 4.4.2. | 8.4.4.2 |  |
| A6550 |  | Armadura de refuerzo A630-420H Fundaciones TK-3000 | 3.27d | 2025-12-17 | 2025-12-20 | A6530 |  |  |  |  | 49.98d | 0d | SQM-OOCC [10.19 h] | 10.19 |  | 5728-TK3000 | kg | 74 | 4.3.1 | 8.4.3.1 |  |
| A6540 |  | Hormigón G30 Pedestal PD-1 (TAG: 5728-BBA-6066 y TAG: 5728-BBA-6063) | 2.18d | 2025-12-20 | 2025-12-22 | A6550 |  |  |  |  | 49.98d | 0d | SQM-OOCC [9.63 h] | 9.63 |  | 5728-TK3000 | m3 | 0.86 | 4.2.1. | 8.4.2.1 |  |

| ID | WBS | Activity | Duration | Start | Finish | Predecessors | Complete | Remaining | Planned start | Planned finish | Total float | Free float | Resources | Cost | Actual cost | Área | Unidad | Cantidad | Ítem LP | Ìtem EDP | Corregir |
| --- | --- | --- | --- | --- | --- | --- | --- | --- | --- | --- | --- | --- | --- | --- | --- | --- | --- | --- | --- | --- | --- |
|  | 2 | **OBRAS MECÁNICAS TK-3000** |  | 2025-11-15 | 2025-12-26 |  |  |  |  |  |  |  |  |  |  |  |  |  |  |  |  |
|  | 1 | **MONTAJE Y PRUEBAS DE EQUIPOS MECÁNICOS TK-3000** |  | 2025-11-15 | 2025-12-26 |  |  |  |  |  |  |  |  |  |  |  |  |  |  |  |  |
| A6580 |  | Bomba Centrífuga y Motor TAG: 5728-BBA-6063; 5728-MTR-6064 | 4.36d | 2025-11-15 A | 2025-12-26 | A8370 SS | 12% | 3.82d | 2025-11-15 | 2025-11-18 | 56.7d | 0d | SQM-MECANICA [139.9 h] | 139.9 | 17.49 | 5728-TK3000 | un | 1 | 1.1.1 | 3.1.1.1 |  |
| A6590 |  | Bomba Centrífuga y Motor TAG: 5728-BBA-6066; 5728-MTR-6067 | 4.36d | 2025-11-19 A | 2025-12-26 | A6580 SS | 12% | 3.82d | 2025-11-19 | 2025-11-22 | 56.7d | 0d | SQM-MECANICA [139.9 h] | 139.9 | 17.49 | 5728-TK3000 | un | 1 | 1.1.2 | 3.1.1.2 |  |
|  | 3 | **OBRAS DE ESTRUCTURA TK-3000** |  | 2025-12-01 | 2025-12-15 |  |  |  |  |  |  |  |  |  |  |  |  |  |  |  |  |
|  | 1 | **MONTAJE Y PRUEBAS DE EQUIPOS MECÁNICOS ÁREA 5827 SECTOR TK-3000** |  | 2025-12-01 | 2025-12-15 |  |  |  |  |  |  |  |  |  |  |  |  |  |  |  |  |
| A6600 |  | Modificación de Estructura para Tecle Monorriel Existente | 3.27d | 2025-12-01 A | 2025-12-15 | A3450 SS | 90% | 0.33d | 2025-12-01 | 2025-12-03 | 90.18d | 52.04d | SQM-ESTRUCTURA [254.5 h] | 254.5 | 229.05 | 5728-TK3000 | un | 1 | 1.1.3 | 3.1.1.3 | VALIDAR INFORMACIÓN SI REQUIERE TECLE |
|  | 4 | **OBRAS PIPING TK-3000** |  | 2025-11-19 | 2026-02-03 |  |  |  |  |  |  |  |  |  |  |  |  |  |  |  |  |
|  | 1 | **FABRICACIÓN Y MONTAJE DE CAÑERÍAS ÁREA TK-3000** |  | 2025-11-19 | 2026-02-03 |  |  |  |  |  |  |  |  |  |  |  |  |  |  |  |  |
| A6610 |  | Ø 6" - Cañería Acero Inoxidable - Fabricación | 32.73d | 2025-11-19 A | 2025-12-22 | A4380 SS | 76% | 7.92d | 2025-11-19 | 2025-12-18 | 66.22d | 0d | SQM-PIPING [7189 h] | 7,189 | 5,449.33 | 5728-TK3000 | un | 587 | 2.1.28 | 3.2.1.7 |  |
| A6660 |  | Ø 6" - Cañería Acero Inoxidable - Montaje | 32.73d | 2025-11-21 A | 2025-12-24 | A6610 SS+2.18d, A6700 FF, A6710 FF, A4490 SS | 72% | 9.01d | 2025-11-21 | 2025-12-20 | 66.23d | 14.99d | SQM-PIPING [3873.6 h] | 3,873.6 | 2,807.65 | 5728-TK3000 | m | 1428 | 2.1.1 | 3.2.1.12 | R FF |
| A6640 |  | Ø 2" - Cañería Acero Inoxidable - Fabricación | 15.27d | 2025-12-15 | 2025-12-30 | A6630 FF |  |  |  |  | 75.23d | 0d | SQM-PIPING [1059.22 h] | 1,059.22 |  | 5728-TK3000 | un | 258 | 2.1.31 | 3.2.1.25 |  |
| A6620 |  | Ø 4" - Cañería Acero Inoxidable - Fabricación | 4.36d | 2025-12-22 | 2025-12-27 | A6610 |  |  |  |  | 66.22d | 0d | SQM-PIPING [60.8 h] | 60.8 |  | 5728-TK3000 | un | 8 | 2.1.29 | 3.2.1.14 |  |
| A6630 |  | Ø 3" - Cañería Acero Inoxidable - Fabricación | 3.27d | 2025-12-24 | 2025-12-27 | A6620 FF |  |  |  |  | 78.22d | 2.99d | SQM-PIPING [22.4 h] | 22.4 |  | 5728-TK3000 | un | 4 | 2.1.30 | 3.2.1.19 |  |
| A6650 |  | Ø 1" - Cañería Acero Inoxidable - Fabricación | 3.27d | 2025-12-27 | 2025-12-30 | A6640 FF, A4000 |  |  |  |  | 75.23d | 30.55d | SQM-PIPING [8 h] | 8 |  | 5728-TK3000 | un | 4 | 2.1.32 | 3.2.1.33 |  |
| A6670 |  | Ø 4" - Cañería Acero Inoxidable - Montaje | 2.18d | 2026-01-22 | 2026-01-24 | A6620, A6210 SS |  |  |  |  | 40.33d | 0d | SQM-PIPING [0.36 h] | 0.36 |  | 5728-TK3000 | m | 0.152475419 | 2.1.2 | 3.2.1.17 |  |
| A6680 |  | Ø 3" - Cañería Acero Inoxidable - Montaje | 3.27d | 2026-01-23 | 2026-01-26 | A6670 SS+1.09d |  |  |  |  | 40.33d | 0d | SQM-PIPING [0.34 h] | 0.34 |  | 5728-TK3000 | m | 0.170091882 | 2.1.3 | 3.2.1.22 |  |
| A6690 |  | Ø 2" - Cañería Acero Inoxidable - Montaje | 10.91d | 2026-01-23 | 2026-02-03 | A6680 SS, A6640 SS |  |  |  |  | 40.33d | 0d | SQM-PIPING [273.65 h] | 273.65 |  | 5728-TK3000 | m | 98.025434821 | 2.1.4 | 3.2.1.32 |  |
|  | 2 | **MONTAJE DE VÁLVULAS Y FITTING SECTOR TK-3000** |  | 2025-12-15 | 2025-12-17 |  |  |  |  |  |  |  |  |  |  |  |  |  |  |  |  |
| A6700 |  | Fitting Sector TK-3000 (Global) | 2.18d | 2025-12-15 | 2025-12-17 | A6610 SS |  |  |  |  | 73.05d | 6.82d | SQM-PIPING [4812.47 h] | 4,812.47 |  | 5728-TK3000 | un | 384 | 99.9 | 99.9 |  |
| A6710 |  | Válvulas Sector TK-3000 (Global) | 2.18d | 2025-12-15 | 2025-12-17 | A6610 SS |  |  |  |  | 73.05d | 6.82d | SQM-PIPING [591 h] | 591 |  | 5728-TK3000 | un | 61 | 99.18 | 99.18 |  |
|  | 3 | **TIE IN LÍNEAS ASOCIADAS A TK-3000** |  | 2026-01-28 | 2026-02-03 |  |  |  |  |  |  |  |  |  |  |  |  |  |  |  |  |
| A6720 |  | Perforación de Estanque Existente TK-001 para TIE-IN N°6451, 6452 y 6453. | 5.45d | 2026-01-28 | 2026-02-03 | A6690 FF, A6570 |  |  |  |  | 40.33d | 0d | SQM-PIPING [152 h] | 152 |  | 5728-TK3000 | un | 3 | 2.1.33 | 3.2.1.1 |  |
| A6730 |  | TIE-IN N° 6451 - 5728-EST-001 FRP a Línea Proyectada 150-LC-5728-I1-6633-A | 1.09d | 2026-01-28 | 2026-01-29 | A6720 SS |  |  |  |  | 44.69d | 0d | SQM-PIPING [50.67 h] | 50.67 |  | 5728-TK3000 | un | 1 | 2.3.1 | 3.2.3.3 |  |
| A6740 |  | TIE-IN N° 6452 - 5728-EST-001 FRP a Línea Proyectada 150-LC-5728-I1-6605-A | 1.09d | 2026-01-28 | 2026-01-29 | A6730 SS |  |  |  |  | 44.69d | 0d | SQM-PIPING [50.67 h] | 50.67 |  | 5728-TK3000 | un | 1 | 2.3.2 | 3.2.3.2 |  |
| A6750 |  | TIE-IN N° 6453 - 5728-EST-001 FRP a Línea Proyectada 150-LC-5817-I1-6604-A | 1.09d | 2026-01-28 | 2026-01-29 | A6740 SS, A6650 FF |  |  |  |  | 44.69d | 0d | SQM-PIPING [50.67 h] | 50.67 |  | 5728-TK3000 | un | 1 | 2.3.3 | 3.2.3.1 |  |

| ID | WBS | Activity | Duration | Start | Finish | Predecessors | Complete | Remaining | Planned start | Planned finish | Total float | Free float | Resources | Cost | Actual cost | Área | Unidad | Cantidad | Ítem LP | Ìtem EDP | Corregir |
| --- | --- | --- | --- | --- | --- | --- | --- | --- | --- | --- | --- | --- | --- | --- | --- | --- | --- | --- | --- | --- | --- |
|  | 4 | **AISLACIÓN LÍNEAS TK-3000** |  | 2025-12-15 | 2026-01-26 |  |  |  |  |  |  |  |  |  |  |  |  |  |  |  |  |
| A6760 |  | Ø 6" - Aislación de Lana Mineral de 1,5" de espesor | 32.73d | 2025-12-15 | 2026-01-16 | A6660 FF+8.73d |  |  |  |  | 51.23d | 10.91d | SQM-PIPING [6114.66 h] | 6,114.66 |  | 5728-TK3000 | un | 1428 | 2.1.5 | 3.2.1.13 | R FF |
| A6770 |  | Ø 4" - Aislación de Lana Mineral de 1,5" de espesor | 3.27d | 2026-01-22 | 2026-01-25 | A6670 SS |  |  |  |  | 46.87d | 1.09d | SQM-PIPING [0.73 h] | 0.73 |  | 5728-TK3000 | un | 0.152475419 | 2.1.6 | 3.2.1.18 |  |
| A6780 |  | Ø 3" - Aislación de Lana Mineral de 1,5" de espesor | 3.27d | 2026-01-23 | 2026-01-26 | A6680 SS, A6770 SS |  |  |  |  | 45.78d | 0d | SQM-PIPING [0.54 h] | 0.54 |  | 5728-TK3000 | un | 0.170091882 | 2.1.7 | 3.2.1.23 |  |
|  | 5 | **RETIRO DE ELEMENTOS EXISTENTES TK-3000** |  | 2025-12-15 | 2026-02-03 |  |  |  |  |  |  |  |  |  |  |  |  |  |  |  |  |
| A6790 |  | Retiro y Reubicación de Ducha Existente | 5.45d | 2025-12-15 | 2025-12-20 | A6610 SS |  |  |  |  | 83.96d | 0d | SQM-PIPING [60 h] | 60 |  | 5728-TK3000 | gl | 1 | 2.1.34 | 3.2.1.2 |  |
| A6800 |  | Corte y Retiro de Parrilla de Piso Existente | 6.55d | 2025-12-15 | 2025-12-21 | A6790 SS |  |  |  |  | 83.96d | 43.64d | SQM-PIPING [66 h] | 66 |  | 5728-TK3000 | gl | 1 | 2.1.35 | 3.2.1.35 |  |
| A6810 |  | Corte y Retiro de Columna Estructural Existente y Reforzamiento de Viga Voladizo. | 6.55d | 2026-01-27 | 2026-02-03 | A6800 FF, A6760, A6870 FF |  |  |  |  | 40.33d | 0d | SQM-PIPING [624 h] | 624 |  | 5728-TK3000 | gl | 1 | 2.1.36 | 3.2.1.36 |  |
|  | 6 | **FABRICACIÓN Y MONTAJE DE SOPORTES TK-3000** |  | 2026-01-18 | 2026-02-03 |  |  |  |  |  |  |  |  |  |  |  |  |  |  |  |  |
| A6820 |  | Soporte N°001 - Pedestal Tipo TEE, Acero Estructural para Tuberías Diámetros Pequeños | 6.55d | 2026-01-18 | 2026-01-25 | A6660 SS, A4630 |  |  |  |  | 40.33d | 0d | SQM-PIPING [12.75 h] | 12.75 |  | 5728-TK3000 | un | 3 | 2.4.1 | 3.2.4.6 |  |
| A6830 |  | Soporte N°002 - Pedestal con Repisa de Acero Estructural para Tuberías Diámetros Pequeños | 4.36d | 2026-01-25 | 2026-01-29 | A6820 |  |  |  |  | 40.33d | 0d | SQM-PIPING [8.5 h] | 8.5 |  | 5728-TK3000 | un | 2 | 2.4.2 | 3.2.4.5 |  |
| A6870 |  | Soporte Primario Tipo "U" (Para Uso General) | 6.55d | 2026-01-27 | 2026-02-03 | A6860 FF |  |  |  |  | 40.33d | 0d | SQM-PIPING [3.66 h] | 3.66 |  | 5728-TK3000 | un | 360 | 2.4.6 | 3.2.4.1 |  |
| A6840 |  | Soporte N°003 - Pedestal, Acero Estructural para Tuberías Diámetros Pequeños | 4.36d | 2026-01-29 | 2026-02-03 | A6830 |  |  |  |  | 40.33d | 0d | SQM-PIPING [4.25 h] | 4.25 |  | 5728-TK3000 | un | 1 | 2.4.3 | 3.2.4.4 |  |
| A6850 |  | Soporte N°004 - Pedestal y Voladizo Tipo Simple, Acero Estructural para Tuberías Diámetros Pequeños | 4.36d | 2026-01-29 | 2026-02-03 | A6840 FF |  |  |  |  | 40.33d | 0d | SQM-PIPING [4.25 h] | 4.25 |  | 5728-TK3000 | un | 1 | 2.4.4 | 3.2.4.3 |  |
| A6860 |  | Soporte N°005 - Arco Tipo Colgante, Acero Estructural para Tuberías Diámetros Pequeños | 4.36d | 2026-01-29 | 2026-02-03 | A6850 FF |  |  |  |  | 40.33d | 0d | SQM-PIPING [4.25 h] | 4.25 |  | 5728-TK3000 | (NOTA 4) | 1 | 2.4.5 | 3.2.4.2 |  |
|  | 5 | **OBRAS ELÉCTRICAS TK-3000** |  | 2025-11-23 | 2026-01-14 |  |  |  |  |  |  |  |  |  |  |  |  |  |  |  |  |
|  | 1 | **MONTAJE DE CANALIZACIÓN Y FERRETERÍA TK-3000** |  | 2025-11-23 | 2025-12-27 |  |  |  |  |  |  |  |  |  |  |  |  |  |  |  |  |
| A6880 |  | Canalización y Copla de Conduit de Acero Galvanizado 6"Ø, Conduit ANSI C80.1 | 4.36d | 2025-11-23 A | 2025-12-26 | A6590 SS, A6260 SS | 19% | 3.52d | 2025-11-23 | 2025-11-26 | 56.7d | 0d | SQM-ELÉCTRICO [802.2 h] | 407,180.68 | 79,174.02 | 5728-TK3000 | m | 200 | 3.2.1 | 3.3.1.2 |  |
| A6890 |  | Canalización y Copla de Conduit Flexible Metálico con Cubierta PVC 6" Ø Trabajo Pesado. | 2.18d | 2025-11-27 A | 2025-12-23 | A6880 SS | 48% | 1.15d | 2025-11-27 | 2025-11-28 | 56.7d | 0d | SQM-ELÉCTRICO [33.6 h] | 17,054.69 | 8,100.98 | 5728-TK3000 | m | 10 | 3.2.2 | 3.3.1.3 |  |
| A6900 |  | Canalización y Copla de Conduit de Acero Galvanizado 1 ½"Ø, Conduit ANSI C80.1 | 5.45d | 2025-11-29 A | 2025-12-27 | A6890 SS | 20% | 4.36d | 2025-11-29 | 2025-12-03 | 56.7d | 0d | SQM-ELÉCTRICO [214.2 h] | 108,723.64 | 21,744.73 | 5728-TK3000 | m | 170 | 3.2.3 | 3.3.1.4 |  |
| A6910 |  | Canalización y Copla de Conduit Flexible Metálico con Cubierta PVC 1 ½" Ø Trabajo Pesado. | 2.18d | 2025-12-04 A | 2025-12-23 | A6900 SS | 80% | 0.44d | 2025-12-04 | 2025-12-05 | 56.7d | 0d | SQM-ELÉCTRICO [6.3 h] | 3,197.75 | 2,558.2 | 5728-TK3000 | m | 5 | 3.2.4 | 3.3.1.1 |  |
|  | 2 | **TENDIDO Y CONEXIONADO DE CABLES DE ALIMENTACIÓN TK-3000** |  | 2025-12-01 | 2025-12-25 |  |  |  |  |  |  |  |  |  |  |  |  |  |  |  |  |
| A6930 |  | Cable Multiconductor de Cobre con Aislación de XLPE, 1x5C #12 AWG, Clase 1 kV | 5.45d | 2025-12-01 A | 2025-12-25 | A6920 FF | 99% | 0.07d | 2025-12-14 | 2025-12-18 | 70.99d | 0d | SQM-ELÉCTRICO [184.5 h] | 93,648.51 | 92,477.9 | 5728-TK3000 | m | 460 | 3.3.2 | 3.3.1.5 |  |
| A6920 |  | Cable Monoconductor de Cobre con Aislación XLPE, 1C #350 MCM, Clase 1 kV | 16.36d | 2025-12-04 A | 2025-12-25 | A6880 SS, A6910 SS | 81% | 3.06d | 2025-12-04 | 2025-12-18 | 70.99d | 0d | SQM-ELÉCTRICO [1544 h] | 783,703.52 | 637,195.63 | 5728-TK3000 | m | 2320 | 3.3.1 | 3.3.2.1 |  |

| ID | WBS | Activity | Duration | Start | Finish | Predecessors | Complete | Remaining | Planned start | Planned finish | Total float | Free float | Resources | Cost | Actual cost | Área | Unidad | Cantidad | Ítem LP | Ìtem EDP | Corregir |
| --- | --- | --- | --- | --- | --- | --- | --- | --- | --- | --- | --- | --- | --- | --- | --- | --- | --- | --- | --- | --- | --- |
|  | 3 | **MONTAJE Y CONEXIONADO DE EQUIPOS ELÉCTRICOS TK-3000** |  | 2025-12-01 | 2026-01-10 |  |  |  |  |  |  |  |  |  |  |  |  |  |  |  |  |
| A6940 |  | Variador de Frecuencia TAG: 5728-VSD-6065 en SEL-401. | 2.18d | 2025-12-01 A | 2025-12-26 | A6920 SS, A6930 SS | 90% | 0.22d | 2025-12-19 | 2025-12-20 | 70.99d | 0d | SQM-ELÉCTRICO [36 h] | 18,272.88 | 16,445.59 | 5728-TK3000 | gl | 1 | 3.4.1 | 3.3.3.8 |  |
| A6950 |  | Variador de Frecuencia TAG: 5728-VSD-6068 en SEL-401. | 2.18d | 2025-12-01 A | 2025-12-26 | A6940 SS | 90% | 0.22d | 2025-12-21 | 2025-12-22 | 70.99d | 0d | SQM-ELÉCTRICO [36 h] | 18,272.88 | 16,445.59 | 5728-TK3000 | gl | 1 | 3.4.2 | 3.3.3.7 |  |
| A6960 |  | Modificación de Cubiculo Existente en TAG: 5770-CCM-431, para Suministro de Energía de TAG: 5728-VSD-6065. | 2.18d | 2025-12-01 A | 2025-12-02 A | A6950 SS | 100% |  | 2025-12-23 | 2025-12-24 |  |  | SQM-ELÉCTRICO [35 h] | 17,765.3 | 17,765.3 | 5728-TK3000 | gl | 1 | 3.4.3 | 3.3.3.6 |  |
| A6970 |  | Modificación de Cubiculo Existente en TAG: 5770-CCM-431, para Suministro de Energía de TAG: 5728-VSD-6068. | 2.18d | 2025-12-01 A | 2025-12-02 A | A6960 | 100% |  | 2025-12-25 | 2025-12-26 |  |  | SQM-ELÉCTRICO [35 h] | 17,765.3 | 17,765.3 | 5728-TK3000 | gl | 1 | 3.4.4 | 3.3.3.5 |  |
| A6980 |  | Conexión de entre CCM TAG: 5770-CCM-431 y VDF TAG: 5728-VSD-6065. | 1.09d | 2025-12-01 A | 2025-12-25 | A6970 FF | 50% | 0.55d | 2025-12-26 | 2025-12-26 | 70.99d | 0d | SQM-ELÉCTRICO [4.12 h] | 2,093.77 | 1,048.15 | 5728-TK3000 | gl | 1 | 3.4.5 | 3.3.3.4 |  |
| A6990 |  | Conexión de entre CCM TAG: 5770-CCM-431 y VDF TAG: 5728-VSD-6068. | 1.09d | 2025-12-01 A | 2025-12-25 | A6980 SS | 50% | 0.55d | 2025-12-27 | 2025-12-27 | 70.99d | 13.34d | SQM-ELÉCTRICO [4.12 h] | 2,093.77 | 1,048.15 | 5728-TK3000 | gl | 1 | 3.4.6 | 3.3.3.3 |  |
| A7000 |  | Conexión de entre VDF TAG: 5728-VSD-6065 y Motor TAG: 5728-MTR-6064. | 1.09d | 2026-01-08 | 2026-01-09 | A6990, A6450 |  |  |  |  | 57.65d | 0d | SQM-ELÉCTRICO [4.12 h] | 2,093.77 |  | 5728-TK3000 | gl | 1 | 3.4.7 | 3.3.3.2 |  |
| A7010 |  | Conexión de entre VDF TAG: 5728-VSD-6068 y Motor TAG: 5728-MTR-6067. | 1.09d | 2026-01-09 | 2026-01-10 | A7000 |  |  |  |  | 57.65d | 0d | SQM-ELÉCTRICO [4.12 h] | 2,093.77 |  | 5728-TK3000 | gl | 1 | 3.4.8 | 3.3.3.1 |  |
|  | 4 | **PRUEBAS DE FUNCIONAMIENTO Y PEM TK-3000** |  | 2026-01-10 | 2026-01-14 |  |  |  |  |  |  |  |  |  |  |  |  |  |  |  |  |
| A7020 |  | Pruebas de Funcionamiento y Puesta en Marcha de Motor TAG: 5728-MTR-6065. | 2.18d | 2026-01-10 | 2026-01-12 | A7010 |  |  |  |  | 57.65d | 0d | SQM-ELÉCTRICO [12 h] | 6,090.96 |  | 5728-TK3000 | gl | 1 | 3.5.1 | 3.3.4.2 |  |
| A7030 |  | Pruebas de Funcionamiento y Puesta en Marcha de Motor TAG: 5728-MTR-6067. | 2.18d | 2026-01-12 | 2026-01-14 | A7020 |  |  |  |  | 57.65d | 0.95d | SQM-ELÉCTRICO [12 h] | 6,090.96 |  | 5728-TK3000 | gl | 1 | 3.5.2 | 3.3.4.1 |  |
|  | 6 | **OBRAS DE INSTRUMENTACIÓN TK-3000** |  | 2025-12-01 | 2026-02-03 |  |  |  |  |  |  |  |  |  |  |  |  |  |  |  |  |
|  | 1 | **MONTAJE DE CANALIZACIÓN Y FERRETERÍA INST. TK-3000** |  | 2025-12-04 | 2026-01-09 |  |  |  |  |  |  |  |  |  |  |  |  |  |  |  |  |
| A7040 |  | EPC y Copla Porta Conductores 600x100mm e:2,5 mm, tiras 3m. Incluir tapa dos aguas, eclisas y pernos de unión. | 3.27d | 2025-12-04 A | 2025-12-25 | A6910 SS | 10% | 2.95d | 2025-12-04 | 2025-12-06 | 56.7d | 0d | SQM-INSTRUMENTACIÓN [168 h] |  |  | 5728-TK3000 | m | 30 | 4.2.1 | 3.4.1.2 |  |
| A7050 |  | EPC Curva Tipo "T", 600x100x2,5mm. Incluir tapa dos aguas, eclisas y pernos de unión. | 3.27d | 2025-12-04 A | 2025-12-25 | A7040 FF | 10% | 2.95d | 2025-12-04 | 2025-12-06 | 56.7d | 0d | SQM-INSTRUMENTACIÓN [5.6 h] |  |  | 5728-TK3000 | un | 1 | 4.2.2 | 3.4.1.1 | R FF |
| A7060 |  | Canalización y Copla de Conduit de Acero Galvanizado 1"Ø, Conduit ANSI C80.1 | 13.09d | 2025-12-22 | 2026-01-04 | A7050 SS |  |  |  |  | 56.7d | 0d | SQM-INSTRUMENTACIÓN [907.2 h] |  |  | 5728-TK3000 | m | 720 | 4.2.3 | 3.4.1.4 |  |
| A7070 |  | Canalización y Copla de Conduit Flexible Metálico con Cubierta PVC 1" Ø Trabajo Pesado | 4.36d | 2026-01-04 | 2026-01-09 | A7060 |  |  |  |  | 65.25d | 15.27d | SQM-INSTRUMENTACIÓN [100.8 h] |  |  | 5728-TK3000 | m | 80 | 4.2.4 | 3.4.1.3 |  |
|  | 2 | **TENDIDO Y CONEXIONADO DE CABLES INSTRUMENTACIÓN TK-3000** |  | 2025-12-01 | 2026-01-08 |  |  |  |  |  |  |  |  |  |  |  |  |  |  |  |  |
| A7100 |  | Cable Multiconductor de Cobre Blando 1x3C #12 AWG, Clase 0,3 | 15.27d | 2025-12-01 A | 2026-01-07 | A7090 SS | 10% | 13.75d | 2025-12-12 | 2025-12-25 | 56.7d | 0d | SQM-INSTRUMENTACIÓN [774.51 h] |  |  | 5728-TK3000 | m | 2120 | 4.3.3 | 3.4.2.3 |  |
| A7090 |  | Cable de Instrumentación (Señales Análogas), 1x1 par #16 AWG Apantallado | 8.73d | 2025-12-04 A | 2025-12-28 | A7080 FF | 58% | 3.67d | 2025-12-04 | 2025-12-11 | 56.7d | 0d | SQM-INSTRUMENTACIÓN [192.4 h] |  |  | 5728-TK3000 | m | 650 | 4.3.2 | 3.4.2.4 |  |
| A7080 |  | Cable Multiconductor de Cobre con Aislación de XLPE, 1x3C #12 AWG, Clase 1 kV | 5.45d | 2025-12-22 | 2025-12-28 | A7060 SS |  |  |  |  | 56.7d | 0d | SQM-INSTRUMENTACIÓN [120.56 h] |  |  | 5728-TK3000 | m | 330 | 4.3.1 | 3.4.2.1 |  |
| A7110 |  | Cable Multiconductor de Cobre Blando 1x5C #12 AWG, Clase 0,3 | 15.27d | 2025-12-24 | 2026-01-08 | A7100 SS |  |  |  |  | 56.7d | 0d | SQM-INSTRUMENTACIÓN [774.51 h] |  |  | 5728-TK3000 | m | 2120 | 4.3.4 | 3.4.2.2 |  |
|  | 3 | **MONTAJE Y CONEXIONADO DE EQUIPOS E INSTRUMENTOSTK-3000** |  | 2025-12-01 | 2026-01-15 |  |  |  |  |  |  |  |  |  |  |  |  |  |  |  |  |
| A7120 |  | Instrumento TAG: PIT-6204 | 2.18d | 2025-12-01 A | 2026-01-08 | A7110 FF | 10% | 1.96d | 2025-12-26 | 2025-12-27 | 56.7d | 0d | SQM-INSTRUMENTACIÓN [12 h] |  |  | 5728-TK3000 | gl | 1 | 4.4.1 | 3.4.3.17 |  |
| A7130 |  | Instrumento TAG: PIT-6214 | 2.18d | 2025-12-01 A | 2026-01-08 | A7120 SS | 10% | 1.96d | 2025-12-26 | 2025-12-27 | 56.7d | 0d | SQM-INSTRUMENTACIÓN [12 h] |  |  | 5728-TK3000 | gl | 1 | 4.4.2 | 3.4.3.16 |  |
| A7140 |  | Instrumento TAG: UIT-6218 | 2.18d | 2026-01-06 | 2026-01-09 | A7130 SS |  |  |  |  | 56.7d | 0d | SQM-INSTRUMENTACIÓN [12 h] |  |  | 5728-TK3000 | gl | 1 | 4.4.3 | 3.4.3.15 |  |
| A7150 |  | Instrumento TAG: UIT-6220 | 2.18d | 2026-01-06 | 2026-01-09 | A7140 SS |  |  |  |  | 56.7d | 0d | SQM-INSTRUMENTACIÓN [12 h] |  |  | 5728-TK3000 | gl | 1 | 4.4.4 | 3.4.3.14 |  |
| A7160 |  | Instrumento TAG: XV-1153 | 2.18d | 2026-01-06 | 2026-01-09 | A7150 SS |  |  |  |  | 56.7d | 0d | SQM-INSTRUMENTACIÓN [21.75 h] |  |  | 5728-TK3000 | gl | 1 | 4.4.5 | 3.4.3.13 |  |
| A7170 |  | Instrumento TAG: XV-1154 | 2.18d | 2026-01-09 | 2026-01-11 | A7160 |  |  |  |  | 56.7d | 0d | SQM-INSTRUMENTACIÓN [21.75 h] |  |  | 5728-TK3000 | gl | 1 | 4.4.6 | 3.4.3.12 |  |
| A7180 |  | Instrumento TAG: XV-1155 | 2.18d | 2026-01-09 | 2026-01-11 | A7170 SS |  |  |  |  | 56.7d | 0d | SQM-INSTRUMENTACIÓN [21.75 h] |  |  | 5728-TK3000 | gl | 1 | 4.4.7 | 3.4.3.11 |  |
| A7190 |  | Instrumento TAG: XV-1156 | 2.18d | 2026-01-09 | 2026-01-11 | A7180 SS |  |  |  |  | 56.7d | 0d | SQM-INSTRUMENTACIÓN [21.75 h] |  |  | 5728-TK3000 | gl | 1 | 4.4.8 | 3.4.3.10 |  |
| A7200 |  | Instrumento TAG: XV-1157 | 2.18d | 2026-01-09 | 2026-01-11 | A7190 SS |  |  |  |  | 56.7d | 0d | SQM-INSTRUMENTACIÓN [21.75 h] |  |  | 5728-TK3000 | gl | 1 | 4.4.9 | 3.4.3.9 |  |
| A7210 |  | Instrumento TAG: XV-6201 | 2.18d | 2026-01-09 | 2026-01-11 | A7200 SS |  |  |  |  | 56.7d | 0d | SQM-INSTRUMENTACIÓN [21.75 h] |  |  | 5728-TK3000 | gl | 1 | 4.4.10 | 3.4.3.8 |  |
| A7220 |  | Instrumento TAG: XV-6204 | 2.18d | 2026-01-11 | 2026-01-13 | A7210 |  |  |  |  | 56.7d | 0d | SQM-INSTRUMENTACIÓN [21.75 h] |  |  | 5728-TK3000 | gl | 1 | 4.4.11 | 3.4.3.7 |  |
| A7230 |  | Instrumento TAG: XV-6205 | 2.18d | 2026-01-11 | 2026-01-13 | A7220 SS |  |  |  |  | 56.7d | 0d | SQM-INSTRUMENTACIÓN [21.75 h] |  |  | 5728-TK3000 | gl | 1 | 4.4.12 | 3.4.3.6 |  |
| A7240 |  | Instrumento TAG: XV-6210 | 2.18d | 2026-01-11 | 2026-01-13 | A7230 SS |  |  |  |  | 56.7d | 0d | SQM-INSTRUMENTACIÓN [21.75 h] |  |  | 5728-TK3000 | gl | 1 | 4.4.13 | 3.4.3.5 |  |
| A7250 |  | Instrumento TAG: XV-6211 | 2.18d | 2026-01-11 | 2026-01-13 | A7240 SS |  |  |  |  | 56.7d | 0d | SQM-INSTRUMENTACIÓN [21.75 h] |  |  | 5728-TK3000 | gl | 1 | 4.4.14 | 3.4.3.4 |  |
| A7260 |  | Instrumento TAG: XV-6214 | 2.18d | 2026-01-11 | 2026-01-13 | A7250 SS |  |  |  |  | 56.7d | 0d | SQM-INSTRUMENTACIÓN [21.75 h] |  |  | 5728-TK3000 | gl | 1 | 4.4.15 | 3.4.3.3 |  |
| A7270 |  | Instrumento TAG: XV-6215 | 2.18d | 2026-01-13 | 2026-01-15 | A7260 |  |  |  |  | 56.7d | 0d | SQM-INSTRUMENTACIÓN [21.75 h] |  |  | 5728-TK3000 | gl | 1 | 4.4.16 | 3.4.3.2 |  |
| A7280 |  | Instrumento TAG: XV-6221 | 2.18d | 2026-01-13 | 2026-01-15 | A7270 SS |  |  |  |  | 56.7d | 0d | SQM-INSTRUMENTACIÓN [21.75 h] |  |  | 5728-TK3000 | gl | 1 | 4.4.17 | 3.4.3.1 |  |

| ID | WBS | Activity | Duration | Start | Finish | Predecessors | Total float | Free float | Resources | Cost | Área | Unidad | Cantidad | Ítem LP | Ìtem EDP | Corregir |
| --- | --- | --- | --- | --- | --- | --- | --- | --- | --- | --- | --- | --- | --- | --- | --- | --- |
|  | 4 | **PRUEBAS DE FUNCIONAMIENTO Y PEM INST. TK-3000** |  | 2026-01-11 | 2026-02-03 |  |  |  |  |  |  |  |  |  |  |  |
| A7290 |  | Pruebas de Operación y Puesta en Marcha de Instrumento TAG: PIT-6204 | 2.18d | 2026-01-11 | 2026-01-13 | A7210 | 56.7d | 0d | SQM-INSTRUMENTACIÓN [12 h] |  | 5728-TK3000 | gl | 1 | 4.5.1 | 3.4.4.16 |  |
| A7300 |  | Pruebas de Operación y Puesta en Marcha de Instrumento TAG: PIT-6214 | 2.18d | 2026-01-11 | 2026-01-13 | A7290 SS | 56.7d | 0d | SQM-INSTRUMENTACIÓN [12 h] |  | 5728-TK3000 | gl | 1 | 4.5.2 | 3.4.4.15 |  |
| A7310 |  | Pruebas de Operación y Puesta en Marcha de Instrumento TAG: UIT-6218 | 2.18d | 2026-01-11 | 2026-01-13 | A7300 SS | 56.7d | 0d | SQM-INSTRUMENTACIÓN [12 h] |  | 5728-TK3000 | gl | 1 | 4.5.3 | 3.4.4.14 |  |
| A7320 |  | Pruebas de Operación y Puesta en Marcha de Instrumento TAG: UIT-6220 | 2.18d | 2026-01-11 | 2026-01-13 | A7310 SS | 56.7d | 0d | SQM-INSTRUMENTACIÓN [12 h] |  | 5728-TK3000 | gl | 1 | 4.5.4 | 3.4.4.13 |  |
| A7330 |  | Pruebas de Operación y Puesta en Marcha de Instrumento TAG: XV-1153 | 2.18d | 2026-01-11 | 2026-01-13 | A7320 SS | 56.7d | 0d | SQM-INSTRUMENTACIÓN [12 h] |  | 5728-TK3000 | gl | 1 | 4.5.5 | 3.4.4.12 |  |
| A7340 |  | Pruebas de Operación y Puesta en Marcha de Instrumento TAG: XV-1154 | 2.18d | 2026-01-13 | 2026-01-15 | A7260, A7330 | 56.7d | 0d | SQM-INSTRUMENTACIÓN [12 h] |  | 5728-TK3000 | gl | 1 | 4.5.6 | 3.4.4.11 |  |
| A7350 |  | Pruebas de Operación y Puesta en Marcha de Instrumento TAG: XV-1155 | 2.18d | 2026-01-13 | 2026-01-15 | A7340 SS | 56.7d | 0d | SQM-INSTRUMENTACIÓN [12 h] |  | 5728-TK3000 | gl | 1 | 4.5.7 | 3.4.4.10 |  |
| A7360 |  | Pruebas de Operación y Puesta en Marcha de Instrumento TAG: XV-1156 | 2.18d | 2026-01-13 | 2026-01-15 | A7350 SS | 56.7d | 0d | SQM-INSTRUMENTACIÓN [12 h] |  | 5728-TK3000 | gl | 1 | 4.5.8 | 3.4.4.9 |  |
| A7370 |  | Pruebas de Operación y Puesta en Marcha de Instrumento TAG: XV-1157 | 2.18d | 2026-01-13 | 2026-01-15 | A7360 SS | 56.7d | 0d | SQM-INSTRUMENTACIÓN [12 h] |  | 5728-TK3000 | gl | 1 | 4.5.9 | 3.4.4.8 |  |
| A7380 |  | Pruebas de Operación y Puesta en Marcha de Instrumento TAG: XV-6201 | 2.18d | 2026-01-13 | 2026-01-15 | A7370 SS | 56.7d | 0d | SQM-INSTRUMENTACIÓN [12 h] |  | 5728-TK3000 | gl | 1 | 4.5.10 | 3.4.4.7 |  |
| A7390 |  | Pruebas de Operación y Puesta en Marcha de Instrumento TAG: XV-6204 | 2.18d | 2026-01-15 | 2026-01-17 | A7280, A7380, A7030 | 56.7d | 0d | SQM-INSTRUMENTACIÓN [12 h] |  | 5728-TK3000 | gl | 1 | 4.5.11 | 3.4.4.6 |  |
| A7400 |  | Pruebas de Operación y Puesta en Marcha de Instrumento TAG: XV-6205 | 2.18d | 2026-01-15 | 2026-01-17 | A7390 SS | 56.7d | 0d | SQM-INSTRUMENTACIÓN [12 h] |  | 5728-TK3000 | gl | 1 | 4.5.12 | 3.4.4.5 |  |
| A7410 |  | Pruebas de Operación y Puesta en Marcha de Instrumento TAG: XV-6210 | 2.18d | 2026-01-15 | 2026-01-17 | A7400 SS | 56.7d | 0d | SQM-INSTRUMENTACIÓN [12 h] |  | 5728-TK3000 | gl | 1 | 4.5.13 | 3.4.4.4 |  |
| A7420 |  | Pruebas de Operación y Puesta en Marcha de Instrumento TAG: XV-6211 | 2.18d | 2026-01-15 | 2026-01-17 | A7410 SS | 56.7d | 0d | SQM-INSTRUMENTACIÓN [12 h] |  | 5728-TK3000 | gl | 1 | 4.5.14 | 3.4.4.3 |  |
| A7430 |  | Pruebas de Operación y Puesta en Marcha de Instrumento TAG: XV-6214 | 2.18d | 2026-01-15 | 2026-01-17 | A7420 SS | 56.7d | 16.37d | SQM-INSTRUMENTACIÓN [12 h] |  | 5728-TK3000 | gl | 1 | 4.5.15 | 3.4.4.2 |  |
| A7440 |  | Pruebas de Operación y Puesta en Marcha de Instrumento TAG: XV-6215 | 2.18d | 2026-02-01 | 2026-02-03 | A7430 SS, A6810 FF | 40.33d | 2.18d | SQM-INSTRUMENTACIÓN [12 h] |  | 5728-TK3000 | gl | 1 | 4.5.16 | 3.4.4.1 |  |
|  | 4 | **ÁREA 5827 - SECTOR ESTANQUES L5 LiOH (TK-6100)** |  | 2025-12-01 | 2026-02-03 |  |  |  |  |  |  |  |  |  |  |  |
|  | 1 | **OBRAS PIPING SECTOR ESTANQUES L5 LiOH (TK-6100)** |  | 2025-12-15 | 2026-02-03 |  |  |  |  |  |  |  |  |  |  |  |
|  | 1 | **FABRICACIÓN Y MONTAJE DE CAÑERÍAS ÁREA ESTANQUES L5 LiOH (TK-6100)** |  | 2025-12-15 | 2026-01-31 |  |  |  |  |  |  |  |  |  |  |  |
| A7450 |  | Ø 6" - Cañería Acero Inoxidable - Fabricación | 45.82d | 2025-12-15 | 2026-01-29 | A6610 FF, A1620 SS | 40.33d | 0d | SQM-PIPING [2457 h] | 2,457 | 5827-L5 LiOH | un | 190 | 2.1.30 | 6.1.1.3 |  |
| A7500 |  | Ø 6" - Cañería Acero Inoxidable - Montaje | 45.82d | 2025-12-17 | 2026-01-31 | A7450 SS+2.18d | 42.51d | 0d | SQM-PIPING [1169.67 h] | 1,169.67 | 5827-L5 LiOH | m | 15 | 2.1.1 | 6.1.1.8 | R FF |
| A7470 |  | Ø 3" - Cañería Acero Inoxidable - Fabricación | 30.55d | 2025-12-27 | 2026-01-26 | A7450 SS+5.45d, A1630, A6780 FF | 45.78d | 0d | SQM-PIPING [1635.2 h] | 1,635.2 | 5827-L5 LiOH | un | 292 | 2.1.32 | 6.1.1.18 |  |
| A7520 |  | Ø 3" - Cañería Acero Inoxidable - Montaje | 30.55d | 2025-12-29 | 2026-01-28 | A7470 SS+2.18d | 45.78d | 1.09d | SQM-PIPING [579.43 h] | 579.43 | 5827-L5 LiOH | m | 172 | 2.1.3 | 6.1.1.29 | R FF |
| A7530 |  | Ø 2" - Cañería Acero Inoxidable - Montaje | 15.27d | 2026-01-14 | 2026-01-29 | A7480 FF | 44.69d | 0d | SQM-PIPING [75.38 h] | 75.38 | 5827-L5 LiOH | m | 27 | 2.1.4 | 6.1.1.34 |  |
| A7540 |  | Ø 3" - Cañería CPVC, SCH 80 - Montaje | 15.27d | 2026-01-14 | 2026-01-29 | A7490 FF, A6750 FF | 44.69d | 0d | SQM-PIPING [138.6 h] | 138.6 | 5827-L5 LiOH | m | 44 | 2.1.5 | 6.1.1.28 |  |
| A7480 |  | Ø 2" - Cañería Acero Inoxidable - Fabricación | 13.91d | 2026-01-15 | 2026-01-29 | A7460 FF | 44.69d | 0d | SQM-PIPING |  | 5827-L5 LiOH | un | 0 | 2.1.33 | 6.1.1.31 |  |
| A7460 |  | Ø 4" - Cañería Acero Inoxidable - Fabricación | 10.91d | 2026-01-18 | 2026-01-29 | A7450 FF | 40.33d | 0d | SQM-PIPING [425.6 h] | 425.6 | 5827-L5 LiOH | un | 56 | 2.1.31 | 6.1.1.11 |  |
| A7510 |  | Ø 4" - Cañería Acero Inoxidable - Montaje | 10.91d | 2026-01-18 | 2026-01-29 | A7500 SS, A7460 SS | 40.33d | 0d | SQM-PIPING [32.83 h] | 32.83 | 5827-L5 LiOH | m | 84 | 2.1.2 | 6.1.1.16 |  |
| A7490 |  | Ø 3" - Cañería CPVC, SCH 80 - Fabricación | 8.73d | 2026-01-21 | 2026-01-29 | A7480 FF | 44.69d | 0d | SQM-PIPING [407 h] | 407 | 5827-L5 LiOH | un | 148 | 2.1.34 | 6.1.1.19 |  |

| ID | WBS | Activity | Duration | Start | Finish | Predecessors | Complete | Remaining | Planned start | Planned finish | Total float | Free float | Resources | Cost | Área | Unidad | Cantidad | Ítem LP | Ìtem EDP | Corregir |
| --- | --- | --- | --- | --- | --- | --- | --- | --- | --- | --- | --- | --- | --- | --- | --- | --- | --- | --- | --- | --- |
|  | 2 | **MONTAJE DE VÁLVULAS Y FITTING SECTOR ESTANQUES L5 LiOH (TK-6100)** |  | 2025-12-15 | 2026-01-29 |  |  |  |  |  |  |  |  |  |  |  |  |  |  |  |
| A7550 |  | Fitting Sector L5 LiOH - TK-6100 (Global) | 45.82d | 2025-12-15 | 2026-01-29 | A7450 SS, A7530 FF |  |  |  |  | 44.69d | 2.18d | SQM-PIPING [3535.19 h] | 3,535.19 | 5827-L5 LiOH | un | 431 | 99.10 | 99.10 | R FF |
| A7560 |  | Válvulas Sector L5 LiOH - TK-6100 (Global) | 32.73d | 2025-12-28 | 2026-01-29 | A7450 SS, A7530 FF, A7550 SS+10.91d |  |  |  |  | 44.69d | 0d | SQM-PIPING [290.25 h] | 290.25 | 5827-L5 LiOH | un | 28 | 99.19 | 99.19 | R FF |
|  | 3 | **TIE IN LÍNEAS ASOCIADAS A ESTANQUES L5 LiOH (TK-6100)** |  | 2026-01-27 | 2026-01-29 |  |  |  |  |  |  |  |  |  |  |  |  |  |  |  |
| A7570 |  | TIE-IN N° 6454 - 5827-EST-6100 Ac. Inox. a Línea Proyectada 100-LC-5827-I1-6615-A | 2.18d | 2026-01-27 | 2026-01-29 | A7530 FF, A7560 FF |  |  |  |  | 44.69d | 0d | SQM-PIPING [50.67 h] | 50.67 | 5827-L5 LiOH | un | 1 | 2.3.1 | 6.1.3.8 |  |
| A7580 |  | TIE-IN N° 6455 - 5827-EST-6100 Ac. Inox. a Línea Proyectada 100-LC-5827-I1-6619-A | 2.18d | 2026-01-27 | 2026-01-29 | A7570 FF |  |  |  |  | 44.69d | 0d | SQM-PIPING [50.67 h] | 50.67 | 5827-L5 LiOH | un | 1 | 2.3.2 | 6.1.3.7 |  |
| A7590 |  | TIE-IN N° 6458 - 5827-EST-7100 Ac Inox. a Línea Proyectada 80-LC-5827-I1-6623-A | 2.18d | 2026-01-27 | 2026-01-29 | A7580 FF |  |  |  |  | 44.69d | 0d | SQM-PIPING [46.67 h] | 46.67 | 5827-L5 LiOH | un | 1 | 2.3.3 | 6.1.3.4 |  |
| A7600 |  | TIE-IN N° 6459 - 5827-EST-7100 Ac. Inox. a Línea Proyectada 80-LC-5827-I1-6626-A | 2.18d | 2026-01-27 | 2026-01-29 | A7590 FF, A7640 FF, A7520 FF |  |  |  |  | 44.69d |  | SQM-PIPING [46.67 h] | 46.67 | 5827-L5 LiOH | un | 1 | 2.3.4 | 6.1.3.3 |  |
| A7610 |  | TIE-IN N° 6456 - 5827-EST-6050 Ac. Inoc. a Línea Proyectada 80-DR-5827-P2-6625 | 2.18d | 2026-01-27 | 2026-01-29 | A7540 FF |  |  |  |  | 44.69d | 0d | SQM-PIPING [46.67 h] | 46.67 | 5827-L5 LiOH | un | 1 | 2.3.5 | 6.1.3.6 |  |
| A7620 |  | TIE-IN N° 6457 - 5827-EST-6050 Ac. Inox. a Línea Proyectada 80-DR-5827-P2-6622 | 2.18d | 2026-01-27 | 2026-01-29 | A7610 FF |  |  |  |  | 44.69d | 0d | SQM-PIPING [46.67 h] | 46.67 | 5827-L5 LiOH | un | 1 | 2.3.6 | 6.1.3.5 |  |
| A7630 |  | TIE-IN N° 6460 -5827-EST-7050 Ac. Inox. a Línea Proyectada 80-DR-5827-P2-6627 | 2.18d | 2026-01-27 | 2026-01-29 | A7620 FF |  |  |  |  | 44.69d | 0d | SQM-PIPING [46.67 h] | 46.67 | 5827-L5 LiOH | un | 1 | 2.3.7 | 6.1.3.2 |  |
| A7640 |  | TIE-IN N° 6461 - 5827-EST-7050 Ac. Inox. a Línea Proyectada 80-DR-5827-P2-6624 | 2.18d | 2026-01-27 | 2026-01-29 | A7630 FF |  |  |  |  | 44.69d | 0d | SQM-PIPING [46.67 h] | 46.67 | 5827-L5 LiOH | un | 1 | 2.3.8 | 6.1.3.1 |  |
|  | 4 | **AISLACIÓN LÍNEAS L5 LiOH (TK-6100)** |  | 2026-01-01 | 2026-02-03 |  |  |  |  |  |  |  |  |  |  |  |  |  |  |  |
| A7650 |  | Ø 6" - Aislación de Lana Mineral de 1,5" de espesor | 30.55d | 2026-01-01 | 2026-01-31 | A7500 FF |  |  |  |  | 42.51d | 17.45d | SQM-PIPING [1846.38 h] | 1,846.38 | 5827-L5 LiOH | un | 15 | 2.1.6 | 6.1.1.9 | R FF |
| A7660 |  | Ø 4" - Aislación de Lana Mineral de 1,5" de espesor | 3.27d | 2026-01-18 | 2026-01-22 | A7650 SS, A7510 SS |  |  |  |  | 40.33d | 0d | SQM-PIPING [67.2 h] | 67.2 | 5827-L5 LiOH | un | 84 | 2.1.7 | 6.1.1.17 |  |
| A7670 |  | Ø 3" - Aislación de Lana Mineral de 1,5" de espesor | 15.27d | 2026-01-18 | 2026-02-03 | A7660 SS, A7520 SS |  |  |  |  | 40.33d | 2.18d | SQM-PIPING [915.2 h] | 915.2 | 5827-L5 LiOH | un | 172 | 2.1.8 | 6.1.1.30 |  |
|  | 2 | **OBRAS DE INSTRUMENTACIÓN SECTOR ESTANQUES L5 LiOH (TK-6100)** |  | 2025-12-01 | 2026-01-06 |  |  |  |  |  |  |  |  |  |  |  |  |  |  |  |
|  | 1 | **MONTAJE DE CANALIZACIÓN Y FERRETERÍA INST. ESTANQUES L5 LiOH (TK-6100)** |  | 2025-12-23 | 2025-12-25 |  |  |  |  |  |  |  |  |  |  |  |  |  |  |  |
| A7680 |  | Canalización y Copla de Conduit de Acero Galvanizado 1"Ø, Conduit ANSI C80.1 | 1.09d | 2025-12-23 | 2025-12-24 | A6910 |  |  |  |  | 67.74d | 0d | SQM-INSTRUMENTACIÓN [1.26 h] |  | 5827-L5 LiOH | m | 1 | 4.2.1 | 6.2.1.2 |  |
| A7690 |  | Canalización y Copla de Conduit Flexible Metálico con Cubierta PVC 1" Ø Trabajo Pesado | 1.09d | 2025-12-24 | 2025-12-25 | A7680 |  |  |  |  | 67.74d | 0d | SQM-INSTRUMENTACIÓN [1.26 h] |  | 5827-L5 LiOH | m | 1 | 4.2.2 | 6.2.1.1 |  |
|  | 2 | **TENDIDO Y CONEXIONADO DE CABLES INSTRUMENTACIÓN ESTANQUES L5 LiOH (TK-6100)** |  | 2025-12-01 | 2025-12-30 |  |  |  |  |  |  |  |  |  |  |  |  |  |  |  |
| A7710 |  | Cable de Instrumentación (Señales Análogas), 1x1 par #16 AWG Apantallado | 3.27d | 2025-12-01 A | 2025-12-23 | A7700 SS | 55% | 1.47d | 2025-12-14 | 2025-12-16 | 67.74d | 0d | SQM-INSTRUMENTACIÓN [192.4 h] |  | 5827-L5 LiOH | m | 1500 | 4.3.2 | 6.2.2.3 |  |
| A7720 |  | Cable Multiconductor de Cobre Blando 1x3C #12 AWG, Clase 0,3 | 5.45d | 2025-12-01 A | 2025-12-24 | A7710 SS | 56% | 2.4d | 2025-12-17 | 2025-12-21 | 67.74d | 0d | SQM-INSTRUMENTACIÓN [548 h] |  | 5827-L5 LiOH | m | 650 | 4.3.3 | 6.2.2.4 |  |
| A7700 |  | Cable Multiconductor de Cobre con Aislación de XLPE, 1x3C #12 AWG, Clase 1 kV | 6.55d | 2025-12-05 A | 2025-12-25 | A7690 FF | 52% | 3.14d | 2026-01-05 | 2026-01-11 | 67.74d | 0d | SQM-INSTRUMENTACIÓN [127.87 h] |  | 5827-L5 LiOH | m | 350 | 4.3.1 | 6.2.2.1 |  |
| A7730 |  | Cable Multiconductor de Cobre Blando 1x5C #12 AWG, Clase 0,3 | 5.45d | 2025-12-24 | 2025-12-30 | A7720 |  |  |  |  | 67.74d | 0d | SQM-INSTRUMENTACIÓN [548 h] |  | 5827-L5 LiOH | m | 1500 | 4.3.4 | 6.2.2.2 |  |

| ID | WBS | Activity | Duration | Start | Finish | Predecessors | Total float | Free float | Resources | Área | Unidad | Cantidad | Ítem LP | Ìtem EDP |
| --- | --- | --- | --- | --- | --- | --- | --- | --- | --- | --- | --- | --- | --- | --- |
|  | 3 | **MONTAJE Y CONEXIONADO DE EQUIPOS E INSTRUMENTOS ESTANQUES L5 LiOH (TK-6100)** |  | 2025-12-21 | 2026-01-05 |  |  |  |  |  |  |  |  |  |
| A7740 |  | Módulos de Entradas y Salidas Análogas/Digitales en TAG: 5804-PNC-6402. | 8.73d | 2025-12-21 | 2025-12-30 | A7730 FF | 67.74d | 0d | SQM-INSTRUMENTACIÓN [620.5 h] | 5827-L5 LiOH | un | 5 | 4.4.1 | 6.2.3.1 |
| A7750 |  | Módulos de Entradas y Salidas Análogas/Digitales en TAG: 5804-PNC-7502. | 8.73d | 2025-12-21 | 2025-12-30 | A7740 SS | 67.74d | 0d | SQM-INSTRUMENTACIÓN [620.5 h] | 5827-L5 LiOH | un | 5 | 4.4.2 | 6.2.3.2 |
| A7760 |  | Brazo Prealambrado para Módulos de Entradas y Ealidas Análogas/Digitales en TAG: 5804-PNC-6402. | 8.73d | 2025-12-21 | 2025-12-30 | A7750 SS | 67.74d | 0d | SQM-INSTRUMENTACIÓN [620.5 h] | 5827-L5 LiOH | un | 5 | 4.4.3 | 6.2.3.3 |
| A7770 |  | Brazo Prealambrado para Módulos de Entradas y Ealidas Análogas/Digitales en TAG: 5804-PNC-7502. | 8.73d | 2025-12-21 | 2025-12-30 | A7760 SS | 67.74d | 0d | SQM-INSTRUMENTACIÓN [620.5 h] | 5827-L5 LiOH | un | 5 | 4.4.4 | 6.2.3.4 |
| A7780 |  | Instrumento TAG: FIT-6230 | 1.09d | 2025-12-29 | 2025-12-30 | A7770 FF | 67.74d | 0d | SQM-INSTRUMENTACIÓN [21.75 h] | 5827-L5 LiOH | gl | 1 | 4.4.5 | 6.2.3.30 |
| A7790 |  | Instrumento TAG: FIT-6240 | 1.09d | 2025-12-29 | 2025-12-30 | A7780 SS | 67.74d | 0d | SQM-INSTRUMENTACIÓN [21.75 h] | 5827-L5 LiOH | gl | 1 | 4.4.6 | 6.2.3.29 |
| A7800 |  | Instrumento TAG: FIT-6268 | 1.09d | 2025-12-29 | 2025-12-30 | A7790 SS | 67.74d | 0d | SQM-INSTRUMENTACIÓN [21.75 h] | 5827-L5 LiOH | gl | 1 | 4.4.7 | 6.2.3.28 |
| A7810 |  | Instrumento TAG: FIT-6670 | 1.09d | 2025-12-29 | 2025-12-30 | A7800 SS | 67.74d | 0d | SQM-INSTRUMENTACIÓN [21.75 h] | 5827-L5 LiOH | gl | 1 | 4.4.8 | 6.2.3.27 |
| A7820 |  | Instrumento TAG: FV-6264 | 1.09d | 2025-12-29 | 2025-12-30 | A7810 SS | 67.74d | 0d | SQM-INSTRUMENTACIÓN [21.75 h] | 5827-L5 LiOH | gl | 1 | 4.4.9 | 6.2.3.26 |
| A7830 |  | Instrumento TAG: FV-6265 | 1.09d | 2025-12-29 | 2025-12-30 | A7820 SS | 67.74d | 0d | SQM-INSTRUMENTACIÓN [21.75 h] | 5827-L5 LiOH | gl | 1 | 4.4.10 | 6.2.3.24 |
| A7840 |  | Instrumento TAG: FV-6264 | 1.09d | 2025-12-29 | 2025-12-30 | A7830 SS | 67.74d | 0d | SQM-INSTRUMENTACIÓN [21.75 h] | 5827-L5 LiOH | gl | 1 | 4.4.11 | 6.2.3.25 |
| A7850 |  | Instrumento TAG: FV-6265 | 1.09d | 2025-12-29 | 2025-12-30 | A7840 SS | 67.74d | 0d | SQM-INSTRUMENTACIÓN [21.75 h] | 5827-L5 LiOH | gl | 1 | 4.4.12 | 6.2.3.23 |
| A7860 |  | Instrumento TAG: XV-6251 | 1.09d | 2025-12-30 | 2025-12-31 | A7850 | 67.74d | 0d | SQM-INSTRUMENTACIÓN [21.75 h] | 5827-L5 LiOH | gl | 1 | 4.4.13 | 6.2.3.9 |
| A7870 |  | Instrumento TAG: XV-6229 | 1.09d | 2025-12-30 | 2025-12-31 | A7860 SS | 67.74d | 0d | SQM-INSTRUMENTACIÓN [21.75 h] | 5827-L5 LiOH | gl | 1 | 4.4.14 | 6.2.3.21 |
| A7880 |  | Instrumento TAG: XV-6232 | 1.09d | 2025-12-30 | 2025-12-31 | A7870 SS | 67.74d | 0d | SQM-INSTRUMENTACIÓN [21.75 h] | 5827-L5 LiOH | gl | 1 | 4.4.15 | 6.2.3.19 |
| A7890 |  | Instrumento TAG: XV-6245 | 1.09d | 2025-12-30 | 2025-12-31 | A7880 SS | 67.74d | 0d | SQM-INSTRUMENTACIÓN [21.75 h] | 5827-L5 LiOH | gl | 1 | 4.4.16 | 6.2.3.15 |
| A7900 |  | Instrumento TAG: XV-6246 | 1.09d | 2025-12-31 | 2026-01-01 | A7890 | 67.74d | 0d | SQM-INSTRUMENTACIÓN [21.75 h] | 5827-L5 LiOH | gl | 1 | 4.4.17 | 6.2.3.14 |
| A7910 |  | Instrumento TAG: XV-6247 | 1.09d | 2025-12-31 | 2026-01-01 | A7900 SS | 67.74d | 0d | SQM-INSTRUMENTACIÓN [21.75 h] | 5827-L5 LiOH | gl | 1 | 4.4.18 | 6.2.3.13 |
| A7920 |  | Instrumento TAG: XV-6252 | 1.09d | 2025-12-31 | 2026-01-01 | A7910 SS | 67.74d | 0d | SQM-INSTRUMENTACIÓN [21.75 h] | 5827-L5 LiOH | gl | 1 | 4.4.19 | 6.2.3.8 |
| A7930 |  | Instrumento TAG: XV-6253 | 1.09d | 2025-12-31 | 2026-01-01 | A7920 SS | 67.74d | 0d | SQM-INSTRUMENTACIÓN [21.75 h] | 5827-L5 LiOH | gl | 1 | 4.4.20 | 6.2.3.7 |
| A7940 |  | Instrumento TAG: XV-6258 | 1.09d | 2026-01-01 | 2026-01-02 | A7930 | 67.74d | 0d | SQM-INSTRUMENTACIÓN [21.75 h] | 5827-L5 LiOH | gl | 1 | 4.4.21 | 6.2.3.5 |
| A7950 |  | Instrumento TAG: XV-6249 | 1.09d | 2026-01-01 | 2026-01-02 | A7940 SS | 67.74d | 0d | SQM-INSTRUMENTACIÓN [21.75 h] | 5827-L5 LiOH | gl | 1 | 4.4.22 | 6.2.3.12 |
| A7960 |  | Instrumento TAG: XV-6229 | 1.09d | 2026-01-01 | 2026-01-02 | A7950 SS | 67.74d | 0d | SQM-INSTRUMENTACIÓN [21.75 h] | 5827-L5 LiOH | gl | 1 | 4.4.23 | 6.2.3.22 |
| A7970 |  | Instrumento TAG: XV-6230 | 1.09d | 2026-01-01 | 2026-01-02 | A7960 SS | 67.74d | 0d | SQM-INSTRUMENTACIÓN [21.75 h] | 5827-L5 LiOH | gl | 1 | 4.4.24 | 6.2.3.20 |
| A7980 |  | Instrumento TAG: XV-6240 | 1.09d | 2026-01-02 | 2026-01-03 | A7970 | 67.74d | 0d | SQM-INSTRUMENTACIÓN [21.75 h] | 5827-L5 LiOH | gl | 1 | 4.4.25 | 6.2.3.18 |
| A7990 |  | Instrumento TAG: XV-6242 | 1.09d | 2026-01-02 | 2026-01-03 | A7980 SS | 67.74d | 0d | SQM-INSTRUMENTACIÓN [21.75 h] | 5827-L5 LiOH | gl | 1 | 4.4.26 | 6.2.3.17 |
| A8000 |  | Instrumento TAG: XV-6245 | 1.09d | 2026-01-02 | 2026-01-03 | A7990 SS | 67.74d | 0d | SQM-INSTRUMENTACIÓN [21.75 h] | 5827-L5 LiOH | gl | 1 | 4.4.27 | 6.2.3.16 |
| A8010 |  | Instrumento TAG: XV-6250 | 1.09d | 2026-01-02 | 2026-01-03 | A8000 SS | 67.74d | 0d | SQM-INSTRUMENTACIÓN [21.75 h] | 5827-L5 LiOH | gl | 1 | 4.4.28 | 6.2.3.11 |
| A8020 |  | Instrumento TAG: XV-6251 | 1.09d | 2026-01-03 | 2026-01-04 | A8010 | 67.74d | 0d | SQM-INSTRUMENTACIÓN [21.75 h] | 5827-L5 LiOH | gl | 1 | 4.4.29 | 6.2.3.10 |
| A8030 |  | Instrumento TAG: XV-6258 | 1.09d | 2026-01-04 | 2026-01-05 | A8020 | 67.74d | 0d | SQM-INSTRUMENTACIÓN [21.75 h] | 5827-L5 LiOH | gl | 1 | 4.4.30 | 6.2.3.6 |

| ID | WBS | Activity | Duration | Start | Finish | Predecessors | Total float | Free float | Resources | Área | Unidad | Cantidad | Ítem LP | Ìtem EDP |
| --- | --- | --- | --- | --- | --- | --- | --- | --- | --- | --- | --- | --- | --- | --- |
|  | 4 | **PRUEBAS DE FUNCIONAMIENTO Y PEM INST. ESTANQUES L5 LiOH (TK-6100)** |  | 2025-12-26 | 2026-01-06 |  |  |  |  |  |  |  |  |  |
| A8040 |  | Pruebas de Operación y PEM Módulos de Entradas y Salidas Análogas/Digitales en TAG: 5804-PNC-6402 | 3.27d | 2025-12-26 | 2025-12-30 | A7770 FF | 68.83d | 0d | SQM-INSTRUMENTACIÓN [60 h] | 5827-L5 LiOH | un | 5 | 4.5.1 | 6.2.4.1 |
| A8050 |  | Pruebas de Operación y PEM de Entradas y Salidas Análogas/Digitales en TAG: 5801-PNC-7502 | 3.27d | 2025-12-30 | 2026-01-02 | A8040 | 68.83d | 0d | SQM-INSTRUMENTACIÓN [60 h] | 5827-L5 LiOH | un | 5 | 4.5.2 | 6.2.4.28 |
| A8060 |  | Pruebas de Operación y PEM de Brazo Prealambrado Módulos de Entradas y Salidas Análogas/Digitales en TAG: 5804-PNC-6402 | 3.27d | 2026-01-02 | 2026-01-05 | A8050 | 68.83d | 0d | SQM-INSTRUMENTACIÓN [60 h] | 5827-L5 LiOH | un | 5 | 4.5.3 | 6.2.4.29 |
| A8070 |  | Pruebas de Operación y PEM de Brazo Prealambrado Módulos de Entradas y Salidas Análogas/Digitales en TAG: 5801-PNC-7502 | 3.27d | 2026-01-02 | 2026-01-05 | A8060 FF | 68.83d | 0d | SQM-INSTRUMENTACIÓN [60 h] | 5827-L5 LiOH | un | 5 | 4.5.4 | 6.2.4.30 |
| A8080 |  | Pruebas de Operación y Puesta en Marcha de Instrumento TAG: FIT-6230 | 1.09d | 2026-01-02 | 2026-01-03 | A8070 SS | 68.83d | 0d | SQM-INSTRUMENTACIÓN [12 h] | 5827-L5 LiOH | gl | 1 | 4.5.5 | 6.2.4.27 |
| A8090 |  | Pruebas de Operación y Puesta en Marcha de Instrumento TAG: FIT-6240 | 1.09d | 2026-01-02 | 2026-01-03 | A8080 SS | 68.83d | 0d | SQM-INSTRUMENTACIÓN [12 h] | 5827-L5 LiOH | gl | 1 | 4.5.6 | 6.2.4.26 |
| A8100 |  | Pruebas de Operación y Puesta en Marcha de Instrumento TAG: FIT-6268 | 1.09d | 2026-01-02 | 2026-01-03 | A8090 SS | 68.83d | 0d | SQM-INSTRUMENTACIÓN [12 h] | 5827-L5 LiOH | gl | 1 | 4.5.7 | 6.2.4.25 |
| A8110 |  | Pruebas de Operación y Puesta en Marcha de Instrumento TAG: FIT-6670 | 1.09d | 2026-01-03 | 2026-01-04 | A8100 | 68.83d | 0d | SQM-INSTRUMENTACIÓN [12 h] | 5827-L5 LiOH | gl | 1 | 4.5.8 | 6.2.4.24 |
| A8120 |  | Pruebas de Operación y Puesta en Marcha de Instrumento TAG: FV-6264 | 1.09d | 2026-01-03 | 2026-01-04 | A8110 SS | 68.83d | 0d | SQM-INSTRUMENTACIÓN [12 h] | 5827-L5 LiOH | gl | 1 | 4.5.9 | 6.2.4.23 |
| A8130 |  | Pruebas de Operación y Puesta en Marcha de Instrumento TAG: FV-6265 | 1.09d | 2026-01-03 | 2026-01-04 | A8120 SS | 68.83d | 0d | SQM-INSTRUMENTACIÓN [12 h] | 5827-L5 LiOH | gl | 1 | 4.5.10 | 6.2.4.21 |
| A8140 |  | Pruebas de Operación y Puesta en Marcha de Instrumento TAG: FV-6264 | 1.09d | 2026-01-03 | 2026-01-04 | A8130 SS | 68.83d | 0d | SQM-INSTRUMENTACIÓN [12 h] | 5827-L5 LiOH | gl | 1 | 4.5.11 | 6.2.4.22 |
| A8150 |  | Pruebas de Operación y Puesta en Marcha de Instrumento TAG: FV-6265 | 1.09d | 2026-01-04 | 2026-01-05 | A8140 | 68.83d | 0d | SQM-INSTRUMENTACIÓN [12 h] | 5827-L5 LiOH | gl | 1 | 4.5.12 | 6.2.4.20 |
| A8160 |  | Pruebas de Operación y Puesta en Marcha de Instrumento TAG: XV-6251 | 1.09d | 2026-01-04 | 2026-01-05 | A8150 SS | 68.83d | 0d | SQM-INSTRUMENTACIÓN [12 h] | 5827-L5 LiOH | gl | 1 | 4.5.13 | 6.2.4.7 |
| A8170 |  | Pruebas de Operación y Puesta en Marcha de Instrumento TAG: XV-6229 | 1.09d | 2026-01-04 | 2026-01-05 | A8160 SS | 68.83d | 0d | SQM-INSTRUMENTACIÓN [12 h] | 5827-L5 LiOH | gl | 1 | 4.5.14 | 6.2.4.19 |
| A8180 |  | Pruebas de Operación y Puesta en Marcha de Instrumento TAG: XV-6232 | 1.09d | 2026-01-04 | 2026-01-05 | A8170 SS | 68.83d | 0d | SQM-INSTRUMENTACIÓN [12 h] | 5827-L5 LiOH | gl | 1 | 4.5.15 | 6.2.4.16 |
| A8190 |  | Pruebas de Operación y Puesta en Marcha de Instrumento TAG: XV-6245 | 1.09d | 2026-01-04 | 2026-01-05 | A8180 FF | 68.83d | 0d | SQM-INSTRUMENTACIÓN [12 h] | 5827-L5 LiOH | gl | 1 | 4.5.16 | 6.2.4.13 |
| A8200 |  | Pruebas de Operación y Puesta en Marcha de Instrumento TAG: XV-6246 | 1.09d | 2026-01-04 | 2026-01-05 | A8190 SS | 68.83d | 0d | SQM-INSTRUMENTACIÓN [12 h] | 5827-L5 LiOH | gl | 1 | 4.5.17 | 6.2.4.11 |
| A8210 |  | Pruebas de Operación y Puesta en Marcha de Instrumento TAG: XV-6247 | 1.09d | 2026-01-04 | 2026-01-05 | A8200 SS | 68.83d | 0d | SQM-INSTRUMENTACIÓN [12 h] | 5827-L5 LiOH | gl | 1 | 4.5.18 | 6.2.4.10 |
| A8220 |  | Pruebas de Operación y Puesta en Marcha de Instrumento TAG: XV-6252 | 1.09d | 2026-01-04 | 2026-01-05 | A8210 SS | 68.83d | 0d | SQM-INSTRUMENTACIÓN [12 h] | 5827-L5 LiOH | gl | 1 | 4.5.19 | 6.2.4.5 |
| A8230 |  | Pruebas de Operación y Puesta en Marcha de Instrumento TAG: XV-6253 | 1.09d | 2026-01-04 | 2026-01-05 | A8220 FF | 68.83d | 0d | SQM-INSTRUMENTACIÓN [12 h] | 5827-L5 LiOH | gl | 1 | 4.5.20 | 6.2.4.4 |
| A8240 |  | Pruebas de Operación y Puesta en Marcha de Instrumento TAG: XV-6258 | 1.09d | 2026-01-04 | 2026-01-05 | A8230 SS | 68.83d | 0d | SQM-INSTRUMENTACIÓN [12 h] | 5827-L5 LiOH | gl | 1 | 4.5.21 | 6.2.4.3 |
| A8250 |  | Pruebas de Operación y Puesta en Marcha de Instrumento TAG: XV-6249 | 1.09d | 2026-01-04 | 2026-01-05 | A8240 SS | 68.83d | 0d | SQM-INSTRUMENTACIÓN [12 h] | 5827-L5 LiOH | gl | 1 | 4.5.22 | 6.2.4.9 |
| A8260 |  | Pruebas de Operación y Puesta en Marcha de Instrumento TAG: XV-6229 | 1.09d | 2026-01-04 | 2026-01-05 | A8250 SS | 68.83d | 0d | SQM-INSTRUMENTACIÓN [12 h] | 5827-L5 LiOH | gl | 1 | 4.5.23 | 6.2.4.18 |
| A8270 |  | Pruebas de Operación y Puesta en Marcha de Instrumento TAG: XV-6230 | 1.09d | 2026-01-04 | 2026-01-05 | A8260 FF | 68.83d | 0d | SQM-INSTRUMENTACIÓN [12 h] | 5827-L5 LiOH | gl | 1 | 4.5.24 | 6.2.4.17 |
| A8280 |  | Pruebas de Operación y Puesta en Marcha de Instrumento TAG: XV-6240 | 1.09d | 2026-01-04 | 2026-01-05 | A8270 SS | 68.83d | 0d | SQM-INSTRUMENTACIÓN [12 h] | 5827-L5 LiOH | gl | 1 | 4.5.25 | 6.2.4.15 |
| A8290 |  | Pruebas de Operación y Puesta en Marcha de Instrumento TAG: XV-6242 | 1.09d | 2026-01-04 | 2026-01-05 | A8280 SS | 68.83d | 0d | SQM-INSTRUMENTACIÓN [12 h] | 5827-L5 LiOH | gl | 1 | 4.5.26 | 6.2.4.14 |
| A8300 |  | Pruebas de Operación y Puesta en Marcha de Instrumento TAG: XV-6245 | 1.09d | 2026-01-04 | 2026-01-05 | A8290 SS | 68.83d | 0d | SQM-INSTRUMENTACIÓN [12 h] | 5827-L5 LiOH | gl | 1 | 4.5.27 | 6.2.4.12 |
| A8310 |  | Pruebas de Operación y Puesta en Marcha de Instrumento TAG: XV-6250 | 1.09d | 2026-01-04 | 2026-01-05 | A8300 FF | 68.83d | 0d | SQM-INSTRUMENTACIÓN [12 h] | 5827-L5 LiOH | gl | 1 | 4.5.28 | 6.2.4.8 |
| A8320 |  | Pruebas de Operación y Puesta en Marcha de Instrumento TAG: XV-6251 | 1.09d | 2026-01-04 | 2026-01-05 | A8310 SS | 68.83d | 1.09d | SQM-INSTRUMENTACIÓN [12 h] | 5827-L5 LiOH | gl | 1 | 4.5.29 | 6.2.4.6 |
| A8330 |  | Pruebas de Operación y Puesta en Marcha de Instrumento TAG: XV-6258 | 1.09d | 2026-01-05 | 2026-01-06 | A8320 SS, A8030 | 67.74d | 29.6d | SQM-INSTRUMENTACIÓN [12 h] | 5827-L5 LiOH | gl | 1 | 4.5.30 | 6.2.4.2 |

| ID | WBS | Activity | Duration | Start | Finish | Predecessors | Complete | Remaining | Planned start | Planned finish | Total float | Free float | Resources | Cost | Actual cost | Área | Unidad | Cantidad | Ítem LP | Ìtem EDP | Corregir |
| --- | --- | --- | --- | --- | --- | --- | --- | --- | --- | --- | --- | --- | --- | --- | --- | --- | --- | --- | --- | --- | --- |
|  | 5 | **ÁREA 5872 - SECTOR TK-3016** |  | 2025-11-01 | 2026-01-24 |  |  |  |  |  |  |  |  |  |  |  |  |  |  |  |  |
|  | 6 | **OBRAS CIVILES TK-3016** |  | 2025-11-01 | 2025-12-22 |  |  |  |  |  |  |  |  |  |  |  |  |  |  |  |  |
|  | 1 | **OOCC SECTOR ESTANQUE DE AGUA ULTRA PURA TAG:5872-EST-3016** |  | 2025-11-01 | 2025-12-22 |  |  |  |  |  |  |  |  |  |  |  |  |  |  |  |  |
| A8350 |  | Armadura de Refuerzo A630-420H para PD-1 | 4.36d | 2025-11-01 A | 2025-12-15 | A6040 SS | 91% | 0.39d | 2025-11-01 | 2025-11-04 | 57.78d | 7.8d | SQM-OOCC [9.78 h] | 9.78 | 8.91 | 5872-TK3016 | kg | 75.52 | 2.2.1. | 8.2.2.1 |  |
| A8340 |  | Hormigón G30 Pedestal PD-1 (TAG: 5817-BBA-1681 y TAG: 5817-BBA-1684) | 2.18d | 2025-11-05 A | 2025-12-22 | A8350 SS, A6540 FF | 100% | 0d | 2025-11-05 | 2025-11-06 | 49.98d | 0d | SQM-OOCC [9.86 h] | 9.86 | 9.86 | 5872-TK3016 | m3 | 1.2 | 2.1.1. | 8.2.1.1 |  |
|  | 1 | **OBRAS MECÁNICAS TK-3016** |  | 2025-11-07 | 2025-12-24 |  |  |  |  |  |  |  |  |  |  |  |  |  |  |  |  |
|  | 1 | **MONTAJE Y PRUEBAS DE EQUIPOS MECÁNICOS ÁREA 5872 TK3016 HIDRÓXIDO** |  | 2025-11-07 | 2025-12-24 |  |  |  |  |  |  |  |  |  |  |  |  |  |  |  |  |
| A8360 |  | Bomba Centrífuga y Motor TAG: 5872-BBA-1681; 5872-MTR-1682 | 4.36d | 2025-11-07 A | 2025-12-24 | A8340 SS, A6030 SS | 65% | 1.53d | 2025-11-07 | 2025-11-10 | 49.98d | 0d | SQM-MECANICA [139.9 h] | 139.9 | 90.94 | 5872-TK3016 | un | 1 | 1.1.1 | 7.1.1.2 |  |
| A8370 |  | Bomba Centrífuga y Motor TAG: 5872-BBA-1684; 5872-MTR-1685 | 4.36d | 2025-11-11 A | 2025-12-24 | A8360 SS | 65% | 1.53d | 2025-11-11 | 2025-11-14 | 49.98d | 0d | SQM-MECANICA [139.9 h] | 139.9 | 90.94 | 5872-TK3016 | un | 1 | 1.1.2 | 7.1.1.1 |  |
|  | 2 | **OBRAS PIPING TK-3016** |  | 2025-11-15 | 2026-01-24 |  |  |  |  |  |  |  |  |  |  |  |  |  |  |  |  |
|  | 1 | **FABRICACIÓN Y MONTAJE DE CAÑERÍAS ÁREA TK-3016** |  | 2025-11-15 | 2026-01-24 |  |  |  |  |  |  |  |  |  |  |  |  |  |  |  |  |
| A8380 |  | Ø 200 mm - Cañería HDPE, PE 100, PN20 (8") - Fabricación | 6.55d | 2025-11-15 A | 2025-12-09 A | A3600 SS, A8370 SS | 100% |  | 2025-11-15 | 2025-11-20 |  |  | SQM-PIPING [157.5 h] | 157.5 | 157.5 | 5872-TK3016 | un | 45 | 2.1.28 | 7.2.1.2 |  |
| A8500 |  | Ø 200 mm - Cañería HDPE, PE 100, PN20 (8") - Montaje | 3.27d | 2025-12-01 A | 2026-01-02 | A8420 FF | 71% | 0.96d | 2025-12-01 | 2025-12-03 | 53.25d | 0d | SQM-PIPING [242.79 h] | 242.79 | 171.72 | 5872-TK3016 | m | 135 | 2.1.6 | 7.2.1.9 |  |
| A8400 |  | Ø 6" - Cañería Acero Inoxidable - Fabricación | 38.18d | 2025-12-15 | 2026-01-22 | A6610 FF, A8380 FF |  |  |  |  | 51.23d | 1.25d | SQM-PIPING [1378 h] | 1,378 |  | 5872-TK3016 | un | 122 | 2.1.30 | 7.2.1.14 |  |
| A8460 |  | Ø 6" - Cañería Acero Inoxidable - Montaje | 38.18d | 2025-12-17 | 2026-01-24 | A8400 FF+1.09d, A8510 FF, A8520 FF |  |  |  |  | 49.98d | 0d | SQM-PIPING [95.45 h] | 95.45 |  | 5872-TK3016 | m | 46.3 | 2.1.2 | 7.2.1.19 | R FF |
| A8390 |  | Ø 8" - Cañería Acero Inoxidable - Fabricación | 4.36d | 2025-12-22 | 2025-12-27 | A8380 |  |  |  |  | 52.16d | 0d | SQM-PIPING [59.2 h] | 59.2 |  | 5872-TK3016 | un | 4 | 2.1.29 | 7.2.1.3 |  |
| A8410 |  | Ø 4" - Cañería Acero Inoxidable - Fabricación | 3.27d | 2025-12-27 | 2025-12-30 | A8390 |  |  |  |  | 52.16d | 0d | SQM-PIPING [30.4 h] | 30.4 |  | 5872-TK3016 | un | 4 | 2.1.31 | 7.2.1.20 |  |
| A8420 |  | Ø 3" - Cañería Acero Inoxidable - Fabricación | 3.27d | 2025-12-30 | 2026-01-02 | A8410 |  |  |  |  | 52.16d | 0d | SQM-PIPING [22.4 h] | 22.4 |  | 5872-TK3016 | un | 4 | 2.1.32 | 7.2.1.24 |  |
| A8430 |  | Ø 2" - Cañería Acero Inoxidable - Fabricación | 4.36d | 2026-01-02 | 2026-01-07 | A8420 |  |  |  |  | 52.16d | 0d | SQM-PIPING [49.27 h] | 49.27 |  | 5872-TK3016 | un | 12 | 2.1.33 | 7.2.1.29 |  |
| A8450 |  | Ø 8" - Cañería Acero Inoxidable - Montaje | 3.27d | 2026-01-02 | 2026-01-05 | A8500 |  |  |  |  | 53.25d | 0d | SQM-PIPING [7.26 h] | 7.26 |  | 5872-TK3016 | m | 0.65 | 2.1.1 | 7.2.1.10 |  |
| A8480 |  | Ø 3" - Cañería Acero Inoxidable - Montaje | 3.27d | 2026-01-05 | 2026-01-09 | A8450 |  |  |  |  | 53.25d | 0d | SQM-PIPING [0.53 h] | 0.53 |  | 5872-TK3016 | m | 0.265968066 | 2.1.4 | 7.2.1.27 |  |
| A8440 |  | Ø 1" - Cañería Acero Inoxidable - Fabricación | 3.27d | 2026-01-07 | 2026-01-10 | A8430 |  |  |  |  | 52.16d | 0d | SQM-PIPING [6 h] | 6 |  | 5872-TK3016 | un | 3 | 2.1.34 | 7.2.1.32 |  |
| A8490 |  | Ø 2" - Cañería Acero Inoxidable - Montaje | 3.27d | 2026-01-09 | 2026-01-12 | A8480 |  |  |  |  | 53.25d | 0d | SQM-PIPING [9.14 h] | 9.14 |  | 5872-TK3016 | m | 3.273658441 | 2.1.5 | 7.2.1.31 |  |
| A8470 |  | Ø 4" - Cañería Acero Inoxidable - Montaje | 3.27d | 2026-01-12 | 2026-01-15 | A8490 |  |  |  |  | 53.25d | 1.09d | SQM-PIPING [1.07 h] | 1.07 |  | 5872-TK3016 | m | 0.456945876 | 2.1.3 | 7.2.1.23 |  |

| ID | WBS | Activity | Duration | Start | Finish | Predecessors | Complete | Remaining | Planned start | Planned finish | Total float | Free float | Resources | Cost | Actual cost | Área | Unidad | Cantidad | Ítem LP | Ìtem EDP | Corregir |
| --- | --- | --- | --- | --- | --- | --- | --- | --- | --- | --- | --- | --- | --- | --- | --- | --- | --- | --- | --- | --- | --- |
|  | 2 | **MONTAJE DE VÁLVULAS Y FITTING SECTOR TK-3016** |  | 2025-11-15 | 2026-01-24 |  |  |  |  |  |  |  |  |  |  |  |  |  |  |  |  |
| A8510 |  | Fitting Sector TK-3016 (Global) | 32.73d | 2025-11-15 A | 2026-01-24 | A8380 SS |  | 32.73d | 2025-11-15 | 2025-12-14 | 49.98d | 0d | SQM-PIPING [1507.89 h] | 1,507.89 |  | 5872-TK3016 | un | 117 | 99.11 | 99.11 |  |
| A8520 |  | Válvulas Sector TK-3016(Global) | 32.73d | 2025-11-15 A | 2026-01-24 | A8380 SS |  | 32.73d | 2025-11-15 | 2025-12-14 | 49.98d | 0d | SQM-PIPING [281.25 h] | 281.25 |  | 5872-TK3016 | un | 21 | 99.20 | 99.20 |  |
|  | 3 | **TIE IN LÍNEAS ASOCIADAS A TK-3016** |  | 2026-01-22 | 2026-01-24 |  |  |  |  |  |  |  |  |  |  |  |  |  |  |  |  |
| A8530 |  | TIE-IN N° 1421 - 5872-EST-3016 a Línea Proyectada 150-IW-5872-I1-1621 | 2.18d | 2026-01-22 | 2026-01-24 | A8460 FF |  |  |  |  | 49.98d | 0d | SQM-PIPING [50.67 h] | 50.67 |  | 5872-TK3016 | un | 1 | 2.3.1 | 7.2.3.2 |  |
| A8540 |  | TIE-IN N° 1422 - 5872-EST-3016 a Línea Proyectada 150-IW-5872-I1-1622 | 2.18d | 2026-01-22 | 2026-01-24 | A8530 FF |  |  |  |  | 49.98d | 0d | SQM-PIPING [50.67 h] | 50.67 |  | 5872-TK3016 | un | 1 | 2.3.2 | 7.2.3.1 |  |
| A8550 |  | Perforación de Estanque Existente TK-3016 para TIE-IN N°1421 y 1422. | 2.18d | 2026-01-22 | 2026-01-24 | A8540 FF, A8580, A7070 FF |  |  |  |  | 49.98d | 11.84d | SQM-PIPING [101.33 h] | 101.33 |  | 5872-TK3016 | un | 2 | 2.1.35 | 7.2.1.35 | R FF |
|  | 4 | **FABRICACIÓN Y MONTAJE DE SOPORTES TK-3016** |  | 2026-01-10 | 2026-01-20 |  |  |  |  |  |  |  |  |  |  |  |  |  |  |  |  |
| A8560 |  | Soporte N°001 - Pedestal Tipo TEE, Acero Estructural para Tuberías Diámetros Pequeños | 3.27d | 2026-01-10 | 2026-01-13 | A8440 |  |  |  |  | 52.16d | 0d | SQM-PIPING [8.5 h] | 8.5 |  | 5872-TK3016 | un | 2 | 2.4.1 | 7.2.4.3 |  |
| A8570 |  | Soporte N°002A - Pedestal con Repisa de Acero Estructural para Tuberías Diámetros Pequeños | 3.27d | 2026-01-13 | 2026-01-16 | A8560 |  |  |  |  | 52.16d | 0d | SQM-PIPING [17 h] | 17 |  | 5872-TK3016 | un | 4 | 2.4.2 | 7.2.4.2 |  |
| A8580 |  | Soporte Primario Tipo "U" (Para Uso General) | 3.27d | 2026-01-16 | 2026-01-20 | A8570, A8470 |  |  |  |  | 52.16d | 2.18d | SQM-PIPING [1.16 h] | 1.16 |  | 5872-TK3016 | un | 54 | 2.4.3 | 7.2.4.1 |  |
|  | 3 | **OBRAS ELÉCTRICAS TK-3016** |  | 2025-12-01 | 2026-01-04 |  |  |  |  |  |  |  |  |  |  |  |  |  |  |  |  |
|  | 1 | **MONTAJE DE CANALIZACIÓN Y FERRETERÍA TK-3016** |  | 2025-12-01 | 2025-12-28 |  |  |  |  |  |  |  |  |  |  |  |  |  |  |  |  |
| A8630 |  | Canalización y Copla de Conduit de Acero Galvanizado 1 ½"Ø, Conduit ANSI C80.1 | 4.36d | 2025-12-01 A | 2025-12-28 | A8620 FF | 15% | 3.71d | 2025-12-07 | 2025-12-10 | 68.88d | 0d | SQM-ELÉCTRICO [50.4 h] | 25,582.03 | 3,837.3 | 5872-TK3016 | m | 40 | 3.2.7 | 7.3.1.6 |  |
| A8640 |  | Canalización y Copla de Conduit Flexible Metálico con Cubierta PVC 1 ½" Ø Trabajo Pesado | 2.18d | 2025-12-01 A | 2025-12-26 | A8630 SS | 15% | 1.85d | 2025-12-11 | 2025-12-12 | 68.88d | 0d | SQM-ELÉCTRICO [6.3 h] | 3,197.75 | 479.66 | 5872-TK3016 | m | 5 | 3.2.8 | 7.3.1.3 |  |
| A8590 |  | Canalización y Copla de Conduit de Acero Galvanizado 4"Ø, Conduit ANSI C80.1 | 3.27d | 2025-12-16 | 2025-12-19 | A6310 |  |  |  |  | 68.88d | 0d | SQM-ELÉCTRICO [73.5 h] | 37,307.13 |  | 5872-TK3016 | m | 25 | 3.2.1 | 7.3.1.4 |  |
| A8600 |  | Canalización y Copla de Conduit Flexible Metálico con Cubierta PVC 4" Ø Trabajo Pesado | 2.18d | 2025-12-19 | 2025-12-22 | A8590 |  |  |  |  | 68.88d | 0d | SQM-ELÉCTRICO [14.7 h] | 7,461.43 |  | 5872-TK3016 | m | 5 | 3.2.2 | 7.3.1.1 |  |
| A8610 |  | Canalización y Copla de Conduit de Acero Galvanizado 2 ½"Ø, Conduit ANSI C80.1 | 4.36d | 2025-12-22 | 2025-12-26 | A8600 |  |  |  |  | 68.88d | 0d | SQM-ELÉCTRICO [75.6 h] | 38,373.05 |  | 5872-TK3016 | m | 40 | 3.2.3 | 7.3.1.5 |  |
| A8620 |  | Canalización y Copla de Conduit Flexible Metálico con Cubierta PVC 2 ½" Ø Trabajo Pesado | 2.18d | 2025-12-26 | 2025-12-28 | A8610 |  |  |  |  | 68.88d | 0d | SQM-ELÉCTRICO [9.45 h] | 4,796.63 |  | 5872-TK3016 | m | 5 | 3.2.4 | 7.3.1.2 |  |
|  | 2 | **TENDIDO Y CONEXIONADO DE CABLES DE ALIMENTACIÓN TK-3016** |  | 2025-12-01 | 2026-01-01 |  |  |  |  |  |  |  |  |  |  |  |  |  |  |  |  |
| A8650 |  | Cable Monoconductor de Cobre con Aislación XLPE, 1C #250 MCM, Clase 1 kV | 7.64d | 2025-12-01 A | 2026-01-01 | A8640 SS | 8% | 7d | 2025-12-13 | 2025-12-19 | 68.88d | 0d | SQM-ELÉCTRICO |  |  | 5872-TK3016 | m | 0 | 3.3.1 | 7.3.2.3 |  |
| A8660 |  | Cable Multiconductor de Cobre con Aislación XLPE, 1X4C #2 AWG, Clase 1 kV | 4.36d | 2025-12-01 A | 2025-12-28 | A8650 SS | 9% | 3.99d | 2025-12-13 | 2025-12-16 | 68.88d | 0d | SQM-ELÉCTRICO [28.44 h] | 14,435.58 | 1,249.23 | 5872-TK3016 | m | 52 | 3.3.2 | 7.3.2.1 |  |
| A8670 |  | Cable Multiconductor de Cobre con Aislación de XLPE, 1x5C #12 AWG, Clase 1 kV | 4.36d | 2025-12-01 A | 2025-12-28 | A8660 SS | 9% | 3.99d | 2025-12-17 | 2025-12-20 | 68.88d | 0d | SQM-ELÉCTRICO [16.44 h] | 8,344.62 | 722.13 | 5872-TK3016 | m | 52 | 3.3.3 | 7.3.2.2 |  |
|  | 3 | **MONTAJE Y CONEXIONADO DE EQUIPOS ELÉCTRICOS TK-3016** |  | 2025-12-28 | 2026-01-01 |  |  |  |  |  |  |  |  |  |  |  |  |  |  |  |  |
| A8680 |  | Tablero Partidor de Motores TAG: 5817-TPM-1502. | 3.27d | 2025-12-28 | 2026-01-01 | A8670 |  |  |  |  | 69.97d | 0d | SQM-ELÉCTRICO [124.1 h] | 62,990.68 |  | 5872-TK3016 | gl | 1 | 3.4.1 | 7.3.3.1 |  |
| A8690 |  | Conexión de Motor TAG: 5872-MTR-1682 a TPM TAG: 5817-TPM-1502. | 2.18d | 2025-12-28 | 2025-12-31 | A8680 SS |  |  |  |  | 69.97d | 0d | SQM-ELÉCTRICO [4.12 h] | 2,093.77 |  | 5872-TK3016 | gl | 1 | 3.4.2 | 7.3.3.4 |  |
| A8700 |  | Conexión de Motor TAG: 5872-MTR-1685 a TPM TAG: 5817-TPM-1502. | 2.18d | 2025-12-28 | 2025-12-31 | A8690 SS |  |  |  |  | 69.97d | 0d | SQM-ELÉCTRICO [4.12 h] | 2,093.77 |  | 5872-TK3016 | gl | 1 | 3.4.3 | 7.3.3.3 |  |
| A8710 |  | Conexión de Tablero Partidor de Motores TAG: 5817-TPM-1502 a Sala Eléctrica TAG: SEL-4016. | 2.18d | 2025-12-28 | 2025-12-31 | A8700 SS |  |  |  |  | 69.97d | 0d | SQM-ELÉCTRICO [4.12 h] | 2,093.77 |  | 5872-TK3016 | gl | 1 | 3.4.4 | 7.3.3.2 |  |

| ID | WBS | Activity | Duration | Start | Finish | Predecessors | Complete | Remaining | Planned start | Planned finish | Total float | Free float | Resources | Cost | Área | Unidad | Cantidad | Ítem LP | Ìtem EDP |
| --- | --- | --- | --- | --- | --- | --- | --- | --- | --- | --- | --- | --- | --- | --- | --- | --- | --- | --- | --- |
|  | 4 | **PRUEBAS DE FUNCIONAMIENTO Y PEM TK-3016** |  | 2025-12-31 | 2026-01-04 |  |  |  |  |  |  |  |  |  |  |  |  |  |  |
| A8720 |  | Pruebas de Funcionamiento y Puesta en Marcha de Motor TAG: 5872-MTR-1682. | 2.18d | 2025-12-31 | 2026-01-02 | A8710 |  |  |  |  | 69.97d | 0d | SQM-ELÉCTRICO [12 h] | 6,090.96 | 5872-TK3016 | gl | 1 | 3.5.1 | 7.3.4.2 |
| A8730 |  | Pruebas de Funcionamiento y Puesta en Marcha de Motor TAG: 5872-MTR-1685. | 2.18d | 2026-01-02 | 2026-01-04 | A8720 |  |  |  |  | 69.97d | 1.09d | SQM-ELÉCTRICO [12 h] | 6,090.96 | 5872-TK3016 | gl | 1 | 3.5.2 | 7.3.4.1 |
|  | 4 | **OBRAS DE INSTRUMENTACIÓN TK-3016** |  | 2025-11-10 | 2026-01-05 |  |  |  |  |  |  |  |  |  |  |  |  |  |  |
|  | 1 | **MONTAJE DE CANALIZACIÓN Y FERRETERÍA INST. TK-3016** |  | 2025-12-28 | 2026-01-03 |  |  |  |  |  |  |  |  |  |  |  |  |  |  |
| A8740 |  | Canalización y Copla de Conduit de Acero Galvanizado 1"Ø, Conduit ANSI C80.1 | 3.27d | 2025-12-28 | 2026-01-01 | A8670 |  |  |  |  | 68.88d | 0d | SQM-INSTRUMENTACIÓN [100.8 h] |  | 5872-TK3016 | m | 80 | 4.2.1 | 7.4.1.1 |
| A8750 |  | Canalización y Copla de Conduit Flexible Metálico con Cubierta PVC 1" Ø Trabajo Pesado | 2.18d | 2026-01-01 | 2026-01-03 | A8740 |  |  |  |  | 68.88d | 0d | SQM-INSTRUMENTACIÓN [12.6 h] |  | 5872-TK3016 | m | 10 | 4.2.2 | 7.4.1.2 |
|  | 2 | **TENDIDO Y CONEXIONADO DE CABLES INSTRUMENTACIÓN TK-3016** |  | 2025-11-10 | 2025-12-31 |  |  |  |  |  |  |  |  |  |  |  |  |  |  |
| A8760 |  | Cable Multiconductor de Cobre con Aislación de XLPE, 1x3C #12 AWG, Clase 1 kV | 4.36d | 2025-11-10 A | 2025-11-14 A | A8660 SS | 100% |  | 2026-01-16 | 2026-01-20 |  |  | SQM-INSTRUMENTACIÓN [0.37 h] |  | 5872-TK3016 | m | 1 | 4.3.1 | 7.4.2.1 |
| A8770 |  | Cable de Instrumentación (Señales Análogas), 1x1 par #16 AWG Apantallado | 7.64d | 2025-12-01 A | 2025-12-31 | A8760 SS | 10% | 6.84d | 2025-12-26 | 2026-01-01 | 72.86d | 0d | SQM-INSTRUMENTACIÓN [88.8 h] |  | 5872-TK3016 | m | 300 | 4.3.2 | 7.4.2.2 |
| A8780 |  | Conductor Fibra Óptica Multimodo 12 Hilos | 4.36d | 2025-12-25 | 2025-12-29 | A8770 SS |  |  |  |  | 72.86d | 0d | SQM-INSTRUMENTACIÓN [71.7 h] |  | 5872-TK3016 | m | 150 | 4.3.3 | 7.4.2.3 |
|  | 3 | **MONTAJE Y CONEXIONADO DE EQUIPOS E INSTRUMENTOSTK-3016** |  | 2025-12-25 | 2026-01-05 |  |  |  |  |  |  |  |  |  |  |  |  |  |  |
| A8790 |  | Fibra Óptica en TAG: SEL-4016. | 3.27d | 2025-12-25 | 2025-12-28 | A8780 SS |  |  |  |  | 72.86d | 0d | SQM-INSTRUMENTACIÓN [4.12 h] |  | 5872-TK3016 | gl | 1 | 4.4.1 | 7.4.4.3 |
| A8800 |  | Instrumento TAG: FIT-1177 | 2.18d | 2025-12-28 | 2025-12-30 | A8790 |  |  |  |  | 72.86d | 3.99d | SQM-INSTRUMENTACIÓN [21.75 h] |  | 5872-TK3016 | gl | 1 | 4.4.2 | 7.4.4.2 |
| A8810 |  | Instrumento TAG: PIT-1176 | 2.18d | 2026-01-03 | 2026-01-05 | A8800, A8750 |  |  |  |  | 68.88d | 0d | SQM-INSTRUMENTACIÓN [12 h] |  | 5872-TK3016 | gl | 1 | 4.4.3 | 7.4.4.1 |
|  | 4 | **PRUEBAS DE FUNCIONAMIENTO Y PEM INST. TK-3016** |  | 2025-12-01 | 2026-01-05 |  |  |  |  |  |  |  |  |  |  |  |  |  |  |
| A8830 |  | Pruebas de Operación y Puesta en Marcha de Instrumento TAG: FIT-1177 | 2.18d | 2025-12-01 A | 2026-01-05 | A8820 FF | 10% | 1.96d | 2025-12-31 | 2026-01-01 | 68.88d | 0d | SQM-INSTRUMENTACIÓN [12 h] |  | 5872-TK3016 | gl | 1 | 4.5.2 | 7.4.3.2 |
| A8840 |  | Pruebas de Operación y Puesta en Marcha de Instrumento TAG: PIT-1176 | 2.18d | 2025-12-01 A | 2026-01-05 | A8830 SS, A8730 FF | 10% | 1.96d | 2025-12-31 | 2026-01-01 | 68.88d | 30.73d | SQM-INSTRUMENTACIÓN [12 h] |  | 5872-TK3016 | gl | 1 | 4.5.3 | 7.4.3.3 |
| A8820 |  | Pruebas de Funcionamiento de Conectividad de Fibra Óptica desde SEL-4016 a TPM-1502. | 2.18d | 2026-01-03 | 2026-01-05 | A8810 SS |  |  |  |  | 68.88d | 0d | SQM-INSTRUMENTACIÓN [12 h] |  | 5872-TK3016 | gl | 1 | 4.5.1 | 7.4.3.1 |
