# Programa de Seguimiento MEM Patio de Estanques y OOCC Misceláneos FORECAST Rev.16.12.25-2

Schedule from Primavera P6, 2025-06-30 to 2026-03-30, data date 2025-06-30, costs in CLP.

## Calendars

- 14x14: Mon-Sun 08:00-13:00, 14:00-20:00.

## Resources

| Resource | Group | Rate | Notes |
| --- | --- | --- | --- |
| SQM-MECANICA | labor | 1 |  |
| SQM-ESTRUCTURA | labor | 1 |  |
| SQM-PIPING | labor | 1 |  |
| SQM-ELÉCTRICO | labor | 1 | ï»¿ |
| SQM-INSTRUMENTACIÓN | labor | 1 |  |
| SQM-OOCC | labor | 1 |  |

## Schedule

| ID | WBS | Activity | Type | Duration | Start | Finish | Predecessors | Total float | Free float | Constraint | Resources | Cost | Unidad | Cantidad | Área | Ítem LP | Ìtem EDP |
| --- | --- | --- | --- | --- | --- | --- | --- | --- | --- | --- | --- | --- | --- | --- | --- | --- | --- |
|  | 1 | **HITOS** |  |  | 2025-06-30 | 2026-03-30 |  |  |  |  |  |  |  |  |  |  |  |
| A1000 |  | Inicio de Proyecto | milestone | 0d | 2025-06-30 | 2025-06-30 |  | 0d |  |  |  |  | gl | 0 |  |  |  |
| A1010 |  | Movilización, Instalación de Faenas y Proceso de Acreditación MEM Patio de Estanques |  | 15.27d | 2025-06-30 | 2025-07-15 | A1000 SS | 0d |  |  |  |  | gl | 0 |  |  |  |
| A1020 |  | Adjudicación OOCC Misceláneos Addendum 01 | milestone | 0d | 2025-08-28 | 2025-08-28 |  | 61d | 0d | start on or after 2025-08-28 |  |  | gl | 0 |  |  |  |
| A1030 |  | Proceso de Acreditación OOCC Misceláneos |  | 15.27d | 2025-08-28 | 2025-09-12 | A1020 | 61d | 0d |  |  |  | gl | 0 |  |  |  |
| A1040 |  | Desmovilización |  | 15.27d | 2026-03-15 | 2026-03-30 | A1080 | 0d |  |  |  |  | gl | 0 |  |  |  |
| A1050 |  | Término de Proyecto | milestone | 0d | 2026-03-30 | 2026-03-30 | A1040 FF | 0d |  |  |  |  | gl | 0 |  |  |  |
|  | 2 | **HITOS CONTRACTUALES** |  |  | 2025-07-15 | 2026-03-15 |  |  |  |  |  |  |  |  |  |  |  |
| A1060 |  | Inicio Constructuvo Contractual MEM Patio de Estanques | milestone | 0d | 2025-07-15 | 2025-07-15 | A1010 | 0d |  |  |  |  | gl | 0 |  |  |  |
| A1070 |  | Inicio Constructuvo Contractual OOCC Misceláneos (Addendum 01) | milestone | 0d | 2025-09-12 | 2025-09-12 | A1030 | 61d | 0d |  |  |  | gl | 0 |  |  |  |
| A1090 |  | Término Constructivo Contractual OOCC Misceláneos (Addendum 01) | milestone | 0d | 2026-02-05 | 2026-02-05 | A4690 FF, A5170 FF, A7440, A3910 FF, A3980 FF, A8330, A8840, A4060, A4480, A5950, A6490, A6600, A8550, A7670 FF | 53.45d |  |  |  |  | un | 0 |  |  |  |
| A1080 |  | Término Constructivo Contractual MEM Patio de Estanques | milestone | 0d | 2026-03-15 | 2026-03-15 | A2180 FF, A2060 FF, A1940 FF, A2640, A2720, A3250 FF, A3280, A2070, A3940, A1910 | 0d |  |  |  |  | gl | 0 |  |  |  |
|  | 3 | **CONSTRUCCIÓN** |  |  | 2025-07-15 | 2026-03-15 |  |  |  |  |  |  |  |  |  |  |  |
|  | 1 | **CONTRATO SC15682 - MEM PATIO DE ESTANQUES** |  |  | 2025-07-15 | 2026-03-15 |  |  |  |  |  |  |  |  |  |  |  |
|  | 1 | **SECTOR PATIO DE ESTANQUES** |  |  | 2025-07-15 | 2026-03-15 |  |  |  |  |  |  |  |  |  |  |  |
|  | 1 | **OBRAS MECÁNICAS PATIO DE ESTANQUES** |  |  | 2025-07-15 | 2025-11-17 |  |  |  |  |  |  |  |  |  |  |  |
|  | 1 | **MONTAJE DE ESTANQUES** |  |  | 2025-07-15 | 2025-11-14 |  |  |  |  |  |  |  |  |  |  |  |
|  | 1 | **MONTAJE DE ESTANQUES RED CONTRA INCENDIOS (RCI)** |  |  | 2025-07-15 | 2025-11-06 |  |  |  |  |  |  |  |  |  |  |  |
| A1100 |  | Estanques de Agua para RCI TAG: 5764-EST-001 |  | 106.91d | 2025-07-15 | 2025-10-30 | A1060 SS | 0d |  |  | SQM-MECANICA [4320 h] | 4,320 | un | 1 | 5764-RCI | 1.1.26 | 1.1.27 |
| A1110 |  | Estanques de Agua para RCI TAG: 5764-EST-015 |  | 92.73d | 2025-08-06 | 2025-11-06 | A1100 SS+21.82d | 0d |  |  | SQM-MECANICA [4320 h] | 4,320 | un | 1 | 5764-RCI | 1.1.26 | 1.1.27 |
|  | 2 | **MONTAJE DE ESTANQUES DE AGUA, ÁREA 1000** |  |  | 2025-08-10 | 2025-11-14 |  |  |  |  |  |  |  |  |  |  |  |
| A1130 |  | Estanque Agua Industrial y Plataforma Superior TAG: 5817-EST-1041 |  | 87.27d | 2025-08-10 | 2025-11-05 | A1110 SS+4.36d | 0d |  |  | SQM-MECANICA [3936 h] | 3,936 | un | 1 | 5817-1000 | 1.1.1 | 1.1.2 |
| A1140 |  | Estanque Agua Potable y Plataforma Superior TAG: 5817-EST-1071 |  | 87.27d | 2025-08-14 | 2025-11-10 | A1130 SS+4.36d | 0d |  |  | SQM-MECANICA [996 h] | 996 | un | 1 | 5817-1000 | 1.1.2 | 1.1.3 |
| A1120 |  | Estanque Agua Ultrapura y Plataforma Superior TAG: 5817-EST-1001 |  | 87.27d | 2025-08-19 | 2025-11-14 | A1140 SS+4.36d | 0d |  |  | SQM-MECANICA [4164 h] | 4,164 | un | 1 | 5817-1000 | 1.1.1 | 1.1.1 |

Notes:
- A1110: Corregir: No se encuentra piping ( interconexión) para poder realizar pruebas de estanqueidad / línea 10621 / se envía SDC
- A1120: Corregir: Se desvían recursos para atender urgencias de la planta, justifica SDC 5 días de detención de trabajos// Interferencia de boquilla por soldar que choca con estructura de plataformas de operaciones

| ID | WBS | Activity | Duration | Start | Finish | Predecessors | Total float | Free float | Resources | Cost | Área | Unidad | Cantidad | Ítem LP | Ìtem EDP |
| --- | --- | --- | --- | --- | --- | --- | --- | --- | --- | --- | --- | --- | --- | --- | --- |
|  | 2 | **MONTAJE DE BOMBAS** |  | 2025-08-06 | 2025-11-17 |  |  |  |  |  |  |  |  |  |  |
| A1170 |  | Bomba Centrífuga y Motor TAG: 5817-BBA-1052; 5817-MTR-1053 | 5.45d | 2025-08-06 | 2025-08-11 | A1110 SS | 46.91d | 0d | SQM-MECANICA [139.9 h] | 139.9 | TK-1041 | un | 1 | 1.1.4 | 1.1.6 |
| A1150 |  | Bomba Centrífuga y Motor TAG: 5817-BBA-1042; 5817-MTR-1043 | 5.45d | 2025-08-11 | 2025-08-16 | A1170 | 46.91d | 0d | SQM-MECANICA [98.25 h] | 98.25 | TK-1041 | un | 1 | 1.1.3 | 1.1.4 |
| A1190 |  | Bomba Centrífuga y Motor TAG: 5817-BBA-1074; 5817-MTR-1075 | 5.45d | 2025-08-17 | 2025-08-22 | A1150 | 46.91d | 0d | SQM-MECANICA [139.9 h] | 139.9 | TK-1071 | un | 1 | 1.1.7 | 1.1.8 |
| A1210 |  | Bomba Centrífuga y Motor TAG: 5817-BBA-1080; 5817-MTR-1081 | 5.45d | 2025-08-22 | 2025-08-27 | A1190 | 46.91d | 0d | SQM-MECANICA [139.9 h] | 139.9 | TK-1071 | un | 1 | 1.1.9 | 1.1.10 |
| A1220 |  | Bomba Centrífuga y Motor TAG: 5817-BBA-1083; 5817-MTR-1084 | 5.45d | 2025-08-27 | 2025-09-02 | A1210 | 46.91d | 0d | SQM-MECANICA [139.9 h] | 139.9 | TK-1071 | un | 1 | 1.1.10 | 1.1.11 |
| A1160 |  | Bomba Centrífuga y Motor TAG: 5817-BBA-1072; 5817-MTR-1073 | 5.45d | 2025-09-02 | 2025-09-07 | A1220 | 46.91d | 0d | SQM-MECANICA [98.25 h] | 98.25 | TK-1071 | un | 1 | 1.1.6 | 1.1.5 |
| A1180 |  | Bomba Centrífuga y Motor TAG: 5817-BBA-1055; 5817-MTR-1056 | 5.45d | 2025-09-07 | 2025-09-13 | A1160 | 46.91d | 0d | SQM-MECANICA [139.9 h] | 139.9 | TK-1041 | un | 1 | 1.1.5 | 1.1.7 |
| A1200 |  | Bomba Centrífuga y Motor TAG: 5817-BBA-1077; 5817-MTR-1078 | 5.45d | 2025-09-13 | 2025-09-18 | A1180 | 46.91d | 0d | SQM-MECANICA [139.9 h] | 139.9 | TK-1071 | un | 1 | 1.1.8 | 1.1.9 |
| A1230 |  | Bomba Centrífuga y Motor TAG: 5817-BBA-4003; 5817-MTR-4004 | 0d | 2025-09-18 | 2025-09-18 | A1200 | 46.91d | 0d | SQM-MECANICA |  | TK-3034 | un | 0 | 1.1.11 | 1.1.12 |
| A1240 |  | Bomba Centrífuga y Motor TAG: 5817-BBA-4006; 5817-MTR-4007 | 0d | 2025-09-18 | 2025-09-18 | A1230 | 46.91d | 0d | SQM-MECANICA |  | TK-3034 | un | 0 | 1.1.12 | 1.1.13 |
| A1250 |  | Bomba Centrífuga y Motor TAG: 5817-BBA-4009; 5817-MTR-4010 | 5.45d | 2025-09-18 | 2025-09-24 | A1240 | 46.91d | 0d | SQM-MECANICA [139.9 h] | 139.9 | TK-4001/2 | un | 1 | 1.1.13 | 1.1.14 |
| A1260 |  | Bomba Centrífuga y Motor TAG: 5817-BBA-4012; 5817-MTR-4013 | 5.45d | 2025-09-24 | 2025-09-29 | A1250 | 46.91d | 0d | SQM-MECANICA [139.9 h] | 139.9 | TK-4001/2 | un | 1 | 1.1.14 | 1.1.15 |
| A1270 |  | Bomba Centrífuga y Motor TAG: 5817-BBA-4015; 5817-MTR-4016 | 5.45d | 2025-09-29 | 2025-10-05 | A1260 | 46.91d | 0d | SQM-MECANICA [139.9 h] | 139.9 | TK-4001/2 | un | 1 | 1.1.15 | 1.1.16 |
| A1280 |  | Bomba Centrífuga y Motor TAG: 5817-BBA-4018; 5817-MTR-4019 | 5.45d | 2025-10-05 | 2025-10-10 | A1270 | 46.91d | 0d | SQM-MECANICA [139.9 h] | 139.9 | TK-4001/2 | un | 1 | 1.1.16 | 1.1.17 |
| A1290 |  | Bomba Centrífuga y Motor TAG: 5817-BBA-4021; 5817-MTR-4022 | 5.45d | 2025-10-10 | 2025-10-15 | A1280 | 46.91d | 0d | SQM-MECANICA [139.9 h] | 139.9 | TK-4001/2 | un | 1 | 1.1.17 | 1.1.18 |
| A1300 |  | Bomba Centrífuga y Motor TAG: 5817-BBA-4024; 5817-MTR-4025 | 5.45d | 2025-10-16 | 2025-10-21 | A1290 | 46.91d | 0d | SQM-MECANICA [139.9 h] | 139.9 | TK-4001/2 | un | 1 | 1.1.18 | 1.1.19 |
| A1310 |  | Bomba Centrífuga y Motor TAG: 5817-BBA-5002; 5817-MTR-5003 | 0d | 2025-10-21 | 2025-10-21 | A1300 | 46.91d | 0d | SQM-MECANICA |  | TK-3033 | un | 0 | 1.1.19 | 1.1.20 |
| A1320 |  | Bomba Centrífuga y Motor TAG: 5817-BBA-5005; 5817-MTR-5006 | 0d | 2025-10-21 | 2025-10-21 | A1310 | 46.91d | 0d | SQM-MECANICA |  | TK-3033 | un | 0 | 1.1.20 | 1.1.21 |
| A1330 |  | Bomba Centrífuga y Motor TAG: 5817-BBA-5008; 5817-MTR-5009 | 5.45d | 2025-10-21 | 2025-10-26 | A1320 | 46.91d | 0d | SQM-MECANICA [139.9 h] | 139.9 | TK-5001 | un | 1 | 1.1.21 | 1.1.22 |
| A1340 |  | Bomba Centrífuga y Motor TAG: 5817-BBA-5011; 5817-MTR-5012 | 5.45d | 2025-10-26 | 2025-11-01 | A1330 | 46.91d | 0d | SQM-MECANICA [139.9 h] | 139.9 | TK-5001 | un | 1 | 1.1.22 | 1.1.23 |
| A1350 |  | Bomba Sumidero y Motor TAG: 5817-BBS-1050; 5817-MTR-1051 | 5.45d | 2025-11-01 | 2025-11-06 | A1340 | 46.91d | 0d | SQM-MECANICA [139.9 h] | 139.9 | TK-1041 | un | 1 | 1.1.23 | 1.1.24 |
| A1360 |  | Bomba Sumidero y Motor TTAG: 5817-BBS-4026; 5817-MTR-4027 | 5.45d | 2025-11-06 | 2025-11-12 | A1350 | 46.91d | 0d | SQM-MECANICA [139.9 h] | 139.9 | TK-4001/2 | un | 1 | 1.1.24 | 1.1.25 |
| A1370 |  | Bomba Sumidero y Motor TAG: 5817-BBS-5014; 5817-MTR-5015 | 5.45d | 2025-11-12 | 2025-11-17 | A1360 | 46.91d | 0d | SQM-MECANICA [139.9 h] | 139.9 | TK-5001 | un | 1 | 1.1.25 | 1.1.26 |
| A1380 |  | Alineamiento digital de Bombas de Proyecto | 0d | 2025-11-17 | 2025-11-17 | A1370 | 52.36d | 0d | SQM-MECANICA |  | PTK | un | 0 |  |  |

| ID | WBS | Activity | Duration | Start | Finish | Predecessors | Total float | Free float | Resources | Cost | Área | Unidad | Cantidad | Ítem LP | Ìtem EDP |
| --- | --- | --- | --- | --- | --- | --- | --- | --- | --- | --- | --- | --- | --- | --- | --- |
|  | 3 | **OBRAS ESTRUCTURALES PATIO DE ESTANQUES** |  | 2025-11-03 | 2026-02-20 |  |  |  |  |  |  |  |  |  |  |
|  | 1 | **MONTAJE DE ESTRUCTURA DE ACCESO E INTERCONEXIÓN DE ESTANQUES** |  | 2025-11-03 | 2025-11-14 |  |  |  |  |  |  |  |  |  |  |
| A1430 |  | Montaje de Acceso e Interconexión de Estanques TAG: 5817-EST-1001; 5817-EST-1041; 5817-EST-1071 | 10.91d | 2025-11-03 | 2025-11-14 | A1120 FF | 0d |  | SQM-ESTRUCTURA [551.54 h] | 551.54 | PTK | kg | 3883 | 1.2.1 | 1.2.1 |
|  | 2 | **MONTAJE DE PARRÓN PATIO DE ESTANQUES ÁREA 7000** |  | 2025-11-03 | 2025-12-23 |  |  |  |  |  |  |  |  |  |  |
| A1440 |  | Parron Patio de Estanques Estructura liviana | 28.36d | 2025-11-03 | 2025-12-01 | A1430 SS | 48d | 34.91d | SQM-ESTRUCTURA [1948.36 h] | 1,948.36 | 7000 | Kg | 23153.73 | 1.2.2 | 1.2.2 |
| A1450 |  | Parron Patio de Estanques Estructura Mediana | 24d | 2025-11-14 | 2025-12-08 | A1430 | 13.09d | 0d | SQM-ESTRUCTURA [1644.38 h] | 1,644.38 | 7000 | Kg | 18181.01 | 1.2.3 | 1.2.3 |
| A1460 |  | Parron Patio de Estanques Estructura Pesada | 30.55d | 2025-11-14 | 2025-12-14 | A1430 | 0d |  | SQM-ESTRUCTURA [2680.79 h] | 2,680.79 | 7000 | Kg | 46326.89 | 1.2.4 | 1.2.4 |
| A1470 |  | Parron Patio de Estanques Planchas | 15.27d | 2025-12-08 | 2025-12-23 | A1450, A1440 SS | 13.09d | 0d | SQM-ESTRUCTURA [888.32 h] | 888.32 | 7000 | Kg | 366.72 | 1.2.5 | 1.2.5 |
|  | 3 | **MONTAJE PLATAFORMA DE OPERACIÓN ÁREA 4000** |  | 2025-12-23 | 2026-01-26 |  |  |  |  |  |  |  |  |  |  |
| A1490 |  | Plataforma de Operación área 4000 Estructura Mediana | 10.91d | 2025-12-23 | 2026-01-03 | A1470 | 13.09d | 0d | SQM-ESTRUCTURA [764.38 h] | 764.38 | BREF 1 Y 2 | Kg | 7464.24 | 1.2.7 | 1.2.7 |
| A1480 |  | Plataforma de Operación área 4000 Estructura Liviana | 5.45d | 2026-01-03 | 2026-01-09 | A1490 | 13.09d | 0d | SQM-ESTRUCTURA [258.65 h] | 258.65 | BREF 1 Y 2 | Kg | 2364.96 | 1.2.6 | 1.2.6 |
| A1500 |  | Plataforma de Operación área 4000 Planchas | 2.18d | 2026-01-09 | 2026-01-11 | A1480 | 13.09d | 0d | SQM-ESTRUCTURA [12.22 h] | 12.22 | BREF 1 Y 2 | Kg | 74.8 | 1.2.9 | 1.2.9 |
| A1510 |  | Plataforma de Operación área 4000 Grating | 9.82d | 2026-01-11 | 2026-01-21 | A1500 | 13.09d | 0d | SQM-ESTRUCTURA [516.55 h] | 516.55 | BREF 1 Y 2 | M2 | 69 | 1.2.10 | 1.2.10 |
| A1520 |  | Plataforma de Operación área 4000 Barandas FRP | 5.45d | 2026-01-21 | 2026-01-26 | A1510 | 13.09d | 0d | SQM-ESTRUCTURA [109.98 h] | 109.98 | BREF 1 Y 2 | ML | 31.025 | 1.2.11 | 1.2.11 |
|  | 4 | **MONTAJE PLATAFORMA DE OPERACIÓN ÁREA 5000** |  | 2026-01-21 | 2026-02-16 |  |  |  |  |  |  |  |  |  |  |
| A1540 |  | Plataforma de Operación área 5000 Estructura Mediana | 8.73d | 2026-01-21 | 2026-01-29 | A1520 SS | 13.09d | 0d | SQM-ESTRUCTURA [367 h] | 367 | ALTO BORO | Kg | 3612.18 | 1.2.13 | 1.2.13 |
| A1530 |  | Plataforma de Operación área 5000 Estructura Liviana | 4.36d | 2026-01-29 | 2026-02-03 | A1540 | 13.09d | 0d | SQM-ESTRUCTURA [131.39 h] | 131.39 | ALTO BORO | kg | 1283.42 | 1.2.12 | 1.2.12 |
| A1550 |  | Plataforma de Operación área 5000. Planchas | 3.27d | 2026-02-03 | 2026-02-06 | A1530 | 13.09d | 0d | SQM-ESTRUCTURA [5.4 h] | 5.4 | ALTO BORO | Kg | 51.13 | 1.2.15 | 1.2.15 |
| A1560 |  | Plataforma de Operación área 5000. Grating T3232 | 6.55d | 2026-02-06 | 2026-02-12 | A1550 | 13.09d | 0d | SQM-ESTRUCTURA [231.45 h] | 231.45 | ALTO BORO | m2 | 34 | 1.2.16 | 1.2.16 |
| A1570 |  | Plataforma de Operación área 5000. Barandas FRP Grado 3 | 3.27d | 2026-02-13 | 2026-02-16 | A1560, A1520 | 13.09d | 0d | SQM-ESTRUCTURA [61.1 h] | 61.1 | ALTO BORO | ML | 11 | 1.2.17 | 1.2.17 |
|  | 5 | **MONTAJE PARRÓN DESDE PATIO DE ESTANQUES A L5 LiOH** |  | 2025-12-15 | 2026-02-20 |  |  |  |  |  |  |  |  |  |  |
| A1580 |  | Estructura A36 Liviana 0@30 Kg /m Parrón desde Patio de Estanques hasta L5 LiOH. | 41.45d | 2025-12-15 | 2026-01-25 | A1590 SS | 48d | 26.18d | SQM-ESTRUCTURA [5681.6 h] | 5,681.6 | PTK A L5 | kg | 43114.59 | 1.2.19 | 1.2.19 |
| A1590 |  | Estructura A36 Mediana 31@60 Kg /m Parrón desde Patio de Estanques hasta L5 LiOH. | 67.64d | 2025-12-15 | 2026-02-20 | A1600 SS, A1460 SS | 0d |  | SQM-ESTRUCTURA [6500 h] | 6,500 | PTK A L5 | kg | 67224.37 | 1.2.20 | 1.2.20 |
| A1600 |  | Estructura A36 Pesada: > 61 Kg /m Parrón desde Patio de Estanques hasta L5 LiOH. | 60d | 2025-12-15 | 2026-02-12 | A1460 | 0d |  | SQM-ESTRUCTURA [2646 h] | 2,646 | PTK A L5 | kg | 66752.48 | 1.2.21 | 1.2.21 |
| A1610 |  | Conexiones Parrón desde Patio de Estanques hasta L5 LiOH. | 21.82d | 2026-01-29 | 2026-02-20 | A1580 FF, A1590 FF | 21.82d |  | SQM-ESTRUCTURA [3696.05 h] | 3,696.05 | PTK A L5 | kg | 9072.82 | 1.2.22 | 1.2.22 |

Notes:
- A1460: Corregir: Falta 1 viga V2021 // por packing son 5 pero por plano son 6 // eje K1 no tiene fundaciones
- A1470: Corregir: R FF
- A1580: Corregir: R FF
- A1590: Corregir: R FF
- A1600: Corregir: Faltan fundaciones y suministros
- A1610: Corregir: R FF

| ID | WBS | Activity | Type | Duration | Start | Finish | Predecessors | Total float | Free float | Constraint | Resources | Cost | Cantidad | Área | Unidad | Ítem LP | Ìtem EDP | Corregir |
| --- | --- | --- | --- | --- | --- | --- | --- | --- | --- | --- | --- | --- | --- | --- | --- | --- | --- | --- |
|  | 6 | **MONTAJE PARRÓN DESDE L5 LiOH A L3 LiOH** |  |  | 2025-12-15 | 2025-12-22 |  |  |  |  |  |  |  |  |  |  |  |  |
| A1619 |  | Entrega de fundaciones | milestone | 0d | 2025-12-15 | 2025-12-15 | A1060 SS | 0d |  | mandatory start 2025-12-15 |  |  | 0 |  |  |  |  |  |
| A1620 |  | Estructura liviana: 0@30 kg/m Desde L5 LiOH hasta L3 LiOH |  | 0d | 2025-12-15 | 2025-12-15 | A1619 SS | 53.45d | 0d |  | SQM-ESTRUCTURA |  | 2000 | L5-L3 | kg | 1.2.23 | 1.2.23 |  |
| A1630 |  | Planchas Desde L5 LiOH hasta L3 LiOH |  | 0d | 2025-12-22 | 2025-12-22 | A1620 SS+7.64d | 68.73d | 0d |  | SQM-ESTRUCTURA |  | 1800 | L5-L3 | kg | 1.2.24 | 1.2.24 |  |
|  | 4 | **OBRAS PIPING PATIO DE ESTANQUES** |  |  | 2025-09-10 | 2026-03-15 |  |  |  |  |  |  |  |  |  |  |  |  |
|  | 1 | **MONTAJE DE CAÑERÍAS ACERO INOXIDABLE PATIO DE ESTANQUES** |  |  | 2025-11-17 | 2026-01-06 |  |  |  |  |  |  |  |  |  |  |  |  |
| A1650 |  | Ø 6" - Cañería Acero Inoxidable |  | 10.91d | 2025-11-17 | 2025-11-28 | A1380, A1920 SS | 52.36d | 0d |  | SQM-PIPING [593.28 h] | 593.28 | 52.7833609926 | PTK | m | 1.9.1.1 | 1.9.1.1 |  |
| A1640 |  | Ø 8" - Cañería Acero Inoxidable |  | 7.64d | 2025-11-28 | 2025-12-06 | A1650, A1380 | 52.36d | 0d |  | SQM-PIPING [153.47 h] | 153.47 | 10 | PTK | m | 1.9.1.2 | 1.9.1.2 |  |
| A1660 |  | Ø 4" - Cañería Acero Inoxidable |  | 0d | 2025-12-06 | 2025-12-06 | A1640 | 52.36d | 0d |  | SQM-PIPING |  | 0 | PTK | m | 1.9.1.4 | 1.9.1.4 |  |
| A1680 |  | Ø 2" - Cañería Acero Inoxidable |  | 16.36d | 2025-12-06 | 2025-12-22 | A1660, A1640 | 52.36d | 0d |  | SQM-PIPING [556.61 h] | 556.61 | 159.3 | PTK | m | 1.9.1.6 | 1.9.1.6 |  |
| A1670 |  | Ø 3" - Cañería Acero Inoxidable |  | 7.64d | 2025-12-22 | 2025-12-30 | A1680 | 52.36d | 0d |  | SQM-PIPING [1.03 h] | 1.03 | 0.15566066355 | PTK | m | 1.9.1.3 | 1.9.1.3 |  |
| A1690 |  | Ø 1" - Cañería Acero Inoxidable |  | 7.64d | 2025-12-30 | 2026-01-06 | A1670 | 52.36d | 0d |  | SQM-PIPING [0.14 h] | 0.14 | 5 | PTK | m | 1.9.1.5 | 1.9.1.5 |  |
|  | 2 | **MONTAJE DE CAÑERÍAS HDPE PN10 (P1) PATIO DE ESTANQUES** |  |  | 2025-09-10 | 2026-03-14 |  |  |  |  |  |  |  |  |  |  |  |  |
| A1720 |  | Ø 160 mm - Cañería HDPE, PE 100, PN10 |  | 185.45d | 2025-09-10 | 2026-03-14 | A1590 FF+21.82d, A1610 FF | 0d |  |  | SQM-PIPING [9441.54 h] | 9,441.54 | 7308.3 | PTK | m | 1.9.2.8 | 1.9.2.8 |  |
| A1700 |  | Ø 250 mm - Cañería HDPE, PE 100, PN10 |  | 15.27d | 2025-10-02 | 2025-10-18 | A1910 | 64.36d | 0d |  | SQM-PIPING [730.65 h] | 730.65 | 10 | PTK | m | 1.9.2.4 | 1.9.2.4 |  |
| A1710 |  | Ø 200 mm - Cañería HDPE, PE 100, PN10 |  | 7.64d | 2025-10-18 | 2025-10-25 | A1700 | 64.36d | 0d |  | SQM-PIPING [52.34 h] | 52.34 | 23.2621332888 | PTK | m | 1.9.2.9 | 1.9.2.9 | R FF |
| A1730 |  | Ø 110 mm - Cañería HDPE, PE 100, PN10 |  | 45.82d | 2025-10-25 | 2025-12-10 | A1710 | 64.36d | 0d |  | SQM-PIPING [726.45 h] | 726.45 | 3925 | PTK | m | 1.9.2.7 | 1.9.2.7 |  |
| A1740 |  | Ø 90 mm - Cañería HDPE, PE 100, PN10 |  | 15.27d | 2025-12-10 | 2025-12-25 | A1730 | 64.36d | 12d |  | SQM-PIPING [1.41 h] | 1.41 | 210 | PTK | m | 1.9.2.6 | 1.9.2.6 |  |
| A1750 |  | Ø 63 mm - Cañería HDPE, PE 100, PN10 |  | 15.27d | 2026-02-27 | 2026-03-14 | A1720 FF | 0d |  |  | SQM-PIPING [325.14 h] | 325.14 | 189.8 | PTK | m | 1.9.2.5 | 1.9.2.5 |  |
| A1760 |  | Ø 50 mm - Cañería HDPE, PE 100, PN10 |  | 3.27d | 2026-02-27 | 2026-03-02 | A1750 SS | 0d |  |  | SQM-PIPING [0.52 h] | 0.52 | 0.3854218011 | PTK | m | 1.9.2.1 | 1.9.2.1 |  |
| A1770 |  | Ø 40 mm - Cañería HDPE, PE 100, PN10 |  | 5.45d | 2026-03-02 | 2026-03-07 | A1760 | 0d |  |  | SQM-PIPING [1.81 h] | 1.81 | 1.33399300125 | PTK | m | 1.9.2.2 | 1.9.2.2 | R FF |
| A1780 |  | Ø 32 mm - Cañería HDPE, PE 100, PN10 |  | 3.27d | 2026-03-07 | 2026-03-11 | A1770 | 0d |  |  | SQM-PIPING [1.03 h] | 1.03 | 0.75790213065 | PTK | m | 1.9.2.3 | 1.9.2.3 | R FF |
|  | 3 | **MONTAJE DE CAÑERÍAS HDPE PN16 (P7) PATIO DE ESTANQUES** |  |  | 2025-11-17 | 2026-01-19 |  |  |  |  |  |  |  |  |  |  |  |  |
| A1790 |  | Ø 90 mm - Cañería HDPE, PE 100, PN16 |  | 3.27d | 2025-11-17 | 2025-11-20 | A1110 SS, A1380 | 89.45d | 0d |  | SQM-PIPING [0.1 h] | 0.1 | 0.07875 | PTK | m | 1.9.3.4 | 1.9.3.4 |  |
| A1810 |  | Ø 63 mm - Cañería HDPE, PE 100, PN16 |  | 3.27d | 2025-11-21 | 2025-11-24 | A1790 | 89.45d | 0d |  | SQM-PIPING [19.89 h] | 19.89 | 14.1875002878 | PTK | m | 1.9.3.3 | 1.9.3.3 |  |
| A1820 |  | Ø 40 mm - Cañería HDPE, PE 100, PN16 |  | 3.27d | 2025-11-24 | 2025-11-27 | A1810 | 89.45d | 0d |  | SQM-PIPING [0.17 h] | 0.17 | 0.1291143 | PTK | m | 1.9.3.1 | 1.9.3.1 | R FF |
| A1800 |  | DN 75 mm - Cañería HDPE, PE 100, PN16 |  | 13.09d | 2026-01-06 | 2026-01-19 | A1730, A1860 | 52.36d |  |  | SQM-PIPING [782.76 h] | 782.76 | 730 | PTK | m | 1.9.3.2 | 1.9.3.2 |  |

| ID | WBS | Activity | Duration | Start | Finish | Predecessors | Total float | Free float | Resources | Cost | Área | Unidad | Cantidad | Ítem LP | Ìtem EDP |
| --- | --- | --- | --- | --- | --- | --- | --- | --- | --- | --- | --- | --- | --- | --- | --- |
|  | 4 | **MONTAJE DE FITTING, VÁLVULAS Y FILTROS LÍNEAS PATIO DE ESTANQUES** |  | 2025-11-27 | 2026-01-06 |  |  |  |  |  |  |  |  |  |  |
| A1870 |  | DN 2" - Conjunto Portafiltro y Filtro de Insolubles | 3.27d | 2025-11-27 | 2025-11-30 | A1820 | 89.45d | 37.09d | SQM-PIPING [31.8 h] | 31.8 | PTK | un | 3 | 1.8.1 | 1.8.1 |
| A1830 |  | Montaje de Fitting Acero Inoxidable GL | 0d | 2026-01-06 | 2026-01-06 | A1740 SS, A1690, A1870 | 52.36d | 0d | SQM-PIPING |  | PTK | un | 219 | 99.1 | 99.1 |
| A1840 |  | Montaje de Fitting HDPE (P1) GL | 0d | 2026-01-06 | 2026-01-06 | A1740, A1830 | 52.36d | 0d | SQM-PIPING |  | PTK | un | 1550 | 99.2 | 99.2 |
| A1850 |  | Montaje de Fitting HDPE (P7) GL | 0d | 2026-01-06 | 2026-01-06 | A1740, A1840 | 52.36d | 0d | SQM-PIPING |  | PTK | un | 0 | 99.3 | 99.3 |
| A1860 |  | Válvulas Patio de Estanques.(Global) | 0d | 2026-01-06 | 2026-01-06 | A1740, A1850 | 52.36d | 0d | SQM-PIPING |  | PTK | un | 168 | 99.12 | 99.12 |
|  | 5 | **MONTAJE DE SOPORTACIÓN PIPING PATIO DE ESTANQUES** |  | 2025-09-10 | 2025-11-22 |  |  |  |  |  |  |  |  |  |  |
| A1880 |  | P1.3 x 37 un. - Pedestales para Tuberías Elevadas | 15.27d | 2025-09-10 | 2025-09-25 | A1720 SS | 64.36d | 0d | SQM-PIPING [486.26 h] | 486.26 | PTK | kg | 1279.3 | 1.5.1 | 1.5.1 |
| A1890 |  | P1.6 x 51 un. - Pedestales para Tuberías Elevadas | 0d | 2025-09-25 | 2025-09-25 | A1880 | 64.36d | 0d | SQM-PIPING |  | PTK | kg | 0 | 1.5.2 | 1.5.2 |
| A1900 |  | P1.9 x 3 un. - Pedestales para Tuberías Elevadas | 0d | 2025-09-25 | 2025-09-25 | A1890 | 64.36d | 0d | SQM-PIPING |  | PTK | kg | 0 | 1.5.3 | 1.5.3 |
| A1910 |  | P4 x 40 un. - Pedestales para Tuberías Elevadas | 7.64d | 2025-09-25 | 2025-10-02 | A1900 | 64.36d | 0d | SQM-PIPING [27.5 h] | 27.5 | PTK | kg | 468.8 | 1.5.4 | 1.5.4 |
| A1920 |  | U3 x 5454 un. - Abrazadera para Tuberías Elevadas | 50.18d | 2025-10-02 | 2025-11-22 | A1910 | 98.18d | 45.82d | SQM-PIPING [1285.61 h] | 1,285.61 | PTK | kg | 5247.4 | 1.5.5 | 1.5.5 |
|  | 6 | **TIE-IN DE LÍNEAS ASOCIADAS A PATIO DE ESTANQUES** |  | 2025-10-18 | 2026-03-15 |  |  |  |  |  |  |  |  |  |  |
| A2000 |  | Tie-In N° 4405A - Conexión de equipo existente TAG: 250-BB-5759-P5-3156 a equipo proyectado TAG: 5817-BBA-4006 | 0d | 2025-10-18 | 2025-10-18 | A1700 | 148.36d | 0d | SQM-PIPING |  | PTK | un | 0 | 1.10.8 | 1.10.8 |
| A2040 |  | Tie-In N° 5403A - TAG: 250-LMB-5759-P5-3356 a Succión TAG: 5817-BBA-5002 | 0d | 2025-10-18 | 2025-10-18 | A2000 | 148.36d | 0d | SQM-PIPING |  | PTK | un | 0 | 1.10.12 | 1.10.12 |
| A2060 |  | Tie-In N° 5404A - TAG: 250-LMB-5759-P5-3355 a Succión TAG: 5817-BBA-5005 | 0d | 2025-10-18 | 2025-10-18 | A2040 | 148.36d |  | SQM-PIPING |  | PTK | un | 0 | 1.10.14 | 1.10.14 |
| A1930 |  | Tie-In N° 1442 - Línea proyectada TAG: 110-W-5817-P1-1715 con existente TAG: 50-WW-5752-IA-7575 | 2.18d | 2026-03-11 | 2026-03-13 | A1730, A1780 | 0d |  | SQM-PIPING [10.5 h] | 10.5 | PTK | un | 1 | 1.10.1 | 1.10.1 |
| A1950 |  | Tie-In N° 4401 - Línea proyectada TAG: 160-BREF-5817-P1-4504 con existente TAG: 160-BB-5759-P5-3153 | 2.18d | 2026-03-12 | 2026-03-14 | A1720 FF | 0d |  | SQM-PIPING [15.75 h] | 15.75 | PTK | un | 1 | 1.10.3 | 1.10.3 |
| A1960 |  | Tie-In N° 4402 - Línea proyectada TAG: 160-BREF-5817-P1-4520 con equipo existente TAG: 5735-EST-5250 | 2.18d | 2026-03-12 | 2026-03-14 | A1950 SS | 0d |  | SQM-PIPING [15.75 h] | 15.75 | PTK | un | 1 | 1.10.4 | 1.10.4 |
| A1970 |  | Tie-In N° 4403 - Línea proyectada TAG: 160-BREF-5817-P1-4524 con equipo existente TAG: 5759-EST-001 | 2.18d | 2026-03-12 | 2026-03-14 | A1960 SS | 0d |  | SQM-PIPING [15.75 h] | 15.75 | PTK | un | 1 | 1.10.5 | 1.10.5 |
| A1980 |  | Tie-In N° 4404A - Conexión de equipo existente TAG: 250-BB-5759-P5-3155 a equipo proyectado TAG: 5817-BBA-4003 | 0d | 2026-03-12 | 2026-03-12 | A1970 SS | 0d |  | SQM-PIPING |  | PTK | un | 0 | 1.10.6 | 1.10.6 |
| A1990 |  | Tie-In N° 4404B - Conexión de equipo existente TAG: 160-BB-5759-P5-3153 a equipo proyectado TAG: 5817-BBA-4003 | 0d | 2026-03-12 | 2026-03-12 | A1980 | 0d |  | SQM-PIPING |  | PTK | un | 0 | 1.10.7 | 1.10.7 |
| A1940 |  | Tie-In N° 1471 - Línea proyectada TAG: 75-PW-5817-P7-1910 con existente TAG: 63-PW-5759-P5-3900 | 2.18d | 2026-03-13 | 2026-03-15 | A1800, A1930 | 0d |  | SQM-PIPING [7 h] | 7 | PTK | un | 1 | 1.10.2 | 1.10.2 |
| A2010 |  | Tie-In N° 4405B - TAG: 160-BB-5759-P5-3154 a Descarga TAG: 5817-BBA-4006 | 0d | 2026-03-13 | 2026-03-13 | A1990 SS+1.09d | 0d |  | SQM-PIPING |  | PTK | un | 0 | 1.10.9 | 1.10.9 |
| A2020 |  | Tie-In N° 5401 - Línea existente TAG:160-LMB-5759-P5-3352 a proyectada TAG:160-SAB-5817-P1-5504 | 2.18d | 2026-03-13 | 2026-03-15 | A2010 | 0d |  | SQM-PIPING [15.75 h] | 15.75 | PTK | un | 1 | 1.10.10 | 1.10.10 |
| A2030 |  | Tie-In N° 5402 - Línea proyectada TAG: 160-SAB-5817- P1-5503 con equipo existente TAG: 5735-EST-1800 | 2.18d | 2026-03-13 | 2026-03-15 | A2020 SS | 0d |  | SQM-PIPING [15.75 h] | 15.75 | PTK | un | 1 | 1.10.11 | 1.10.11 |
| A2050 |  | Tie-In N° 5403B - TAG: 160-LMB-5759-P7-3352 a Descarga TAG: 5817-BBA-5002 | 0d | 2026-03-15 | 2026-03-15 | A2030 | 0d |  | SQM-PIPING |  | PTK | un | 0 | 1.10.13 | 1.10.13 |
| A2070 |  | Tie-In N° 5404B - TAG: 160-LMB-5759-P7-3352 a Descarga TAG: 5817-BBA-5005 | 0d | 2026-03-15 | 2026-03-15 | A2050 SS | 0d |  | SQM-PIPING |  | PTK | un | 0 | 1.10.15 | 1.10.15 |

| ID | WBS | Activity | Duration | Start | Finish | Predecessors | Total float | Free float | Resources | Cost | Área | Unidad | Cantidad | Ítem LP | Ìtem EDP |
| --- | --- | --- | --- | --- | --- | --- | --- | --- | --- | --- | --- | --- | --- | --- | --- |
|  | 5 | **OBRAS ELÉCTRICAS PATIO DE ESTANQUES** |  | 2025-11-14 | 2026-03-02 |  |  |  |  |  |  |  |  |  |  |
|  | 1 | **TENDIDO Y CONEXIONADO DE CABLES BAJA TENSIÓN PATIO DE ESTANQUES** |  | 2026-01-01 | 2026-02-23 |  |  |  |  |  |  |  |  |  |  |
| A2080 |  | Cable de Fuerza Monoconductor de Cobre Blando, 1C #500 MCM | 13.09d | 2026-01-01 | 2026-01-14 | A2430 SS | 19.64d | 0d | SQM-ELÉCTRICO [631.2 h] | 631.2 | PTK | m | 40 | 1.1.1 | 2.1.1 |
| A2090 |  | Cable Multiconductor para VDF BT (3C#6 + 3C#12) AWG | 0d | 2026-01-14 | 2026-01-14 | A2080, A2190 | 19.64d | 0d | SQM-ELÉCTRICO |  | PTK | m | 0 | 1.1.2 | 2.1.2 |
| A2100 |  | Cable Multiconductor para VDF BT (3C#2 + 3C#10) AWG | 0d | 2026-01-14 | 2026-01-14 | A2090 SS | 19.64d | 0d | SQM-ELÉCTRICO |  | PTK | m | 0 | 1.1.3 | 2.1.3 |
| A2110 |  | Cable Multiconductor para VDF BT (3C#2/0 + 3C#6) AWG | 0d | 2026-01-14 | 2026-01-14 | A2100 SS | 19.64d | 0d | SQM-ELÉCTRICO |  | PTK | m | 0 | 1.1.4 | 2.1.4 |
| A2120 |  | Cable de Fuerza Multiconductor de Cobre Blando, 1x4C #10 AWG | 3.27d | 2026-01-14 | 2026-01-17 | A2110 | 19.64d | 0d | SQM-ELÉCTRICO [79.95 h] | 79.95 | PTK | m | 34 | 1.1.5 | 2.1.5 |
| A2130 |  | Cable de Fuerza Multiconductor de Cobre Blando, 1x4C #8 AWG | 0d | 2026-01-17 | 2026-01-17 | A2120 | 19.64d | 0d | SQM-ELÉCTRICO |  | PTK | m | 0 | 1.1.6 | 2.1.6 |
| A2140 |  | Cable de Fuerza Multiconductor de Cobre Blando, 1x4C #6 AWG | 4.36d | 2026-01-17 | 2026-01-22 | A2130 SS | 19.64d | 0d | SQM-ELÉCTRICO [123 h] | 123 | PTK | m | 475 | 1.1.7 | 2.1.7 |
| A2150 |  | Cable de Fuerza Multiconductor de Cobre Blando, 1x4C #4 AWG | 6.55d | 2026-01-17 | 2026-01-24 | A2140 SS | 19.64d | 0d | SQM-ELÉCTRICO [300.2 h] | 300.2 | PTK | m | 845 | 1.1.8 | 2.1.8 |
| A2160 |  | Cable de Fuerza Multiconductor de Cobre Blando, 1x4C #2 AWG | 3.27d | 2026-01-24 | 2026-01-27 | A2150 | 19.64d | 0d | SQM-ELÉCTRICO [94.8 h] | 94.8 | PTK | m | 580 | 1.1.9 | 2.1.9 |
| A2170 |  | Cable de Fuerza Multiconductor de Cobre Blando, 1x3C #6 AWG | 15.27d | 2026-01-24 | 2026-02-08 | A2160 SS | 19.64d | 0d | SQM-ELÉCTRICO [432.96 h] | 432.96 | PTK | m | 770 | 1.1.10 | 2.1.10 |
| A2180 |  | Cable de Fuerza Multiconductor de Cobre Blando, 1x5C #14 AWG | 30.55d | 2026-01-24 | 2026-02-23 | A2170 SS | 19.64d |  | SQM-ELÉCTRICO [1185.72 h] | 1,185.72 | PTK | m | 2080 | 1.1.11 | 2.1.11 |
|  | 2 | **MONTAJE DE CANALIZACIÓN Y FERRETERÍA PATIO DE ESTANQUES** |  | 2026-01-01 | 2026-02-16 |  |  |  |  |  |  |  |  |  |  |
| A2190 |  | Conduit de Acero Galvanizado, 6"Ø, tipo Conduit ANSI C80.1 | 3.27d | 2026-01-01 | 2026-01-04 | A2400 | 29.45d | 0d | SQM-ELÉCTRICO [31.5 h] | 31.5 | PTK | m | 15 | 1.1.13 | 2.1.13 |
| A2230 |  | Conduit de Acero Galvanizado 3"Ø, tipo Conduit ANSI C80.1 | 5.45d | 2026-01-01 | 2026-01-06 | A2190 SS | 34.91d | 4.36d | SQM-ELÉCTRICO [220.5 h] | 220.5 | PTK | m | 210 | 1.1.17 | 2.1.17 |
| A2200 |  | Conduit Flexible Metálico con Cubierta PVC 6" Ø Trabajo Pesado | 2.18d | 2026-01-04 | 2026-01-06 | A2190 | 30.55d | 0d | SQM-ELÉCTRICO [16.8 h] | 16.8 | PTK | m | 10 | 1.1.14 | 2.1.14 |
| A2210 |  | Copla para Cañería de Acero Galvanizado 6"Ø | 2.18d | 2026-01-04 | 2026-01-06 | A2200 SS | 30.55d | 0d | SQM-ELÉCTRICO [5.6 h] | 5.6 | PTK | c/u | 10 | 1.1.15 | 2.1.15 |
| A2220 |  | Conexión Terminal para Cañería de Acero Galvanizado 6"Ø | 1.09d | 2026-01-04 | 2026-01-05 | A2210 SS | 30.55d | 0d | SQM-ELÉCTRICO [2.8 h] | 2.8 | PTK | c/u | 5 | 1.1.16 | 2.1.16 |
| A2240 |  | Conduit Flexible Metálico con Cubierta PVC 3" Ø Trabajo Pesado | 2.18d | 2026-01-05 | 2026-01-07 | A2230 SS, A2220 | 30.55d | 0d | SQM-ELÉCTRICO [10.5 h] | 10.5 | PTK | m | 10 | 1.1.18 | 2.1.18 |
| A2250 |  | Copla para Cañería de Acero Galvanizado 3"Ø. Incluye Copla | 3.27d | 2026-01-05 | 2026-01-09 | A2240 SS | 30.55d | 0d | SQM-ELÉCTRICO [18.48 h] | 18.48 | PTK | c/u | 88 | 1.1.19 | 2.1.19 |
| A2260 |  | Conexión Terminal para Cañería de Acero Galvanizado 3"Ø | 4.36d | 2026-01-05 | 2026-01-10 | A2250 SS | 30.55d | 0d | SQM-ELÉCTRICO [4.2 h] | 4.2 | PTK | c/u | 20 | 1.1.20 | 2.1.20 |
| A2270 |  | Conduit de Acero Galvanizado 2 1/2"Ø, tipo Conduit ANSI C80.1. Incluye Copla | 5.45d | 2026-01-05 | 2026-01-11 | A2260 SS | 30.55d | 0d | SQM-ELÉCTRICO [220.5 h] | 220.5 | PTK | m | 210 | 1.1.21 | 2.1.21 |
| A2280 |  | Conduit Flexible Metálico con Cubierta PVC 2 1/2" Ø Trabajo Pesado | 3.27d | 2026-01-05 | 2026-01-09 | A2270 SS | 30.55d | 0d | SQM-ELÉCTRICO [21 h] | 21 | PTK | m | 20 | 1.1.22 | 2.1.22 |
| A2290 |  | Conexión Terminal para Cañería de Acero Galvanizado 2 1/2"Ø | 3.27d | 2026-01-05 | 2026-01-09 | A2280 SS | 30.55d | 0d | SQM-ELÉCTRICO [8.4 h] | 8.4 | PTK | c/u | 40 | 1.1.23 | 2.1.23 |
| A2300 |  | Conduit de Acero Galvanizado, 2"Ø, tipo Conduit ANSI C80.1.Incluye Copla | 8.73d | 2026-01-09 | 2026-01-17 | A2290 | 30.55d | 0d | SQM-ELÉCTRICO [840.26 h] | 840.26 | PTK | m | 800.25 | 1.1.24 | 2.1.24 |
| A2310 |  | Conduit Flexible Metálico con Cubierta PVC 2" Ø Trabajo Pesado | 8.73d | 2026-01-09 | 2026-01-17 | A2300 SS | 51.27d | 0d | SQM-ELÉCTRICO [252 h] | 252 | PTK | m | 240 | 1.1.25 | 2.1.25 |
| A2320 |  | Conexión Terminal para Cañería de Acero Galvanizado 2"Ø | 3.27d | 2026-01-09 | 2026-01-12 | A2310 SS | 51.27d | 38.18d | SQM-ELÉCTRICO [9.45 h] | 9.45 | PTK | c/u | 45 | 1.1.26 | 2.1.26 |
| A2330 |  | Conduit de Acero Galvanizado, 1 1/2"Ø, tipo Conduit ANSI C80.1. Incluye Copla | 8.73d | 2026-01-11 | 2026-01-19 | A2300 SS+2.18d | 30.55d | 0d | SQM-ELÉCTRICO [516.6 h] | 516.6 | PTK | m | 820 | 1.1.27 | 2.1.27 |
| A2340 |  | Conduit Flexible Metálico con Cubierta PVC 1 1/2" Ø Trabajo Pesado | 5.45d | 2026-01-20 | 2026-01-25 | A2330 | 30.55d | 17.45d | SQM-ELÉCTRICO [37.8 h] | 37.8 | PTK | m | 60 | 1.1.28 | 2.1.28 |
| A2350 |  | Conexión Terminal para Cañería de Acero Galvanizado 1 1/2"Ø | 4.36d | 2026-02-11 | 2026-02-16 | A2340, A2330, A1570 FF | 13.09d | 0d | SQM-ELÉCTRICO [22.05 h] | 22.05 | PTK | c/u | 105 | 1.1.29 | 2.1.29 |

| ID | WBS | Activity | Duration | Start | Finish | Predecessors | Total float | Free float | Resources | Cost | Área | Unidad | Cantidad | Ítem LP | Ìtem EDP | Corregir |
| --- | --- | --- | --- | --- | --- | --- | --- | --- | --- | --- | --- | --- | --- | --- | --- | --- |
|  | 3 | **MONTAJE DE ESCALERILLAS Y PIEZAS ESPECIALES PATIO DE ESTANQUES** |  | 2025-12-15 | 2026-01-01 |  |  |  |  |  |  |  |  |  |  |  |
| A2360 |  | EPC Porta Conductores 600x100mm e:2 mm, tiras 3m. Incluir tapa dos aguas, eclisas y pernos de unión. | 10.91d | 2025-12-15 | 2025-12-25 | A1370, A1460 | 19.64d | 0d | SQM-ELÉCTRICO [1904 h] | 1,904 | PTK | m | 160 | 1.3.1 | 2.2.1 |  |
| A2370 |  | EPC Curva Horizontal de 90°, 600x100mm e:2mm. Incluir tapa dos aguas, eclisas y pernos de unión. | 0d | 2025-12-28 | 2025-12-28 | A2360 FF+2.18d | 19.64d | 0d | SQM-ELÉCTRICO |  | PTK | c/u | 0 | 1.3.2 | 2.2.2 | R FF |
| A2380 |  | EPC Curva Vertical Interior de 90°, 600x100mm e:2mm. Incluir tapa dos aguas, eclisas y pernos de unión. | 0d | 2025-12-28 | 2025-12-28 | A2370 SS | 19.64d | 0d | SQM-ELÉCTRICO |  | PTK | c/u | 0 | 1.3.3 | 2.2.3 |  |
| A2390 |  | EPC Curva Vertical Exterior de 90°, 600x100mm e:2mm. Incluir tapa dos aguas, eclisas y pernos de unión. | 0d | 2025-12-28 | 2025-12-28 | A2380 | 19.64d | 0d | SQM-ELÉCTRICO |  | PTK | c/u | 0 | 1.3.4 | 2.2.4 |  |
| A2400 |  | EPC Derivación tipo TEE, 600x100mm e:2mm. Incluir tapa dos aguas, eclisas y pernos de unión. | 4.36d | 2025-12-28 | 2026-01-01 | A2390 SS | 19.64d | 0d | SQM-ELÉCTRICO [44.8 h] | 44.8 | PTK | c/u | 6 | 1.3.5 | 2.2.5 |  |
| A2410 |  | EPC Porta Conductores 400x100mm e:2mm, tiras 3m. Incluir tapa dos aguas, eclisas y pernos de unión. | 0d | 2026-01-01 | 2026-01-01 | A2400 | 19.64d | 0d | SQM-ELÉCTRICO |  | PTK | m | 0 | 1.3.6 | 2.2.6 |  |
| A2420 |  | EPC Curva Vertical Interior de 90°, 400x100mm e:2mm. Incluir tapa dos aguas, eclisas y pernos de unión. | 0d | 2026-01-01 | 2026-01-01 | A2410 SS | 19.64d | 0d | SQM-ELÉCTRICO |  | PTK | c/u | 0 | 1.3.7 | 2.2.7 |  |
| A2430 |  | EPC Derivación tipo TEE, 400x100mm e:2mm. Incluir tapa dos aguas, eclisas y pernos de unión. | 0d | 2026-01-01 | 2026-01-01 | A2420 SS | 19.64d | 0d | SQM-ELÉCTRICO |  | PTK | c/u | 0 | 1.3.8 | 2.2.8 |  |
|  | 4 | **MONTAJE DE EQUIPOS ELÉCTRICOS PATIO DE ESTANQUES** |  | 2026-02-16 | 2026-02-27 |  |  |  |  |  |  |  |  |  |  |  |
| A2440 |  | Estación Local Marca Allen Bradley o Equivalente, para Trabajo Pesado, NEMA 4X | 10.91d | 2026-02-16 | 2026-02-27 | A2350, A2520 | 13.09d | 0d | SQM-ELÉCTRICO [588 h] | 588 | PTK | c/u | 27 | 1.5.1 | 2.5.1 |  |
| A2450 |  | Tablero Partidor de Motores Tag. N° 5817-TPM-7501 | 5.45d | 2026-02-19 | 2026-02-24 | A2440 SS+3.27d | 13.09d | 0d | SQM-ELÉCTRICO [288 h] | 288 | PTK | gl | 1 | 1.5.2 | 2.5.2 |  |
| A2460 |  | Fabricación de Fundaciones y Montaje de Transformador TAG:5817-TRF-7501 | 6.55d | 2026-02-19 | 2026-02-26 | A2450 SS, A2320 | 13.09d | 0d | SQM-ELÉCTRICO [432 h] | 432 | PTK | gl | 1 | 1.5.4 | 2.5.4 |  |
|  | 5 | **MONTAJE DE SISTEMA DE ILUMINACIÓN PATIO DE ESTANQUES** |  | 2025-11-14 | 2026-01-06 |  |  |  |  |  |  |  |  |  |  |  |
| A2510 |  | Poste Recto Acero Galvanizado 3" Ø 2,5m | 2.18d | 2025-11-14 | 2025-11-16 | A1120 | 57.82d | 0d | SQM-ELÉCTRICO [50.4 h] | 50.4 | PTK | c/u | 6 | 1.6.5 | 2.6.5 |  |
| A2500 |  | Postes Abatible Swivelpole Acero Galvanizado 1½" Ø x 4m | 7.64d | 2025-11-16 | 2025-11-24 | A2510 | 57.82d | 0d | SQM-ELÉCTRICO [294 h] | 294 | PTK | c/u | 28 | 1.6.4 | 2.6.4 |  |
| A2490 |  | Postes Abatible Swivelpole Acero Galvanizado 1½" Ø x 4m | 10.91d | 2025-11-24 | 2025-12-05 | A2500 | 57.82d | 0d | SQM-ELÉCTRICO [285.6 h] | 285.6 | PTK | c/u | 34 | 1.6.3 | 2.6.3 |  |
| A2480 |  | Proyector de Área LED 200W - 220VAC - 50Hz, IP65, 2.200°K, 12.800 Lm | 10.91d | 2025-12-05 | 2025-12-16 | A2490 | 57.82d | 0d | SQM-ELÉCTRICO [499.8 h] | 499.8 | PTK | c/u | 34 | 1.6.2 | 2.6.2 |  |
| A2470 |  | Luminaria LED Tipo Campana Industrial Según DS N°1 35W - 220VAC - 50Hz, IP65 o Nema4X, 2.200°K, 432,0 Lm | 12d | 2025-12-16 | 2025-12-28 | A2480 | 57.82d | 0d | SQM-ELÉCTRICO [645.8 h] | 645.8 | PTK | m | 34 | 1.6.1 | 2.6.1 |  |
| A2520 |  | Caja de Conexión Hermética 100x100x60 mm. Nema 4X con 6 Bornes de 6mm. | 5.45d | 2025-12-28 | 2026-01-02 | A2470 | 57.82d | 0d | SQM-ELÉCTRICO [144 h] | 144 | PTK | m | 28 | 1.6.6 | 2.6.6 |  |
| A2530 |  | Instalación y Conexión de !quipos de Iluminación. | 4.36d | 2026-01-02 | 2026-01-06 | A2520 | 63.27d | 50.18d | SQM-ELÉCTRICO [168 h] | 168 | PTK | gl | 1 | 1.6.7 | 2.6.7 |  |
|  | 6 | **MONTAJE SISTEMA PUESTA A TIERRA PATIO DE ESTANQUES** |  | 2026-01-01 | 2026-03-02 |  |  |  |  |  |  |  |  |  |  |  |
| A2540 |  | Cable de Cobre Desnudo Temple Blando, Nº 250 MCM , 19 Hebra. | 6.55d | 2026-01-01 | 2026-01-07 | A2430 | 24d | 0d | SQM-ELÉCTRICO [200.72 h] | 200.72 | PTK | m | 260 | 1.8.1 | 2.8.1 |  |
| A2550 |  | Cable de Cobre Desnudo Temple Blando, Nº 2/0 AWG, 19 Hebras. | 21.82d | 2026-01-08 | 2026-01-29 | A2540 | 24d | 0d | SQM-ELÉCTRICO [1080.8 h] | 1,080.8 | PTK | m | 1400 | 1.8.2 | 2.8.2 |  |
| A2570 |  | Cámara de registro de Concreto 8" Ø con Tapa. | 2.18d | 2026-01-29 | 2026-01-31 | A2550 | 24d | 0d | SQM-ELÉCTRICO [28 h] | 28 | PTK | c/u | 3 | 1.8.4 | 2.8.4 |  |
| A2650 |  | Caja de Barra Puesta a Tierra 500x400x200mm, de Poliéster con Tapa. | 10.91d | 2026-02-01 | 2026-02-11 | A2570 | 24d | 0d | SQM-ELÉCTRICO [420 h] | 420 | PTK | c/u | 10 | 1.8.12 | 2.8.12 |  |
| A2560 |  | Barra Copperweld 5/8" Ø x 3 metros de largo. | 2.18d | 2026-02-11 | 2026-02-14 | A2650 | 24d | 0d | SQM-ELÉCTRICO [42 h] | 42 | PTK | c/u | 18 | 1.8.3 | 2.8.3 |  |
| A2580 |  | Molde Cadweld para Unión Termofusión Conexión "TA", Móldelo TAC-2G2G. | 1.09d | 2026-02-14 | 2026-02-15 | A2560 | 24d | 0d | SQM-ELÉCTRICO [3.5 h] | 3.5 | PTK | c/u | 5 | 1.8.5 | 2.8.5 |  |
| A2590 |  | Molde Cadweld para Unión Termofusión Conexión "XB", Modelo XBM-2G2G. | 1.09d | 2026-02-14 | 2026-02-15 | A2580 SS | 24d | 0d | SQM-ELÉCTRICO [3.5 h] | 3.5 | PTK | c/u | 5 | 1.8.6 | 2.8.6 |  |
| A2600 |  | Molde Cadweld para Unión Termofusión Conexión "GY", Modelo GYE-162V. | 1.09d | 2026-02-14 | 2026-02-15 | A2590 SS | 24d | 0d | SQM-ELÉCTRICO [3.5 h] | 3.5 | PTK | c/u | 5 | 1.8.7 | 2.8.7 |  |
| A2610 |  | Molde Cadweld para Unión Termofusión Conexión a Superficie Metálica, Modelo HSC-2G. | 1.09d | 2026-02-14 | 2026-02-15 | A2600 SS | 24d | 0d | SQM-ELÉCTRICO [3.5 h] | 3.5 | PTK | c/u | 5 | 1.8.8 | 2.8.8 |  |
| A2620 |  | Carga para Termofusión Número 150. | 2.18d | 2026-02-15 | 2026-02-17 | A2610 | 24d | 0d | SQM-ELÉCTRICO [42 h] | 42 | PTK | c/u | 60 | 1.8.9 | 2.8.9 |  |
| A2630 |  | Carga para Termofusión Número 200. | 2.18d | 2026-02-15 | 2026-02-17 | A2620 SS | 24d | 10.91d | SQM-ELÉCTRICO [42 h] | 42 | PTK | c/u | 60 | 1.8.10 | 2.8.10 |  |
| A2640 |  | Carga para Termofusión Número 90. | 4.36d | 2026-02-26 | 2026-03-02 | A2630 SS, A2460, A2530 | 13.09d |  | SQM-ELÉCTRICO [84 h] | 84 | PTK | c/u | 120 | 1.8.11 | 2.8.11 |  |

| ID | WBS | Activity | Duration | Start | Finish | Predecessors | Total float | Free float | Resources | Cost | Área | Unidad | Cantidad | Ítem LP | Ìtem EDP | Corregir |
| --- | --- | --- | --- | --- | --- | --- | --- | --- | --- | --- | --- | --- | --- | --- | --- | --- |
|  | 6 | **OBRAS DE INSTRUMENTACIÓN PATIO DE ESTANQUES** |  | 2025-12-25 | 2026-02-14 |  |  |  |  |  |  |  |  |  |  |  |
|  | 1 | **TENDIDO Y CONEXIONADO DE CABLES DE COMUNICACIÓN PATIO DE ESTANQUES** |  | 2026-01-12 | 2026-01-23 |  |  |  |  |  |  |  |  |  |  |  |
| A2660 |  | Cable Fibra Óptica Multimodo Exterior 12 fibras OM3 LSZH | 8.73d | 2026-01-12 | 2026-01-21 | A2800 | 29.45d | 0d | SQM-INSTRUMENTACIÓN [478 h] | 478 | PTK | m | 1000 | 2.1.1 | 3.1.1 |  |
| A2670 |  | Cable de Comunicaciones de Datos 1x4 Par #22 AWG Apantallado, Categoría 6 | 2.18d | 2026-01-21 | 2026-01-23 | A2660 | 29.45d | 0d | SQM-INSTRUMENTACIÓN [29.52 h] | 29.52 | PTK | m | 60 | 2.1.2 | 3.1.2 |  |
|  | 2 | **TENDIDO Y CONEXIONADO DE CABLES DE INSTRUMENTACIÓN PATIO DE ESTANQUES** |  | 2026-01-23 | 2026-02-14 |  |  |  |  |  |  |  |  |  |  |  |
| A2680 |  | Cable de Instrumentación (Señales Análogas), 1x1 par #16 AWG Apantallado | 13.09d | 2026-01-23 | 2026-02-05 | A2670 | 29.45d | 0d | SQM-INSTRUMENTACIÓN [636.4 h] | 636.4 | PTK | m | 2150 | 2.2.1 | 3.2.1 |  |
| A2690 |  | Cable de Control Multiconductor de Cobre Blando, 1x3c #14 AWG, Clase 1,0 kV | 4.36d | 2026-02-01 | 2026-02-05 | A2680 FF | 29.45d | 0d | SQM-INSTRUMENTACIÓN [162.8 h] | 162.8 | PTK | m | 550 | 2.2.2 | 3.2.2 | R FF |
| A2700 |  | Cable de Control Multiconductor de Cobre Blando, 1x3c #14 AWG, Clase 0,3 kV | 8.73d | 2026-02-05 | 2026-02-14 | A2690 | 29.45d | 0d | SQM-INSTRUMENTACIÓN [251.6 h] | 251.6 | PTK | m | 850 | 2.2.3 | 3.2.3 |  |
|  | 3 | **TENDIDO Y CONEXIONADO DE CABLES DE ALIMENTACIÓN 120V PATIO DE ESTANQUES** |  | 2026-02-03 | 2026-02-14 |  |  |  |  |  |  |  |  |  |  |  |
| A2710 |  | Cable de Control Multiconductor de Cobre Blando, 1x3c #12 AWG, Clase 1,0 kV | 10.91d | 2026-02-03 | 2026-02-14 | A2700 FF | 29.45d | 0d | SQM-INSTRUMENTACIÓN [355.2 h] | 355.2 | PTK | m | 1200 | 2.3.1 | 3.3.1 | R FF |
| A2720 |  | Cable de Control Multiconductor de Cobre Blando, 1 x 3c #8 AWG, Clase 1,0 kV | 3.27d | 2026-02-10 | 2026-02-14 | A2710 FF | 29.45d |  | SQM-INSTRUMENTACIÓN [23.9 h] | 23.9 | PTK | m | 50 | 2.3.2 | 3.3.2 | R FF |
|  | 4 | **MONTAJE DE CANALIZACIÓN Y FERRETERÍA PATIO DE ESTANQUES** |  | 2025-12-25 | 2026-01-14 |  |  |  |  |  |  |  |  |  |  |  |
| A2730 |  | EPC porta conductores de acero galvanizado 600x100x2,5mm. Incluye eclipsas, pernos y tapa dos aguas. | 16.36d | 2025-12-25 | 2026-01-11 | A2360 | 29.45d | 0d | SQM-INSTRUMENTACIÓN [1344 h] | 1,344 | PTK | m | 240 | 2.4.1 | 3.4.1 |  |
| A2740 |  | EPC Curva Tipo "T", 600x100x2,5mm. Incluir tapa dos aguas, eclisas y pernos de unión. | 2.18d | 2025-12-28 | 2025-12-30 | A2730 SS+2.18d | 29.45d | 0d | SQM-INSTRUMENTACIÓN [33.6 h] | 33.6 | PTK | un | 6 | 2.4.2 | 3.4.2 |  |
| A2750 |  | EPC Curva Tipo "Cruz" 600x100x2,5mm. Incluye eclipsas, pernos y tapa dos aguas. | 1.09d | 2025-12-28 | 2025-12-29 | A2740 SS | 29.45d | 0d | SQM-INSTRUMENTACIÓN [11.2 h] | 11.2 | PTK | un | 2 | 2.4.3 | 3.4.3 |  |
| A2760 |  | Conduit de acero galvanizado 1"Ø, tipo conduit ANSI C80.1 | 1.09d | 2025-12-29 | 2025-12-30 | A2750 | 29.45d | 0d | SQM-INSTRUMENTACIÓN [9.66 h] | 9.66 | PTK | un | 20 | 2.4.4 | 3.4.4 |  |
| A2770 |  | Conduit de acero galvanizado 1"Ø, tipo conduit ANSI C80.1 | 4.36d | 2025-12-30 | 2026-01-03 | A2760 | 29.45d | 0d | SQM-INSTRUMENTACIÓN [346.5 h] | 346.5 | PTK | m | 550 | 2.4.5 | 3.4.5 |  |
| A2780 |  | Conduit flexible metálico con cubierta PVC 1" Ø | 2.18d | 2026-01-03 | 2026-01-05 | A2770 | 29.45d | 0d | SQM-INSTRUMENTACIÓN [3.15 h] | 3.15 | PTK | m | 5 | 2.4.6 | 3.4.6 |  |
| A2790 |  | Conduit flexible metálico con cubierta PVC 1/2" Ø | 3.27d | 2026-01-05 | 2026-01-09 | A2780 | 29.45d | 0d | SQM-INSTRUMENTACIÓN [40.95 h] | 40.95 | PTK | m | 65 | 2.4.7 | 3.4.7 |  |
| A2800 |  | Caja metálica de distribución 100x100x65mm | 3.27d | 2026-01-09 | 2026-01-12 | A2790 | 29.45d | 0d | SQM-INSTRUMENTACIÓN [288 h] | 288 | PTK | un | 30 | 2.12.1 | 3.12.1 |  |
| A2810 |  | Riel unistrut 42x42x2,5 mm, acero galvanizado, tiras de 3 metros | 3.27d | 2026-01-11 | 2026-01-14 | A2730 | 58.91d | 22.91d | SQM-INSTRUMENTACIÓN [120 h] | 120 | PTK | un | 100 | 2.12.2 | 3.12.2 |  |
|  | 5 | **ARMADO Y MONTAJE DE EQUIPOS E INSTRUMENTOS PATIO DE ESTANQUES** |  | 2026-01-21 | 2026-01-27 |  |  |  |  |  |  |  |  |  |  |  |
| A2820 |  | Tablero controlador Tag N° 5817-PLC-1201 | 2.18d | 2026-01-21 | 2026-01-23 | A2660 | 36d | 0d | SQM-INSTRUMENTACIÓN [170 h] | 170 | PTK | un | 1 | 2.5.1 | 3.5.1 |  |
| A2830 |  | Tablero de Distribución de Instrumentación Tag N°5817-TDI-1203 | 2.18d | 2026-01-23 | 2026-01-25 | A2820 | 36d | 0d | SQM-INSTRUMENTACIÓN [170 h] | 170 | PTK | un | 1 | 2.5.2 | 3.5.2 |  |
| A2840 |  | Fuente Ininterrumpida de Poder Tag N°5817-UPS-1202. Conexión de UPS a TPM de planta. | 2.18d | 2026-01-25 | 2026-01-27 | A2830 | 36d | 0d | SQM-INSTRUMENTACIÓN [170 h] | 170 | PTK | un | 1 | 2.5.3 | 3.5.3 |  |

| ID | WBS | Activity | Duration | Start | Finish | Predecessors | Total float | Free float | Resources | Cost | Área | Unidad | Cantidad | Ítem LP | Ìtem EDP |
| --- | --- | --- | --- | --- | --- | --- | --- | --- | --- | --- | --- | --- | --- | --- | --- |
|  | 6 | **MONTAJE, CONEXIONADO Y PRUEBAS DE INSTRUMENTOS - SENSORES Y TRANSMISORES DE FLUJO** |  | 2026-01-27 | 2026-01-29 |  |  |  |  |  |  |  |  |  |  |
| A2850 |  | Tubo sensor de Flujo Magnético y Transmisor Remoto Tag FE/FIT-1301 | 1.09d | 2026-01-27 | 2026-01-28 | A2840 | 36d | 0d | SQM-INSTRUMENTACIÓN [31.5 h] | 31.5 | PTK | un | 1 | 2.6.1 | 3.6.1 |
| A2860 |  | Tubo sensor de Flujo Magnético y Transmisor Remoto Tag FE/FIT-1306 | 1.09d | 2026-01-27 | 2026-01-28 | A2850 SS | 36d | 0d | SQM-INSTRUMENTACIÓN [31.5 h] | 31.5 | PTK | un | 1 | 2.6.2 | 3.6.2 |
| A2870 |  | Tubo sensor de Flujo Magnético y Transmisor Remoto Tag FE/FIT-1307 | 1.09d | 2026-01-27 | 2026-01-28 | A2860 SS | 36d | 0d | SQM-INSTRUMENTACIÓN [31.5 h] | 31.5 | PTK | un | 1 | 2.6.2 | 3.6.3 |
| A2880 |  | Tubo sensor de Flujo Magnético y Transmisor Remoto Tag FE/FIT-1204 | 1.09d | 2026-01-27 | 2026-01-28 | A2870 SS | 36d | 0d | SQM-INSTRUMENTACIÓN [31.5 h] | 31.5 | PTK | un | 1 | 2.6.8 | 3.6.4 |
| A2890 |  | Tubo sensor de Flujo Magnético y Transmisor Remoto Tag FE/FIT-1207 | 1.09d | 2026-01-27 | 2026-01-28 | A2880 SS | 36d | 0d | SQM-INSTRUMENTACIÓN [31.5 h] | 31.5 | PTK | un | 1 | 2.6.8 | 3.6.5 |
| A2900 |  | Tubo sensor de Flujo Magnético y Transmisor Remoto Tag FE/FIT-4102 | 1.09d | 2026-01-28 | 2026-01-29 | A2890 | 36d | 0d | SQM-INSTRUMENTACIÓN [31.5 h] | 31.5 | PTK | un | 1 | 2.6.3 | 3.6.6 |
| A2910 |  | Tubo sensor de Flujo Magnético y Transmisor Remoto Tag FE/FIT-4103 | 1.09d | 2026-01-28 | 2026-01-29 | A2900 SS | 36d | 0d | SQM-INSTRUMENTACIÓN [31.5 h] | 31.5 | PTK | un | 1 | 2.6.4 | 3.6.7 |
| A2920 |  | Tubo sensor de Flujo Magnético y Transmisor Remoto Tag FE/FIT-4104 | 1.09d | 2026-01-28 | 2026-01-29 | A2910 SS | 36d | 0d | SQM-INSTRUMENTACIÓN [31.5 h] | 31.5 | PTK | un | 1 | 2.6.5 | 3.6.8 |
| A2930 |  | Tubo sensor de Flujo Magnético y Transmisor Remoto Tag FE/FIT-5102 | 1.09d | 2026-01-28 | 2026-01-29 | A2920 SS | 36d | 0d | SQM-INSTRUMENTACIÓN [31.5 h] | 31.5 | PTK | un | 1 | 2.6.6 | 3.6.9 |
|  | 7 | **MONTAJE, PRUEBAS Y CONEXIONADO DE INSTRUMENTOS - TRANSMISORES DE NIVEL** |  | 2026-01-29 | 2026-01-31 |  |  |  |  |  |  |  |  |  |  |
| A2940 |  | Transmisor de Nivel Tag LT-1301 | 1.09d | 2026-01-29 | 2026-01-30 | A2930 | 36d | 0d | SQM-INSTRUMENTACIÓN [19.35 h] | 19.35 | PTK | un | 1 | 2.7.1 | 3.7.1 |
| A2950 |  | Transmisor de Nivel Tag LT-1201 | 1.09d | 2026-01-29 | 2026-01-30 | A2940 SS | 36d | 0d | SQM-INSTRUMENTACIÓN [19.35 h] | 19.35 | PTK | un | 1 | 2.7.2 | 3.7.2 |
| A2960 |  | Transmisor de Nivel Tag LT-4101 | 1.09d | 2026-01-29 | 2026-01-30 | A2950 SS | 36d | 0d | SQM-INSTRUMENTACIÓN [19.35 h] | 19.35 | PTK | un | 1 | 2.7.3 | 3.7.3 |
| A2970 |  | Transmisor de Nivel Tag LT-4102 | 1.09d | 2026-01-29 | 2026-01-30 | A2960 SS | 36d | 0d | SQM-INSTRUMENTACIÓN [19.35 h] | 19.35 | PTK | un | 1 | 2.7.4 | 3.7.4 |
| A2980 |  | Transmisor de Nivel Tag LT-5101 | 1.09d | 2026-01-30 | 2026-01-31 | A2970 | 36d | 0d | SQM-INSTRUMENTACIÓN [19.35 h] | 19.35 | PTK | un | 1 | 2.7.5 | 3.7.5 |
|  | 8 | **MONTAJE, PRUEBAS Y CONEXIONADO DE INSTRUMENTOS - INTERRUPTOR DE PRESIÓN** |  | 2026-01-30 | 2026-01-31 |  |  |  |  |  |  |  |  |  |  |
| A2990 |  | Interruptor de Nivel Tag PSL-1301 | 1.09d | 2026-01-30 | 2026-01-31 | A2980 SS | 36d | 0d | SQM-INSTRUMENTACIÓN [19.35 h] | 19.35 | PTK | un | 1 | 2.8.1 | 3.8.1 |
| A3000 |  | Interruptor de Nivel Tag PSL-1302 | 1.09d | 2026-01-30 | 2026-01-31 | A2990 SS | 36d | 0d | SQM-INSTRUMENTACIÓN [19.35 h] | 19.35 | PTK | un | 1 | 2.8.2 | 3.8.2 |
|  | 9 | **MONTAJE, PRUEBAS Y CONEXIONADO DE INSTRUMENTOS - INTERRUPTOR DE NIVEL** |  | 2026-01-30 | 2026-02-02 |  |  |  |  |  |  |  |  |  |  |
| A3010 |  | Interruptor de Nivel Tag LCHL-1201 | 1.09d | 2026-01-30 | 2026-01-31 | A3000 SS | 36d | 0d | SQM-INSTRUMENTACIÓN [19.35 h] | 19.35 | PTK | un | 1 | 2.9.1 | 3.9.1 |
| A3020 |  | Interruptor de Nivel Tag LCHL-4101 | 1.09d | 2026-02-01 | 2026-02-02 | A3010 | 36d | 0d | SQM-INSTRUMENTACIÓN [19.35 h] | 19.35 | PTK | un | 1 | 2.9.2 | 3.9.2 |
| A3030 |  | Interruptor de Nivel Tag LCHL-5101 | 1.09d | 2026-02-01 | 2026-02-02 | A3020 SS | 36d | 0d | SQM-INSTRUMENTACIÓN [19.35 h] | 19.35 | PTK | un | 1 | 2.9.3 | 3.9.3 |
|  | 10 | **MONTAJE, PRUEBAS Y CONEXIONADO DE INSTRUMENTOS - INTERRUPTOR DE FLUJO** |  | 2026-02-01 | 2026-02-03 |  |  |  |  |  |  |  |  |  |  |
| A3040 |  | Interruptor de Nivel Tag FS-4101 | 1.09d | 2026-02-01 | 2026-02-02 | A3030 SS | 36d | 0d | SQM-INSTRUMENTACIÓN [19.35 h] | 19.35 | PTK | un | 1 | 2.10.1 | 3.10.1 |
| A3050 |  | Interruptor de Nivel Tag FS-4102 | 1.09d | 2026-02-01 | 2026-02-02 | A3040 SS | 36d | 0d | SQM-INSTRUMENTACIÓN [19.35 h] | 19.35 | PTK | un | 1 | 2.10.2 | 3.10.2 |
| A3060 |  | Interruptor de Nivel Tag FS-5101 | 1.09d | 2026-02-02 | 2026-02-03 | A3050 | 36d | 0d | SQM-INSTRUMENTACIÓN [19.35 h] | 19.35 | PTK | un | 1 | 2.10.3 | 3.10.3 |
| A3070 |  | Interruptor de Nivel Tag FS-8101 | 1.09d | 2026-02-02 | 2026-02-03 | A3060 SS | 36d | 0d | SQM-INSTRUMENTACIÓN [19.35 h] | 19.35 | PTK | un | 1 | 2.10.4 | 3.10.4 |

| ID | WBS | Activity | Duration | Start | Finish | Predecessors | Total float | Free float | Resources | Cost | Área | Unidad | Cantidad | Ítem LP | Ìtem EDP |
| --- | --- | --- | --- | --- | --- | --- | --- | --- | --- | --- | --- | --- | --- | --- | --- |
|  | 11 | **MONTAJE DE INSTRUMENTOS - INDICADORES DE PRESIÓN (MANÓMETROS)** |  | 2026-02-02 | 2026-02-07 |  |  |  |  |  |  |  |  |  |  |
| A3080 |  | Indicador de Presión (manómetro) Tag PI-1201 | 1.09d | 2026-02-02 | 2026-02-03 | A3070 SS | 36d | 0d | SQM-INSTRUMENTACIÓN [2.5 h] | 2.5 | PTK | un | 1 | 2.11.1 | 3.11.1 |
| A3090 |  | Indicador de Presión (manómetro) Tag PI-1202 | 1.09d | 2026-02-02 | 2026-02-03 | A3080 SS | 36d | 0d | SQM-INSTRUMENTACIÓN [2.5 h] | 2.5 | PTK | un | 1 | 2.11.2 | 3.11.2 |
| A3100 |  | Indicador de Presión (manómetro) Tag PI-1203 | 1.09d | 2026-02-03 | 2026-02-04 | A3090 | 36d | 0d | SQM-INSTRUMENTACIÓN [2.5 h] | 2.5 | PTK | un | 1 | 2.11.3 | 3.11.3 |
| A3110 |  | Indicador de Presión (manómetro) Tag PI-1205 | 1.09d | 2026-02-03 | 2026-02-04 | A3100 SS | 36d | 0d | SQM-INSTRUMENTACIÓN [2.5 h] | 2.5 | PTK | un | 1 | 2.11.4 | 3.11.4 |
| A3120 |  | Indicador de Presión (manómetro) Tag PI-1206 | 1.09d | 2026-02-03 | 2026-02-04 | A3110 SS | 36d | 0d | SQM-INSTRUMENTACIÓN [2.5 h] | 2.5 | PTK | un | 1 | 2.11.5 | 3.11.5 |
| A3130 |  | Indicador de Presión (manómetro) Tag PI-1301 | 1.09d | 2026-02-03 | 2026-02-04 | A3120 SS | 36d | 0d | SQM-INSTRUMENTACIÓN [2.5 h] | 2.5 | PTK | un | 1 | 2.11.6 | 3.11.6 |
| A3140 |  | Indicador de Presión (manómetro) Tag PI-1302 | 1.09d | 2026-02-04 | 2026-02-05 | A3130 | 36d | 0d | SQM-INSTRUMENTACIÓN [2.5 h] | 2.5 | PTK | un | 1 | 2.11.7 | 3.11.7 |
| A3150 |  | Indicador de Presión (manómetro) Tag PI-1303 | 1.09d | 2026-02-04 | 2026-02-05 | A3140 SS | 36d | 0d | SQM-INSTRUMENTACIÓN [2.5 h] | 2.5 | PTK | un | 1 | 2.11.8 | 3.11.8 |
| A3160 |  | Indicador de Presión (manómetro) Tag PI-1304 | 1.09d | 2026-02-04 | 2026-02-05 | A3150 SS | 36d | 0d | SQM-INSTRUMENTACIÓN [2.5 h] | 2.5 | PTK | un | 1 | 2.11.9 | 3.11.9 |
| A3170 |  | Indicador de Presión (manómetro) Tag PI-1305 | 1.09d | 2026-02-04 | 2026-02-05 | A3160 SS | 36d | 0d | SQM-INSTRUMENTACIÓN [2.5 h] | 2.5 | PTK | un | 1 | 2.11.10 | 3.11.10 |
| A3180 |  | Indicador de Presión (manómetro) Tag PI-4103 | 1.09d | 2026-02-05 | 2026-02-06 | A3170 | 36d | 0d | SQM-INSTRUMENTACIÓN [2.5 h] | 2.5 | PTK | un | 1 | 2.11.11 | 3.11.11 |
| A3190 |  | Indicador de Presión (manómetro) Tag PI-4104 | 1.09d | 2026-02-05 | 2026-02-06 | A3180 SS | 36d | 0d | SQM-INSTRUMENTACIÓN [2.5 h] | 2.5 | PTK | un | 1 | 2.11.12 | 3.11.12 |
| A3200 |  | Indicador de Presión (manómetro) Tag PI-4105 | 1.09d | 2026-02-05 | 2026-02-06 | A3190 SS | 36d | 0d | SQM-INSTRUMENTACIÓN [2.5 h] | 2.5 | PTK | un | 1 | 2.11.13 | 3.11.13 |
| A3210 |  | Indicador de Presión (manómetro) Tag PI-4106 | 1.09d | 2026-02-05 | 2026-02-06 | A3200 SS | 36d | 0d | SQM-INSTRUMENTACIÓN [2.5 h] | 2.5 | PTK | un | 1 | 2.11.14 | 3.11.14 |
| A3220 |  | Indicador de Presión (manómetro) Tag PI-4107 | 1.09d | 2026-02-06 | 2026-02-07 | A3210 | 36d | 0d | SQM-INSTRUMENTACIÓN [2.5 h] | 2.5 | PTK | un | 1 | 2.11.15 | 3.11.15 |
| A3230 |  | Indicador de Presión (manómetro) Tag PI-4108 | 1.09d | 2026-02-06 | 2026-02-07 | A3220 SS | 36d | 0d | SQM-INSTRUMENTACIÓN [2.5 h] | 2.5 | PTK | un | 1 | 2.11.16 | 3.11.16 |
| A3240 |  | Indicador de Presión (manómetro) Tag PI-5103 | 1.09d | 2026-02-06 | 2026-02-07 | A3230 SS | 36d | 0d | SQM-INSTRUMENTACIÓN [2.5 h] | 2.5 | PTK | un | 1 | 2.11.17 | 3.11.17 |
| A3250 |  | Indicador de Presión (manómetro) Tag PI-5104 | 1.09d | 2026-02-06 | 2026-02-07 | A3240 SS, A2810 | 36d |  | SQM-INSTRUMENTACIÓN [2.5 h] | 2.5 | PTK | un | 1 | 2.11.18 | 3.11.18 |
|  | 2 | **SECTOR SX5** |  | 2026-01-21 | 2026-01-23 |  |  |  |  |  |  |  |  |  |  |
|  | 1 | **OBRAS ELÉCTRICAS SX5** |  | 2026-01-21 | 2026-01-23 |  |  |  |  |  |  |  |  |  |  |
|  | 1 | **TENDIDO Y CONEXIONADO DE CABLES BAJA TENSIÓN SX5** |  | 2026-01-23 | 2026-01-23 |  |  |  |  |  |  |  |  |  |  |
| A3260 |  | Cable de fuerza Multiconductor de Cobre Blando 1x4C #6 AWG. Clase de Aislación 1 kV. Categoría C. | 0d | 2026-01-23 | 2026-01-23 | A3300 | 51.27d | 0d | SQM-ELÉCTRICO |  | SX5 | m | 0 | 1.1.1 | 4.1.1 |
| A3270 |  | Cable de Control Multiconductor de Cobre Blando 1x5C #14 AWG. Clase de Aislación 1 kV. Categoría C. | 0d | 2026-01-23 | 2026-01-23 | A3260 | 51.27d | 0d | SQM-ELÉCTRICO |  | SX5 | m | 0 | 1.1.2 | 4.1.2 |
| A3280 |  | Cable de Control Multiconductor de Cobre Blando 1x5C #14 AWG. Tensión de Servicio 1.0 kV. | 0d | 2026-01-23 | 2026-01-23 | A3270, A3320 | 51.27d |  | SQM-ELÉCTRICO |  | SX5 | m | 0 | 1.1.3 | 4.1.3 |

Notes:
- A3260: Corregir: REVISAR SI QUEDA FUERA DEL ALCANCE / REVISAR SI TIENE QUE VER CON UNAS BOMBAS QUE YA ESTAN MONTADAS

| ID | WBS | Activity | Duration | Start | Finish | Predecessors | Total float | Free float | Resources | Cost | Área | Unidad | Cantidad | Ítem LP | Ìtem EDP | Corregir |
| --- | --- | --- | --- | --- | --- | --- | --- | --- | --- | --- | --- | --- | --- | --- | --- | --- |
|  | 2 | **MONTAJE DE CANALIZACIÓN Y FERRETERÍA SX5** |  | 2026-01-23 | 2026-01-23 |  |  |  |  |  |  |  |  |  |  |  |
| A3290 |  | Conduit Acero Galvanizado Ø 2" con Cubierta PVC | 0d | 2026-01-23 | 2026-01-23 | A3330 | 51.27d | 0d | SQM-ELÉCTRICO |  | SX5 | m | 0 | 1.2.1 | 4.2.1 |  |
| A3300 |  | Conduit Flexible Metálico de Ø 2" con Cubierta PVC | 0d | 2026-01-23 | 2026-01-23 | A3290 | 51.27d | 0d | SQM-ELÉCTRICO |  | SX5 | c/u | 0 | 1.2.2 | 4.2.2 |  |
|  | 3 | **ARMADO, MONTAJE Y HABILITACIÓN DE EQUIPOS SX5** |  | 2026-01-23 | 2026-01-23 |  |  |  |  |  |  |  |  |  |  |  |
| A3310 |  | Variador de Frecuencia 30kW, 400Vca. Ya instalado en Sala Eléctrica Existente. | 0d | 2026-01-23 | 2026-01-23 | A3290 SS | 51.27d | 0d | SQM-ELÉCTRICO |  | SX5 | un | 0 | 1.3.1 | 4.3.1 |  |
| A3320 |  | Estación de Control con Cubierta “Rosite Glass Polyester” | 0d | 2026-01-23 | 2026-01-23 | A3310 | 51.27d | 0d | SQM-ELÉCTRICO |  | SX5 | un | 0 | 1.3.2 | 4.3.2 |  |
|  | 4 | **MONTAJE DE SISTEMA PUESTA A TIERRA SX5** |  | 2026-01-21 | 2026-01-23 |  |  |  |  |  |  |  |  |  |  |  |
| A3330 |  | Cable de Cobre Desnudo Temple Blando, Nº 2/0 AWG, 19 Hebras. | 2.18d | 2026-01-21 | 2026-01-23 | A2660 | 51.27d | 0d | SQM-ELÉCTRICO [46.32 h] | 46.32 | SX5 | m | 60 | 1.4.1 | 4.4.1 |  |
|  | 2 | **CONTRATO ADDENDUM 01 - OOCC Y MEM MISCELÁNEOS** |  | 2025-09-12 | 2026-02-05 |  |  |  |  |  |  |  |  |  |  |  |
|  | 1 | **HABILITACIÓN DATA CENTER ZONA NORTE - ÁREA 5801** |  | 2025-09-23 | 2025-12-17 |  |  |  |  |  |  |  |  |  |  |  |
|  | 1 | **ÁREA 5801 - SECTOR DATA CENTER** |  | 2025-09-23 | 2025-12-17 |  |  |  |  |  |  |  |  |  |  |  |
|  | 1 | **OBRAS CIVILES DATA CENTER** |  | 2025-10-20 | 2025-11-19 |  |  |  |  |  |  |  |  |  |  |  |
|  | 1 | **SUMINISTRO Y MONTAJE ASOCIADO A CERCO PERIMETRAL DATA CENTER** |  | 2025-10-20 | 2025-11-19 |  |  |  |  |  |  |  |  |  |  |  |
| A3340 |  | Excavación para Fundaciones Cerco Perimetral Data Center | 2.18d | 2025-10-20 | 2025-10-22 | A3460 | 110.09d | 0d | SQM-OOCC [18.38 h] | 18.38 | 5801-DC | m3 | 16.87 | 3.3.4 a | 1.1.1.1 |  |
| A3350 |  | Emplantillado (G-05) para Fundaciones Cerco Perimetral Data Center | 1.09d | 2025-10-22 | 2025-10-23 | A3340 | 110.09d | 0d | SQM-OOCC [5.6 h] | 5.6 | 5801-DC | m3 | 0.9704396 | 3.3.14 | 1.1.1.2 |  |
| A3370 |  | Armadura de Refuerzo para Fundaciones Cerco Perimetral Data Center | 4.36d | 2025-10-23 | 2025-10-28 | A3350 | 110.09d | 0d | SQM-OOCC [122.4 h] | 122.4 | 5801-DC | kg | 1350 | 3.3.16 a | 1.1.1.4 |  |
| A3360 |  | Hormigonado (G-25) para Fundaciones Cerco Perimetral Data Center | 2.18d | 2025-10-28 | 2025-10-30 | A3370 | 110.09d | 0d | SQM-OOCC [96 h] | 96 | 5801-DC | m3 | 14.8683004 | 3.3.15 | 1.1.1.3 |  |
| A3390 |  | Pilar prefabricado PP7530 Cerco Perimetral Data Center | 7.64d | 2025-10-30 | 2025-11-06 | A3360 | 110.09d | 0d | SQM-OOCC [723.25 h] | 723.25 | 5801-DC | un | 44 | 3.3.28.1 | 1.1.1.6 |  |
| A3380 |  | Cierro Fijo ACMAFOR Data Center | 3.27d | 2025-11-06 | 2025-11-10 | A3390 | 110.09d | 0d | SQM-OOCC [291.25 h] | 291.25 | 5801-DC | m2 | 200 | 3.3.28 | 1.1.1.5 |  |
| A3400 |  | Accesos a Cierro Perimetral Data Center | 9.82d | 2025-11-10 | 2025-11-19 | A3380 | 110.09d | 0d | SQM-OOCC [360 h] | 360 | 5801-DC | un | 4 | 3.3.30 | 1.1.1.7 |  |
|  | 2 | **OBRAS ESTRUCTURALES DATA CENTER** |  | 2025-11-20 | 2025-12-07 |  |  |  |  |  |  |  |  |  |  |  |
|  | 1 | **ACERO ESTRUCTURAL, PLATAFORMA DATA CENTER** |  | 2025-11-20 | 2025-12-07 |  |  |  |  |  |  |  |  |  |  |  |
| A3410 |  | Estructuras Livianas, Plataforma Data Center | 5.45d | 2025-11-20 | 2025-11-25 | A3400 | 110.09d | 0d | SQM-ESTRUCTURA [396.26 h] | 396.26 | 5801-DC | kg | 1820.34 | 3.4.1.3 | 1.2.1.1 | MODIFIDCACIÓN DE ESTRUCTURA POR DIFERENCIA DE COTAS |
| A3430 |  | Barandas, Plataforma Data Center | 3.27d | 2025-11-25 | 2025-11-28 | A3410 | 110.09d | 0d | SQM-ESTRUCTURA [150.48 h] | 150.48 | 5801-DC | kg | 971.94 | 3.4.1.6 | 1.2.1.3 |  |
| A3420 |  | Parrillas de Piso, Plataforma Data Center | 2.18d | 2025-11-28 | 2025-11-30 | A3430 | 110.09d | 0d | SQM-ESTRUCTURA [6.08 h] | 6.08 | 5801-DC | kg | 1863.17 | 3.4.1.4 | 1.2.1.2 |  |
| A3440 |  | Escaleras, Plataforma Data Center | 3.27d | 2025-11-30 | 2025-12-04 | A3420 | 110.09d | 0d | SQM-ESTRUCTURA [15.2 h] | 15.2 | 5801-DC | kg | 168.53 | 3.4.1.8 | 1.2.1.4 |  |
| A3450 |  | Grout Fundaciones Estructura Data Center | 3.27d | 2025-12-04 | 2025-12-07 | A3440 | 110.09d | 2.18d | SQM-ESTRUCTURA [0.76 h] | 0.76 | 5801-DC | m3 | 0.012 | 3.4.1.12 | 1.2.1.5 |  |

| ID | WBS | Activity | Duration | Start | Finish | Predecessors | Total float | Free float | Resources | Cost | Área | Unidad | Cantidad | Ítem LP | Ìtem EDP | Corregir |
| --- | --- | --- | --- | --- | --- | --- | --- | --- | --- | --- | --- | --- | --- | --- | --- | --- |
|  | 3 | **OBRAS MECÁNICAS DATA CENTER** |  | 2025-09-23 | 2025-11-02 |  |  |  |  |  |  |  |  |  |  |  |
|  | 1 | **MONTAJE Y PRUEBAS DE DATA CENTER** |  | 2025-09-23 | 2025-10-20 |  |  |  |  |  |  |  |  |  |  |  |
| A3460 |  | Data center TAG 5808-SDAT-1701 | 27.27d | 2025-09-23 | 2025-10-20 | A1070 SS+10.91d | 85d | 0d | SQM-MECANICA [1392 h] | 1,392 | 5801-DC | un | 1 | 3.5.1.1 | 1.3.1.1 |  |
|  | 2 | **MONTAJE Y PRUEBAS DE BOMBAS DOSIFICADORAS DATA CENTER** |  | 2025-10-24 | 2025-11-02 |  |  |  |  |  |  |  |  |  |  |  |
| A3470 |  | Bomba dosificadora TAG 5801-BBA-3100 | 4.36d | 2025-10-24 | 2025-10-29 | A3520 | 85d | 0d | SQM-MECANICA [98.25 h] | 98.25 | 5801-DC | un | 1 | 3.5.2.1 | 1.3.2.1 | BOMBAS SE LIBERAN AYER 07.11 |
| A3480 |  | Bomba dosificadora TAG 5801-BBA-3103 | 4.36d | 2025-10-29 | 2025-11-02 | A3470 | 85d | 0d | SQM-MECANICA [98.25 h] | 98.25 | 5801-DC | un | 1 | 3.5.2.1 | 1.3.2.2 |  |
|  | 3 | **MONTAJE Y PRUEBAS DE ESTANQUES DATA CENTER** |  | 2025-10-20 | 2025-10-24 |  |  |  |  |  |  |  |  |  |  |  |
| A3490 |  | Estanque IBC para almcenamiento de agua. TAG 5801-EST-3106 | 1.09d | 2025-10-20 | 2025-10-21 | A3460 | 85d | 0d | SQM-MECANICA [12.3 h] | 12.3 | 5801-DC | un | 1 | 3.5.3.1 | 1.3.3.1 |  |
| A3500 |  | Estanque IBC para almcenamiento de agua. TAG 5801-EST-3107 | 1.09d | 2025-10-21 | 2025-10-22 | A3490 | 85d | 0d | SQM-MECANICA [12.3 h] | 12.3 | 5801-DC | un | 1 | 3.5.3.2 | 1.3.3.2 |  |
| A3510 |  | Estanque IBC para almcenamiento de agua. | 1.09d | 2025-10-22 | 2025-10-23 | A3500 | 85d | 0d | SQM-MECANICA [12.3 h] | 12.3 | 5801-DC | un | 1 | 3.5.3.3 | 1.3.3.3 |  |
| A3520 |  | Estanque IBC para almcenamiento de agua. | 1.09d | 2025-10-23 | 2025-10-24 | A3510 | 85d | 0d | SQM-MECANICA [12.3 h] | 12.3 | 5801-DC | un | 1 | 3.5.3.4 | 1.3.3.4 |  |
|  | 4 | **OBRAS PIPING DATA CENTER** |  | 2025-11-02 | 2025-11-18 |  |  |  |  |  |  |  |  |  |  |  |
|  | 1 | **MONTAJE DE CAÑERÍA DATA CENTER** |  | 2025-11-02 | 2025-11-18 |  |  |  |  |  |  |  |  |  |  |  |
| A3540 |  | Ø 1" - Cañería Acero Inoxidable - Fabricación | 5.45d | 2025-11-02 | 2025-11-07 | A3480 | 85d | 0d | SQM-PIPING [136 h] | 136 | 5801-DC | unión | 68 | 3.6.1.2 | 1.4.1.2 | ASOCIAR CON BOMBAS |
| A3530 |  | Ø 1 " - Cañería Acero Inoxidable - Montaje | 3.27d | 2025-11-04 | 2025-11-07 | A3540 FF | 85d | 0d | SQM-PIPING [27.92 h] | 27.92 | 5801-DC | m | 25 | 3.6.1.1 | 1.4.1.1 |  |
| A3560 |  | Ø 3/4" - Cañería Acero Inoxidable - Fabricación | 2.18d | 2025-11-08 | 2025-11-10 | A3530 | 85d | 0d | SQM-PIPING [3.5 h] | 3.5 | 5801-DC | unión | 2 | 3.6.1.4 | 1.4.1.4 |  |
| A3550 |  | Ø 3/4 " - Cañería Acero Inoxidable - Montaje | 2.18d | 2025-11-09 | 2025-11-11 | A3560 SS+1.09d | 85d | 0d | SQM-PIPING [6.3 h] | 6.3 | 5801-DC | m | 6 | 3.6.1.3 | 1.4.1.3 | R FF |
| A3580 |  | Ø 1-1/4" - Cañería Acero Inoxidable - Fabricación | 2.18d | 2025-11-11 | 2025-11-13 | A3550 | 85d | 0d | SQM-PIPING [6 h] | 6 | 5801-DC | unión | 2 | 3.6.1.6 | 1.4.1.6 |  |
| A3570 |  | Ø 1-1/4 " - Cañería Acero Inoxidable - Montaje | 2.18d | 2025-11-12 | 2025-11-14 | A3580 SS+1.09d | 85d | 0d | SQM-PIPING [10.05 h] | 10.05 | 5801-DC | m | 6 | 3.6.1.5 | 1.4.1.5 | R FF |
| A3600 |  | Ø 2" - Cañería Acero Inoxidable - Fabricación | 3.27d | 2025-11-14 | 2025-11-17 | A3570 | 85d | 0d | SQM-PIPING [111.11 h] | 111.11 | 5801-DC | unión | 22 | 3.6.1.8 | 1.4.1.8 |  |
| A3590 |  | Ø 2 " - Cañería Acero Inoxidable - Montaje | 3.27d | 2025-11-15 | 2025-11-18 | A3610 FF, A3620 FF, A3600 SS+1.09d, A3480 | 128.64d | 25.09d | SQM-PIPING [33.5 h] | 33.5 | 5801-DC | m | 12 | 3.6.1.7 | 1.4.1.7 | R FF |
|  | 2 | **MONTAJE DE VÁLVULAS Y FITTING PIPING DATA CENTER** |  | 2025-11-04 | 2025-11-18 |  |  |  |  |  |  |  |  |  |  |  |
| A3610 |  | Montaje de Fitting Acero Inoxidable GL Data Center | 14.18d | 2025-11-04 | 2025-11-18 | A3530 SS | 128.64d | 0d | SQM-PIPING [387.61 h] | 387.61 | 5801-DC | un | 94 | 99.4 | 99.4 |  |
| A3620 |  | Válvulas Data Center (Global) | 14.18d | 2025-11-04 | 2025-11-18 | A3530 SS | 128.64d | 0d | SQM-PIPING [58.41 h] | 58.41 | 5801-DC | un | 15 | 99.13 | 99.13 |  |

| ID | WBS | Activity | Duration | Start | Finish | Predecessors | Total float | Free float | Resources | Cost | Área | Unidad | Cantidad | Ítem LP | Ìtem EDP | Corregir |
| --- | --- | --- | --- | --- | --- | --- | --- | --- | --- | --- | --- | --- | --- | --- | --- | --- |
|  | 5 | **OBRAS ELÉCTRICAS DATA CENTER** |  | 2025-10-20 | 2025-12-07 |  |  |  |  |  |  |  |  |  |  |  |
|  | 1 | **MONTAJE Y CONEXIONADO CONDUCTORES FUERZA Y CONTROL** |  | 2025-10-22 | 2025-11-12 |  |  |  |  |  |  |  |  |  |  |  |
|  | 1 | **TENDIDO Y CONEXIONADO CABLES FUERZA MONOCONDUCTOR** |  | 2025-10-22 | 2025-11-03 |  |  |  |  |  |  |  |  |  |  |  |
| A3630 |  | Cable Fuerza 3x1c # 350 MCM | 5.45d | 2025-10-22 | 2025-10-28 | A3730 SS | 105.73d | 0d | SQM-ELÉCTRICO [136.85 h] | 136.85 | 5801-DC | m | 284 | 3.7.1.1.1 | 1.5.1.1.1 |  |
| A3640 |  | Cable Fuerza 3x1c # 500 MCM | 4.36d | 2025-10-28 | 2025-11-01 | A3630 | 105.73d | 0d | SQM-ELÉCTRICO [61.76 h] | 61.76 | 5801-DC | m | 79 | 3.7.1.1.2 | 1.5.1.1.2 |  |
| A3650 |  | Cable tierra 1x1c # 2/0 AWG (VERDE) | 2.18d | 2025-11-01 | 2025-11-03 | A3640 | 105.73d | 0d | SQM-ELÉCTRICO [26.35 h] | 26.35 | 5801-DC | m | 75 | 3.7.1.1.3 | 1.5.1.1.3 |  |
|  | 2 | **TENDIDO Y CONEXIONADO CABLES FUERZA MULTICONDUCTOR** |  | 2025-11-03 | 2025-11-12 |  |  |  |  |  |  |  |  |  |  |  |
| A3660 |  | Cable Fuerza 1x4c # 12 AWG | 2.18d | 2025-11-03 | 2025-11-05 | A3650 | 105.73d | 0d | SQM-ELÉCTRICO [23.38 h] | 23.38 | 5801-DC | m | 70 | 3.7.1.2.1 | 1.5.1.2.1 |  |
| A3670 |  | Cable Fuerza 1x4c # 8 AWG | 2.18d | 2025-11-05 | 2025-11-07 | A3660 | 105.73d | 0d | SQM-ELÉCTRICO [8.12 h] | 8.12 | 5801-DC | m | 30 | 3.7.1.2.2 | 1.5.1.2.2 |  |
| A3680 |  | Cable Fuerza 1x5c # 8 AWG | 0d | 2025-11-08 | 2025-11-08 | A3670 | 105.73d | 0d | SQM-ELÉCTRICO |  | 5801-DC | m | 0 | 3.7.1.2.3 | 1.5.1.2.3 |  |
| A3690 |  | Cables Control 1x5c # 14 AWG | 2.18d | 2025-11-08 | 2025-11-10 | A3680 | 105.73d | 0d | SQM-ELÉCTRICO [22.49 h] | 22.49 | 5801-DC | m | 70 | 3.7.1.2.4 | 1.5.1.2.4 |  |
| A3700 |  | Cables Control 1x3c # 12 AWG | 2.18d | 2025-11-10 | 2025-11-12 | A3690 | 105.73d | 2.18d | SQM-ELÉCTRICO [5.48 h] | 5.48 | 5801-DC | m | 26 | 3.7.1.2.5 | 1.5.1.2.5 |  |
|  | 2 | **MONTAJE DE CANALIZACIÓN Y FERRETERÍA DATA CENTER** |  | 2025-10-20 | 2025-10-24 |  |  |  |  |  |  |  |  |  |  |  |
| A3710 |  | C.A.G. 1", con Hilo y Copla de Unión, Según Norma ANSI C80-1. | 2.18d | 2025-10-20 | 2025-10-22 | A3460 | 103.55d | 0d | SQM-ELÉCTRICO [25.2 h] | 25.2 | 5801-DC | m | 20 | 3.7.2.1 | 1.5.2.1 |  |
| A3720 |  | Conduit Flexible de Acero de 1" de Diámetro, con Chaqueta de PVC. | 2.18d | 2025-10-22 | 2025-10-24 | A3710 | 112.27d | 8.73d | SQM-ELÉCTRICO [25.2 h] | 25.2 | 5801-DC | m | 20 | 3.7.2.2 | 1.5.2.2 | R FF |
|  | 3 | **MONTAJE Y CONEXIONADO EQUIPOS DE ALUMBRADO** |  | 2025-10-22 | 2025-11-09 |  |  |  |  |  |  |  |  |  |  |  |
| A3730 |  | Cable Fuerza 1x3c #12 AWG | 2.18d | 2025-10-22 | 2025-10-24 | A3710 | 103.55d | 0d | SQM-ELÉCTRICO [47.49 h] | 47.49 | 5801-DC | m | 130 | 3.7.3.1 | 1.5.3.1 |  |
| A3740 |  | Montaje y Soportación C.A.G. 1", con Hilo y Copla de Unión, Según Norma ANSI C80-1 | 2.18d | 2025-10-24 | 2025-10-26 | A3730 | 103.55d | 0d | SQM-ELÉCTRICO [138.6 h] | 138.6 | 5801-DC | m | 110 | 3.7.3.2 | 1.5.3.2 |  |
| A3760 |  | Poste Recto/Curvo de Acero Galvanizado, 6 m útiles. | 6.55d | 2025-10-27 | 2025-11-02 | A3740 | 103.55d | 0d | SQM-ELÉCTRICO [276 h] | 276 | 5801-DC | c/u | 11 | 3.7.3.4 | 1.5.3.4 |  |
| A3750 |  | Equipo de Alumbrado Público LED de 120 W, para Poste Tubular 6m.(LUZ CALIDA) | 6.55d | 2025-11-02 | 2025-11-09 | A3740 SS, A3760, A3720 | 103.55d | 0d | SQM-ELÉCTRICO [276 h] | 276 | 5801-DC | c/u | 11 | 3.7.3.3 | 1.5.3.3 |  |
|  | 4 | **MONTAJE, CONEXIÓN Y PRUEBAS EQUIPOS DE CONTROL BOMBAS** |  | 2025-11-09 | 2025-11-14 |  |  |  |  |  |  |  |  |  |  |  |
| A3770 |  | Estación Local y Elementos Asociados. | 2.18d | 2025-11-09 | 2025-11-11 | A3750 | 103.55d | 0d | SQM-ELÉCTRICO [84 h] | 84 | 5801-DC | c/u | 2 | 3.7.4.1 | 1.5.4.1 |  |
| A3780 |  | Cable de Cobre electrolítico Desnudo, 2/0 AWG | 3.27d | 2025-11-11 | 2025-11-14 | A3770 | 103.55d | 0d | SQM-ELÉCTRICO [144 h] | 144 | 5801-DC | c/u | 50 | 3.7.4.2 | 1.5.4.2 | R FF |
|  | 5 | **MONTAJE/HABILITACÓN DE EQUIPOS ELÉCTRICOS PRINCIPALES DATA CENTER** |  | 2025-11-14 | 2025-12-07 |  |  |  |  |  |  |  |  |  |  |  |
| A3790 |  | Subestación Unitaria TAG: 5870-SEU-3100 | 9.82d | 2025-11-14 | 2025-11-24 | A3460 FF, A3750, A3780, A3700 | 103.55d | 0d | SQM-ELÉCTRICO [360 h] | 360 | 5801-DC | c/u | 1 | 3.7.5.1 | 1.5.5.1 | R FF |
| A3800 |  | Tablero de Distribución de Fuerza y Alumbrado TAG: 5870-PNL-3101 | 3.27d | 2025-11-24 | 2025-11-27 | A3790 | 103.55d | 0d | SQM-ELÉCTRICO [124.1 h] | 124.1 | 5801-DC | c/u | 1 | 3.7.5.2 | 1.5.5.2 |  |
| A3810 |  | Tablero de Alumbrado TAG: 5870-TDA-3103 | 3.27d | 2025-11-27 | 2025-11-30 | A3800 | 103.55d | 0d | SQM-ELÉCTRICO [124.1 h] | 124.1 | 5801-DC | c/u | 1 | 3.7.5.3 | 1.5.5.3 |  |
| A3820 |  | Tablero Eléctrico Orion TAG: 5870-PNL-3105 | 3.27d | 2025-11-30 | 2025-12-04 | A3810 | 103.55d | 0d | SQM-ELÉCTRICO [124.1 h] | 124.1 | 5801-DC | c/u | 1 | 3.7.5.4 | 1.5.5.4 |  |
| A3830 |  | Sistema de Almacenamiento de Energía BESS TAG: 5870-BCB-3102 | 3.27d | 2025-12-04 | 2025-12-07 | A3820 | 103.55d | 0d | SQM-ELÉCTRICO [124.1 h] | 124.1 | 5801-DC | c/u | 1 | 3.7.5.5 | 1.5.5.5 |  |

| ID | WBS | Activity | Duration | Start | Finish | Predecessors | Total float | Free float | Resources | Cost | Área | Unidad | Cantidad | Ítem LP | Ìtem EDP |
| --- | --- | --- | --- | --- | --- | --- | --- | --- | --- | --- | --- | --- | --- | --- | --- |
|  | 6 | **OBRAS DE INSTRUMENTACIÓN SECTOR DATA CENTER** |  | 2025-12-07 | 2025-12-17 |  |  |  |  |  |  |  |  |  |  |
|  | 1 | **MONTAJE DE EQUIPOS DE COMUNICACIÓN Y CABECERAS DE F.O. EN RACK DE 19"** |  | 2025-12-07 | 2025-12-13 |  |  |  |  |  |  |  |  |  |  |
| A3840 |  | Switch cisco catalyst, 9500, 24x1 y colocación de TAGs | 1.09d | 2025-12-07 | 2025-12-08 | A3830 | 103.55d | 0d | SQM-INSTRUMENTACIÓN [72 h] | 72 | 5801-DC | c/u | 2 | 3.8.1.1 | 1.6.1.1 |
| A3850 |  | Switch networking interr. Connectrix DS-6610B-L | 1.09d | 2025-12-08 | 2025-12-09 | A3840 | 103.55d | 0d | SQM-INSTRUMENTACIÓN [72 h] | 72 | 5801-DC | c/u | 2 | 3.8.1.1 | 1.6.1.2 |
| A3860 |  | Servidores, poweredge, R660, DELL | 1.09d | 2025-12-09 | 2025-12-10 | A3850 | 103.55d | 0d | SQM-INSTRUMENTACIÓN [240 h] | 240 | 5801-DC | c/u | 5 | 3.8.1.2 | 1.6.1.3 |
| A3870 |  | Servidores, poweredge, 500T, DELL | 1.09d | 2025-12-10 | 2025-12-11 | A3860 | 103.55d | 0d | SQM-INSTRUMENTACIÓN [48 h] | 48 | 5801-DC | c/u | 1 | 3.8.1.2 | 1.6.1.4 |
| A3880 |  | TRANSCEIVER,QSFP,100GBASE,LR4 | 1.09d | 2025-12-11 | 2025-12-12 | A3870 | 103.55d | 0d | SQM-INSTRUMENTACIÓN [6 h] | 6 | 5801-DC | c/u | 1 | 3.8.1.3 | 1.6.1.5 |
| A3890 |  | Conversor,SFP,TRANSCEIVER,10GBASE-T | 1.09d | 2025-12-12 | 2025-12-13 | A3880 | 103.55d | 0d | SQM-INSTRUMENTACIÓN [120 h] | 120 | 5801-DC | c/u | 20 | 3.8.1.4 | 1.6.1.6 |
|  | 2 | **TENDIDO Y CONEXIONADO DE CABLES DE ALIMENTACIÓN DATA CENTER** |  | 2025-12-14 | 2025-12-17 |  |  |  |  |  |  |  |  |  |  |
| A3900 |  | Cable Alimentación Eléctrica de Switches. Considera Suministro y Preparación | 3.27d | 2025-12-14 | 2025-12-17 | A3890 | 103.55d | 0d | SQM-INSTRUMENTACIÓN [168 h] | 168 | 5801-DC | c/u | 6 | 3.8.2.1 | 1.6.2.1 |
|  | 3 | **SUMINSITRO Y MONTAJE DE PROTECCIONES ELÉCTRICAS** |  | 2025-12-14 | 2025-12-17 |  |  |  |  |  |  |  |  |  |  |
| A3910 |  | Protecciones Eléctricas (CB-01;CB-02;CB-03;CB-04;CB-01R;CB-02R;CB-03R;CB-04R), y Borneras | 3.27d | 2025-12-14 | 2025-12-17 | A3900 FF, A3590 | 103.55d | 50.09d | SQM-ELÉCTRICO [168 h] | 168 | 5801-DC | un | 8 | 3.8.3.1 | 1.6.3.1 |
|  | 2 | **RED GN-GL L5 LiOH, ALIMENTACIÓN CALDERA UTILITIES - ÁREA 5801** |  | 2025-10-12 | 2026-01-25 |  |  |  |  |  |  |  |  |  |  |
|  | 1 | **ÁREA 5801 - SECTOR GNL** |  | 2025-10-12 | 2026-01-25 |  |  |  |  |  |  |  |  |  |  |
|  | 1 | **OBRAS CIVILES SECTOR LÍNEA DE GAS** |  | 2025-11-03 | 2025-12-03 |  |  |  |  |  |  |  |  |  |  |
|  | 1 | **MOVIMIENTO DE TIERRAS, EXCAVACIÓN PARA CRUCE DE CAMINO GNL** |  | 2025-11-08 | 2025-11-29 |  |  |  |  |  |  |  |  |  |  |
| A3920 |  | Excavación para Curce de Camino Norte Línes de Gas | 1.09d | 2025-11-08 | 2025-11-09 | A3960 FF | 64.27d | 0d | SQM-OOCC [378 h] | 378 | 5801-GNL | m3 | 83.538 | 4,1,1 | 2.2.1.1 |
| A3940 |  | Transporte de Material a Botadero | 1.09d | 2025-11-09 | 2025-11-10 | A3920, A3960 | 64.27d | 0d | SQM-OOCC [14.4 h] | 14.4 | 5801-GNL | m3 | 83.538 | 4,1,3 | 2.2.1.3 |
| A3950 |  | Arena para Relleno de Curce de Camino Norte Línes de Gas | 2.18d | 2025-11-20 | 2025-11-22 | A3990 | 64.27d | 0d | SQM-OOCC [67.07 h] | 67.07 | 5801-GNL | m3 | 42 | 4,1,4 | 2.2.1.4 |
| A3930 |  | Relleno para Curce de Camino Norte Línes de Gas | 3.27d | 2025-11-26 | 2025-11-29 | A4000 | 114.45d | 0d | SQM-OOCC [170.4 h] | 170.4 | 5801-GNL | m3 | 83.538 | 4,1,2 | 2.2.1.2 |
|  | 2 | **EXCAVACIÓN PARA CAÑERÍA ENTERRADA GNL** |  | 2025-11-03 | 2025-12-03 |  |  |  |  |  |  |  |  |  |  |
| A3960 |  | Excavación para Curce de Camino Sur Línes de Gas | 5.45d | 2025-11-03 | 2025-11-09 | A4020 | 64.27d | 0d | SQM-OOCC [2094.75 h] | 2,094.75 | 5801-GNL | m3 | 129.675 | 4,2,1 | 2.2.2.1 |
| A3980 |  | Transporte de Material a Botadero | 3.27d | 2025-11-10 | 2025-11-13 | A3940 | 64.27d | 0d | SQM-OOCC [79.8 h] | 79.8 | 5801-GNL | m3 | 129.675 | 4,2,3 | 2.2.2.3 |
| A3990 |  | Arena para Relleno de Curce de Camino Sur Línes de Gas | 6.55d | 2025-11-13 | 2025-11-19 | A3980 | 64.27d | 0d | SQM-OOCC [123.89 h] | 123.89 | 5801-GNL | m3 | 60.8 | 4,2,4 | 2.2.2.4 |
| A3970 |  | Relleno para Curce de Camino Sur Línes de Gas | 3.27d | 2025-11-29 | 2025-12-03 | A3930 | 114.45d | 50.18d | SQM-OOCC [950.4 h] | 950.4 | 5801-GNL | m3 | 129.675 | 4,2,2 | 2.2.2.2 |

| ID | WBS | Activity | Duration | Start | Finish | Predecessors | Total float | Free float | Resources | Cost | Área | Unidad | Cantidad | Ítem LP | Ìtem EDP |
| --- | --- | --- | --- | --- | --- | --- | --- | --- | --- | --- | --- | --- | --- | --- | --- |
|  | 3 | **SERVICIOS, CRUCE DE CAMINO GNL** |  | 2025-11-22 | 2025-11-26 |  |  |  |  |  |  |  |  |  |  |
| A4000 |  | Camisa de 8" para Cruce de Camino Norte y Sur, Línea de Gas | 4.36d | 2025-11-22 | 2025-11-26 | A3950 | 64.27d | 0d | SQM-OOCC [441 h] | 441 | 5801-GNL | m | 275 | 5,1,1 | 2.3.1.1 |
|  | 2 | **OBRAS PIPING SECTOR LÍNEA DE GAS** |  | 2025-10-12 | 2026-01-25 |  |  |  |  |  |  |  |  |  |  |
|  | 1 | **MONTAJE DE CAÑERÍAS, LÍNEAS DE GAS** |  | 2025-10-12 | 2025-12-01 |  |  |  |  |  |  |  |  |  |  |
| A4020 |  | Ø 4" - Cañería Acero Carbono ASTM A106 Gr. B (100mm) | 21.82d | 2025-10-12 | 2025-11-03 | A6040 | 64.27d | 0d | SQM-PIPING [3233.15 h] | 3,233.15 | 5801-GNL | m | 830 | 3,1,2 | 2.1.1.2 |
| A4010 |  | Ø 110 mm - Cañería HDPE, PE 100, PN10 (4") | 5.45d | 2025-11-26 | 2025-12-01 | A4000 | 64.27d | 0d | SQM-PIPING [681.78 h] | 681.78 | 5801-GNL | m | 236 | 3,1,1 | 2.1.1.1 |
|  | 2 | **MONTAJE DE VÁLVULAS MANUALES Y FITTING, LÍNEA DE GAS** |  | 2025-12-02 | 2026-01-25 |  |  |  |  |  |  |  |  |  |  |
| A4030 |  | Montaje de Fitting para Líneas GNL | 54.55d | 2025-12-02 | 2026-01-25 | A4020 SS, A4010 | 64.27d | 0d | SQM-PIPING [738.95 h] | 738.95 | 5801-GNL | un | 180 | 99.5 | 99.5 |
| A4040 |  | Válvulas Línea de Gas (Global) | 54.55d | 2025-12-02 | 2026-01-25 | A4030 SS | 64.27d | 0d | SQM-PIPING [192 h] | 192 | 5801-GNL | un | 16 | 99.14 | 99.14 |
|  | 3 | **TIE-IN LÍNEAS ASOCIADAS A GNL** |  | 2026-01-22 | 2026-01-25 |  |  |  |  |  |  |  |  |  |  |
| A4050 |  | TIE-IN 5801-001 Acero Carbono Ø4" | 3.27d | 2026-01-22 | 2026-01-25 | A4020, A4040 FF, A4030 FF, A3970 | 64.27d | 0d | SQM-PIPING [76 h] | 76 | 5801-GNL | gl | 1 | 3,5,1 | 2.1.5.1 |
| A4060 |  | TIE-IN 5801-002 Acero Carbono Ø4" | 3.27d | 2026-01-22 | 2026-01-25 | A4050 FF | 64.27d | 10.82d | SQM-PIPING [120 h] | 120 | 5801-GNL | gl | 1 | 3,5,2 | 2.1.5.2 |
|  | 4 | **FABRICACIÓN Y MONTAJE DE SOPORTES** |  | 2025-11-04 | 2025-11-24 |  |  |  |  |  |  |  |  |  |  |
| A4070 |  | Soportes tipo SOP 01-A | 6.55d | 2025-11-04 | 2025-11-11 | A4020 SS+22.91d | 82.82d | 0d | SQM-PIPING [3.75 h] | 3.75 | 5801-GNL | un | 10 | 3,6,1 | 2.1.6.1 |
| A4080 |  | Soportes tipo SOP 01-B | 6.55d | 2025-11-11 | 2025-11-17 | A4070 | 82.82d | 0d | SQM-PIPING [55.5 h] | 55.5 | 5801-GNL | un | 6 | 3,6,2 | 2.1.6.2 |
| A4090 |  | Soportes tipo SOP 02 | 6.55d | 2025-11-17 | 2025-11-24 | A4080 | 82.82d | 0d | SQM-PIPING [97.88 h] | 97.88 | 5801-GNL | un | 281 | 3,6,3 | 2.1.6.3 |
|  | 3 | **ESTANQUE PIVOTE** |  | 2025-09-12 | 2026-02-05 |  |  |  |  |  |  |  |  |  |  |
|  | 1 | **ÁREA 5817 - SECTOR TK-6060** |  | 2025-09-12 | 2026-01-09 |  |  |  |  |  |  |  |  |  |  |
|  | 1 | **OBRAS CIVILES TK-6060** |  | 2025-09-12 | 2025-10-21 |  |  |  |  |  |  |  |  |  |  |
|  | 1 | **LOSA Y FUNDACIONES TK-6060** |  | 2025-09-12 | 2025-09-16 |  |  |  |  |  |  |  |  |  |  |
|  | 1 | **MOVIMIENTO MASIVO DE TIERRA** |  | 2025-09-12 | 2025-09-12 |  |  |  |  |  |  |  |  |  |  |
| A4100 |  | Excavación Losa Estanque Pivote | 0d | 2025-09-12 | 2025-09-12 | A1070 SS | 61d | 0d | SQM-OOCC |  | 5817-TK6060 | m3 | 0 | 5.1.1. | 8.5.1.1 |
| A4110 |  | Relleno Losa Estanque Pivote | 0d | 2025-09-12 | 2025-09-12 | A4100 | 61d | 0d | SQM-OOCC |  | 5817-TK6060 | m3 | 0 | 5.1.2. | 8.5.1.2 |
|  | 2 | **SISTEMA DE IMPERMEABILIZACIÓN** |  | 2025-09-12 | 2025-09-12 |  |  |  |  |  |  |  |  |  |  |
| A4120 |  | Carpeta de HDPE Losa Estanque Pivote | 0d | 2025-09-12 | 2025-09-12 | A4110 | 61d | 0d | SQM-OOCC |  | 5817-TK6060 | m2 | 0 | 5.2.1. | 8.5.2.1 |
| A4130 |  | Membrana de Geotextil Losa Estanque Pivote | 0d | 2025-09-12 | 2025-09-12 | A4120 | 61d | 0d | SQM-OOCC |  | 5817-TK6060 | m2 | 0 | 5.2.2. | 8.5.2.2 |

Notes:
- A4000: Corregir: SE SOLICITA POR ITO TODO LO QUE VAYA SOTERRADO LLEVARÍA ENCAMISADO
- A4020: Corregir: MODIFICAR FECHA DE INICIO
- A4050: Corregir: R FF

| ID | WBS | Activity | Duration | Start | Finish | Predecessors | Total float | Free float | Resources | Cost | Área | Unidad | Cantidad | Ítem LP | Ìtem EDP |
| --- | --- | --- | --- | --- | --- | --- | --- | --- | --- | --- | --- | --- | --- | --- | --- |
|  | 3 | **FABRICACIÓN DE LOSA Y FUNDACIONES** |  | 2025-09-12 | 2025-09-16 |  |  |  |  |  |  |  |  |  |  |
| A4140 |  | Hormigón G30 Losa Fundación Estanque Pivote | 0d | 2025-09-12 | 2025-09-12 | A4160, A4130 | 61d | 0d | SQM-OOCC |  | 5817-TK6060 | m3 | 0 | 5.3.1. | 8.5.3.1 |
| A4150 |  | Hormigón G30 Pedestal PD-1 Bombas Estanque Pivote | 0d | 2025-09-12 | 2025-09-12 | A4140 | 113.36d | 0d | SQM-OOCC |  | 5817-TK6060 | m3 | 0 | 5.3.2. | 8.5.3.2 |
| A4160 |  | Armadura de refuerzo A630-420H Losa Estanque Pivote | 0d | 2025-09-12 | 2025-09-12 | A4100 | 61d | 0d | SQM-OOCC |  | 5817-TK6060 | kg | 0 | 5.4.1. | 8.5.4.1 |
| A4170 |  | Grating FRP T3232 Bomba Sumidero | 2.18d | 2025-09-12 | 2025-09-14 | A4150 | 134.09d | 0d | SQM-OOCC [4.55 h] | 4.55 | 5817-TK6060 | m2 | 1 | 1.7.1. | 8.1.1.1 |
| A4180 |  | Estructura Liviana de Bomba Sumidero | 2.18d | 2025-09-14 | 2025-09-16 | A4170 | 134.09d | 50.18d | SQM-OOCC [5.47 h] | 5.47 | 5817-TK6060 | kg | 36 | 1.8.1. | 8.1.2.1 |
|  | 2 | **CRUCE DE CAMINO** |  | 2025-09-12 | 2025-10-21 |  |  |  |  |  |  |  |  |  |  |
|  | 1 | **MOVIMIENTO MASIVO DE TIERRA PARA CRUCE DE CAMINOS** |  | 2025-09-12 | 2025-10-21 |  |  |  |  |  |  |  |  |  |  |
| A4190 |  | Excavación Cruce de Camino 1 | 7.64d | 2025-09-12 | 2025-09-19 | A4130 | 70.82d | 0d | SQM-OOCC [513.98 h] | 513.98 | C.CAMINO | m3 | 55.16 | 6.1.1. | 8.6.1.6 |
| A4210 |  | Relleno Estructural Cruce de Camino 1 | 3.27d | 2025-09-19 | 2025-09-23 | A4190 | 70.82d | 0d | SQM-OOCC [130.34 h] | 130.34 | C.CAMINO | m3 | 32.13 | 6.1.3. | 8.6.1.2 |
| A4230 |  | Excavación Cruce de Camino 2 | 5.45d | 2025-09-19 | 2025-09-25 | A4190 | 175.55d | 0d | SQM-OOCC [367.13 h] | 367.13 | C.CAMINO | m3 | 51 | 6.1.5. | 8.6.1.5 |
| A4220 |  | Cama de Arena Cruce de Camino 1 | 1.09d | 2025-09-23 | 2025-09-24 | A4210 | 70.82d | 0d | SQM-OOCC [8.44 h] | 8.44 | C.CAMINO | m3 | 2.8 | 6.1.4. | 8.6.1.8 |
| A4250 |  | Relleno Estructural Cruce de Camino 2 | 4.36d | 2025-09-25 | 2025-09-29 | A4230 | 175.55d | 0d | SQM-OOCC [93.11 h] | 93.11 | C.CAMINO | m3 | 27 | 6.1.7. | 8.6.1.1 |
| A4260 |  | Cama de Arena Cruce de Camino 2 | 1.09d | 2025-09-29 | 2025-09-30 | A4250 | 175.55d | 18.55d | SQM-OOCC [6.03 h] | 6.03 | C.CAMINO | m3 | 2.4 | 6.1.8. | 8.6.1.7 |
| A4200 |  | Relleno compactado Cruce de Camino 1 | 6.55d | 2025-10-07 | 2025-10-13 | A4280 | 162.45d | 5.45d | SQM-OOCC [93.73 h] | 93.73 | C.CAMINO | m3 | 14.07 | 6.1.2. | 8.6.1.4 |
| A4240 |  | Relleno compactado Cruce de Camino 2 | 2.18d | 2025-10-19 | 2025-10-21 | A4300, A4200, A4260 | 157d | 74.18d | SQM-OOCC [66.95 h] | 66.95 | C.CAMINO | m3 | 14.95 | 6.1.6. | 8.6.1.3 |
|  | 2 | **ENCAMISADO PARA CRUCE DE CAMINOS** |  | 2025-09-24 | 2025-10-19 |  |  |  |  |  |  |  |  |  |  |
| A4270 |  | Cañería 20" Cruce de Camino 1 | 0d | 2025-09-24 | 2025-09-24 | A4220 | 157d | 0d | SQM-OOCC |  | C.CAMINO | kg | 0 | 6.2.1. | 8.6.2.2 |
| A4280 |  | Cañería 12" Cruce de Camino 1 | 9.82d | 2025-09-27 | 2025-10-07 | A4270 SS+3.27d | 157d | 0d | SQM-OOCC [651.74 h] | 651.74 | C.CAMINO | kg | 6246 | 6.2.2. | 8.6.2.4 |
| A4290 |  | Cañería 20" Cruce de Camino 2 | 0d | 2025-10-07 | 2025-10-07 | A4280 | 157d | 0d | SQM-OOCC |  | C.CAMINO | kg | 0 | 6.2.3. | 8.6.2.1 |
| A4300 |  | Cañería 12" Cruce de Camino 2 | 8.73d | 2025-10-10 | 2025-10-19 | A4290 SS+3.27d | 157d | 0d | SQM-OOCC [481.72 h] | 481.72 | C.CAMINO | kg | 4858 | 6.2.4. | 8.6.2.3 |
|  | 3 | **OBRAS MECÁNICAS TK-6060** |  | 2025-09-12 | 2025-11-10 |  |  |  |  |  |  |  |  |  |  |
|  | 1 | **MONTAJE Y PRUEBAS DE EQUIPOS MECÁNICOS TK-6060** |  | 2025-09-12 | 2025-11-10 |  |  |  |  |  |  |  |  |  |  |
| A4320 |  | Estanque Pivote y Plataforma Sumerior TAG: 5817-EST-6060 | 54.55d | 2025-09-12 | 2025-11-05 | A4140 | 61d | 0d | SQM-MECANICA [2628 h] | 2,628 | 5817-TK6060 | un | 1 | 1.1.1 | 5.1.1.1 |
| A4340 |  | Bomba Centrífuga y Motor TAG: 5817-BBA-6069; 5817-MTR-6070 | 4.36d | 2025-09-12 | 2025-09-16 | A4150 | 113.36d | 0d | SQM-MECANICA [139.9 h] | 139.9 | 5817-TK6060 | un | 1 | 1.1.3 | 5.1.1.5 |
| A4350 |  | Bomba Centrífuga y Motor TAG: 5817-BBA-6072; 5817-MTR-6073 | 4.36d | 2025-09-12 | 2025-09-16 | A4340 SS | 113.36d | 0d | SQM-MECANICA [139.9 h] | 139.9 | 5817-TK6060 | un | 1 | 1.1.4 | 5.1.1.6 |
| A4360 |  | Bomba Centrífuga y Motor TAG: 5817-BBA-6077; 5817-MTR-6078 | 4.36d | 2025-09-16 | 2025-09-20 | A4350 | 113.36d | 32.73d | SQM-MECANICA [139.9 h] | 139.9 | 5817-TK6060 | un | 1 | 1.1.5 | 5.1.1.3 |
| A4330 |  | Agitador Vertical Estanque Pivote TAG: 5817-AGT-6061 / 5817-MTR-6062 | 10.91d | 2025-10-25 | 2025-11-05 | A4320 FF | 80.64d | 0d | SQM-MECANICA [478.75 h] | 478.75 | 5817-TK6060 | un | 1 | 1.1.2 | 5.1.1.4 |
| A4370 |  | Bomba Sumidero y Motor TAG: 5817-BBS-6075; 5817-MTR-6076 | 4.36d | 2025-11-05 | 2025-11-10 | A4360, A4180, A4330 | 83.91d | 0d | SQM-MECANICA [139.9 h] | 139.9 | 5817-TK6060 | un | 1 | 1.1.6 | 5.1.1.2 |

| ID | WBS | Activity | Duration | Start | Finish | Predecessors | Total float | Free float | Resources | Cost | Área | Unidad | Cantidad | Ítem LP | Ìtem EDP | Corregir |
| --- | --- | --- | --- | --- | --- | --- | --- | --- | --- | --- | --- | --- | --- | --- | --- | --- |
|  | 4 | **OBRAS PIPING TK-6060** |  | 2025-09-16 | 2026-01-06 |  |  |  |  |  |  |  |  |  |  |  |
|  | 1 | **MONTAJE Y FABRICACIÓN DE CAÑERÌAS TK-6060** |  | 2025-09-16 | 2026-01-06 |  |  |  |  |  |  |  |  |  |  |  |
|  | 1 | **FABRICACIÓN CAÑERÍAS TK-6060** |  | 2025-09-16 | 2025-12-19 |  |  |  |  |  |  |  |  |  |  |  |
| A4380 |  | Ø 6" - Cañería Acero Inoxidable - Fabricación | 49.09d | 2025-09-16 | 2025-11-04 | A4320 SS+4.36d | 61d | 0d | SQM-PIPING [8216 h] | 8,216 | 5817-TK6060 | un | 632 | 2.1.49 | 5.2.1.9 |  |
| A4390 |  | Ø 4" - Cañería Acero Inoxidable - Fabricación | 15.27d | 2025-10-22 | 2025-11-06 | A4380 FF+2.18d | 87.18d | 3.27d | SQM-PIPING [813.2 h] | 813.2 | 5817-TK6060 | un | 107 | 2.1.50 | 5.2.1.18 | R FF |
| A4400 |  | Ø 2" - Cañería Acero Inoxidable - Fabricación | 13.09d | 2025-11-10 | 2025-11-23 | A4390, A4330, A4370 | 83.91d | 1.09d | SQM-PIPING [1416.4 h] | 1,416.4 | 5817-TK6060 | un | 345 | 2.1.51 | 5.2.1.33 |  |
| A4420 |  | Ø 1-1/2" - Cañería Acero Inoxidable - Fabricación | 2.18d | 2025-11-24 | 2025-11-26 | A4400, A4090 | 82.82d | 0d | SQM-PIPING [6 h] | 6 | 5817-TK6060 | un | 2 | 2.1.53 | 5.2.1.54 |  |
| A4410 |  | Ø 1" - Cañería Acero Inoxidable - Fabricación | 3.27d | 2025-11-26 | 2025-11-29 | A4420 | 82.82d | 0d | SQM-PIPING [30 h] | 30 | 5817-TK6060 | un | 15 | 2.1.52 | 5.2.1.50 |  |
| A4430 |  | Ø 8" - Cañería CPVC, SCH 80 - Fabricación | 3.27d | 2025-11-29 | 2025-12-03 | A4410 | 82.82d | 0d | SQM-PIPING [30.25 h] | 30.25 | 5817-TK6060 | un | 11 | 2.1.54 | 5.2.1.1 |  |
| A4440 |  | Ø 4" - Cañería CPVC, SCH 80 - Fabricación | 13.09d | 2025-12-03 | 2025-12-16 | A4430 | 82.82d | 0d | SQM-PIPING [123.75 h] | 123.75 | 5817-TK6060 | un | 90 | 2.1.55 | 5.2.1.19 |  |
| A4450 |  | Ø 2" - Cañería CPVC, SCH 80 - Fabricación | 3.27d | 2025-12-16 | 2025-12-19 | A4440 | 82.82d | 0d | SQM-PIPING [11.55 h] | 11.55 | 5817-TK6060 | un | 14 | 2.1.56 | 5.2.1.34 |  |
|  | 2 | **MONTAJE CAÑERÍAS TK-6060** |  | 2025-09-24 | 2026-01-06 |  |  |  |  |  |  |  |  |  |  |  |
| A4490 |  | Ø 6" - Cañería Acero Inoxidable - Montaje | 65.45d | 2025-09-24 | 2025-11-28 | A4380 SS+7.64d | 86.09d | 0d | SQM-PIPING [4222.01 h] | 4,222.01 | 5817-TK6060 | m | 1370 | 2.1.4 | 5.2.1.15 | R FF |
| A4500 |  | Ø 4" - Cañería Acero Inoxidable - Montaje | 13.09d | 2025-11-28 | 2025-12-11 | A4490 | 86.09d | 0d | SQM-PIPING [130.62 h] | 130.62 | 5817-TK6060 | m | 128 | 2.1.5 | 5.2.1.30 |  |
| A4510 |  | Ø 2" - Cañería Acero Inoxidable - Montaje | 10.91d | 2025-12-11 | 2025-12-22 | A4500 | 87.18d | 0d | SQM-PIPING [348.44 h] | 348.44 | 5817-TK6060 | m | 124.8153931 | 2.1.6 | 5.2.1.48 |  |
| A4460 |  | Ø 8" - Cañería CPVC, SCH 80 - Montaje | 3.27d | 2025-12-19 | 2025-12-22 | A4450, A4320 | 82.82d | 0d | SQM-PIPING [35.13 h] | 35.13 | 5817-TK6060 | m | 7.5 | 2.1.1 | 5.2.1.5 |  |
| A4470 |  | Ø 4" - Cañería CPVC, SCH 80 - Montaje | 15.27d | 2025-12-22 | 2026-01-06 | A4460 | 82.82d | 0d | SQM-PIPING [380.58 h] | 380.58 | 5817-TK6060 | m | 96 | 2.1.2 | 5.2.1.29 |  |
| A4520 |  | Ø 1-1/2" - Cañería Acero Inoxidable - Montaje | 2.18d | 2025-12-22 | 2025-12-24 | A4510 | 87.18d | 0d | SQM-PIPING [0.5 h] | 0.5 | 5817-TK6060 | m | 0.3 | 2.1.7 | 5.2.1.56 |  |
| A4530 |  | Ø 1" - Cañería Acero Inoxidable - Montaje | 5.45d | 2025-12-24 | 2025-12-30 | A4550 FF, A4520, A4540 FF | 87.18d | 0d | SQM-PIPING [0.39 h] | 0.39 | 5817-TK6060 | m | 0.346754672 | 2.1.8 | 5.2.1.52 | R FF |
| A4480 |  | Ø 2" - Cañería CPVC, SCH 80 - Montaje | 3.27d | 2026-01-03 | 2026-01-06 | A4470 FF, A4660, A4240 | 82.82d | 29.36d | SQM-PIPING [22.5 h] | 22.5 | 5817-TK6060 | m | 14.285853238 | 2.1.3 | 5.2.1.47 |  |
|  | 2 | **MONTAJE DE FITTING Y VÁLVULAS TK-6060** |  | 2025-09-16 | 2025-12-30 |  |  |  |  |  |  |  |  |  |  |  |
| A4540 |  | Montaje de Fitting para Líneas TK-6060 | 104.73d | 2025-09-16 | 2025-12-30 | A4380 SS | 87.18d | 0d | SQM-PIPING [6657.54 h] | 6,657.54 | 5817-TK6060 | un | 619 | 99.6 | 99.6 |  |
| A4550 |  | Válvulas Sector TK-6060 (Global) | 104.73d | 2025-09-16 | 2025-12-30 | A4540 SS | 87.18d | 0d | SQM-PIPING [762.1 h] | 762.1 | 5817-TK6060 | un | 74 | 99.15 | 99.15 |  |
|  | 3 | **FABRICACIÓN Y MONTAJE DE SOPORTES TK-6060** |  | 2025-09-24 | 2025-11-16 |  |  |  |  |  |  |  |  |  |  |  |
| A4560 |  | Soporte N°001A - Pedestal con Repisa de Acero Estructural para Tuberías Diámetros Pequeños | 2.18d | 2025-09-24 | 2025-09-26 | A4380 SS, A4490 SS | 111.18d | 0d | SQM-PIPING [4.25 h] | 4.25 | 5817-TK6060 | un | 1 | 2.4.1 | 5.2.4.9 |  |
| A4570 |  | Soporte N°001B - Pedestal con Repisa de Acero Estructural para Tuberías Diámetros Pequeños | 10.91d | 2025-09-26 | 2025-10-07 | A4560 | 111.18d | 0d | SQM-PIPING [21.25 h] | 21.25 | 5817-TK6060 | un | 5 | 2.4.2 | 5.2.4.8 |  |
| A4580 |  | Soporte N°002 - Pedestal, Acero Estructural para Tuberías Diámetros Pequeños | 4.36d | 2025-10-07 | 2025-10-11 | A4570 | 111.18d | 0d | SQM-PIPING [8.5 h] | 8.5 | 5817-TK6060 | un | 2 | 2.4.3 | 5.2.4.7 |  |
| A4590 |  | Soporte N°003A - Pedestal Tipo TEE, Acero Estructural para Tuberías Diámetros Pequeños | 4.36d | 2025-10-11 | 2025-10-16 | A4580 | 111.18d | 0d | SQM-PIPING [8.5 h] | 8.5 | 5817-TK6060 | un | 2 | 2.4.4 | 5.2.4.6 |  |
| A4600 |  | Soporte N°003B - Pedestal Tipo TEE, Acero Estructural para Tuberías Diámetros Pequeños | 6.55d | 2025-10-16 | 2025-10-22 | A4590 | 111.18d | 0d | SQM-PIPING [12.75 h] | 12.75 | 5817-TK6060 | un | 3 | 2.4.5 | 5.2.4.5 |  |
| A4610 |  | Soporte N°004 - Arco Tipo Vertical, Acero Estructural | 2.18d | 2025-10-22 | 2025-10-24 | A4600 | 111.18d | 0d | SQM-PIPING [4.25 h] | 4.25 | 5817-TK6060 | un | 1 | 2.4.6 | 5.2.4.4 |  |
| A4620 |  | Soporte N°005 - Pedestal y Voladizo Tipo Simple, Acero Estructural para Tuberías Diámetros Pequeños | 4.36d | 2025-10-24 | 2025-10-29 | A4610 | 111.18d | 0d | SQM-PIPING [8.5 h] | 8.5 | 5817-TK6060 | un | 2 | 2.4.7 | 5.2.4.3 |  |
| A4630 |  | Soporte N°006 - Pedestal y Voladizo Tipo Simple, Acero Estructural para Tuberías Diámetros Pequeños | 4.36d | 2025-10-29 | 2025-11-02 | A4620 | 111.18d | 0d | SQM-PIPING [8.5 h] | 8.5 | 5817-TK6060 | un | 2 | 2.4.8 | 5.2.4.2 |  |
| A4640 |  | Soporte Primario Tipo "U" (Para Uso General) | 14.18d | 2025-11-02 | 2025-11-16 | A4630 | 128.64d | 41.45d | SQM-PIPING [5 h] | 5 | 5817-TK6060 | un | 450 | 2.4.9 | 5.2.4.1 |  |

| ID | WBS | Activity | Duration | Start | Finish | Predecessors | Total float | Free float | Resources | Cost | Área | Unidad | Cantidad | Ítem LP | Ìtem EDP | Corregir |
| --- | --- | --- | --- | --- | --- | --- | --- | --- | --- | --- | --- | --- | --- | --- | --- | --- |
|  | 4 | **TIE-IN DE LÍNEAS ASOCIADAS A TK-6060** |  | 2025-12-28 | 2025-12-30 |  |  |  |  |  |  |  |  |  |  |  |
| A4650 |  | TIE-IN N° 1433 - 5836-EST-3015 a Línea Proyectada 100-DR-5817-P2-6630 | 2.18d | 2025-12-28 | 2025-12-30 | A4530 FF | 87.18d | 0d | SQM-PIPING [50.67 h] | 50.67 | 5817-TK6060 | un | 1 | 2.3.1 | 5.2.3.2 |  |
| A4660 |  | TIE-IN N° 1434 - 5836-EST-3015 a Línea Proyectada 100-DR-5817-P2-6610 | 2.18d | 2025-12-28 | 2025-12-30 | A4650 FF, A4640 | 87.18d | 4.36d | SQM-PIPING [50.67 h] | 50.67 | 5817-TK6060 | un | 1 | 2.3.2 | 5.2.3.1 |  |
|  | 5 | **AISLACIÓN LÍNEAS TK-6060** |  | 2025-10-21 | 2026-01-03 |  |  |  |  |  |  |  |  |  |  |  |
| A4670 |  | Ø 6" - Aislación de Lana Mineral de 1,5" de espesor | 38.18d | 2025-10-21 | 2025-11-28 | A4490 FF | 99.18d | 13.09d | SQM-PIPING [6664.65 h] | 6,664.65 | 5817-TK6060 | un | 1370 | 2.1.9 | 5.2.1.16 |  |
| A4680 |  | Ø 4" - Aislación de Lana Mineral de 1,5" de espesor | 7.64d | 2025-12-11 | 2025-12-19 | A4500, A4670 | 86.09d | 0d | SQM-PIPING [258.72 h] | 258.72 | 5817-TK6060 | un | 96 | 2.1.10 | 5.2.1.31 |  |
| A4690 |  | Ø 2" - Aislación de Lana Mineral de 1,5" de espesor | 15.27d | 2025-12-19 | 2026-01-03 | A4510 FF, A4680 | 86.09d | 32.64d | SQM-PIPING [52.3 h] | 52.3 | 5817-TK6060 | un | 16.342386578 | 2.1.11 | 5.2.1.49 |  |
|  | 6 | **RED DE AIRE** |  | 2025-11-29 | 2026-01-01 |  |  |  |  |  |  |  |  |  |  |  |
|  | 1 | **FABRICACIÓN Y MONTAJE DE CAÑERÍAS RED DE AIRE** |  | 2025-11-29 | 2025-12-27 |  |  |  |  |  |  |  |  |  |  |  |
| A4700 |  | Ø 1" - Cañería Acero Inoxidable - Fabricación | 15.27d | 2025-11-29 | 2025-12-15 | A4410 | 87.18d | 0d | SQM-PIPING [396 h] | 396 | AIRE | un | 198 | 2.1.13 | 9.1.1.10 |  |
| A4720 |  | Ø 1" - Cañería Acero Inoxidable - Montaje | 5.45d | 2025-12-03 | 2025-12-08 | A4700 SS+3.27d | 87.18d | 0d | SQM-PIPING [173.99 h] | 173.99 | AIRE | m | 155.8135 | 2.1.1 | 9.1.1.14 |  |
| A4710 |  | Ø 3/4" - Cañería Acero Inoxidable - Fabricación | 15.27d | 2025-12-08 | 2025-12-23 | A4720 | 87.18d | 0d | SQM-PIPING [224 h] | 224 | AIRE | un | 128 | 2.1.14 | 9.1.1.1 |  |
| A4730 |  | Ø 3/4" - Cañería Acero Inoxidable - Montaje | 3.27d | 2025-12-23 | 2025-12-27 | A4740 FF, A4750 FF, A4710 | 87.18d | 0d | SQM-PIPING [8.64 h] | 8.64 | AIRE | m | 11.059 | 2.1.2 | 9.1.1.7 | R FF |
|  | 2 | **MONTAJE DE FITTING Y VÁLVULAS RED DE AIRE** |  | 2025-11-29 | 2025-12-27 |  |  |  |  |  |  |  |  |  |  |  |
| A4740 |  | Fitting Líneas de Aire (Global) | 27.27d | 2025-11-29 | 2025-12-27 | A4700 SS | 87.18d | 0d | SQM-PIPING [674.11 h] | 674.11 | AIRE | un | 229.972347629797 | 99.7 | 99.7 |  |
| A4750 |  | Válvulas Líneas de Aire (Global) | 27.27d | 2025-11-29 | 2025-12-27 | A4700 SS | 87.18d | 0d | SQM-PIPING [325.88 h] | 325.88 | AIRE | un | 114 | 99.16 | 99.16 |  |
|  | 3 | **TIE-IN DE LÍNEAS ASOCIADAS A RED DE AIRE** |  | 2025-12-22 | 2026-01-01 |  |  |  |  |  |  |  |  |  |  |  |
| A4760 |  | TIE-IN N° 1425 - 150-IA-5771-I1-2486 a Línea Proyectada 25-IA-5771-I1-1630 | 4.36d | 2025-12-22 | 2025-12-27 | A4730 FF | 87.18d | 0d | SQM-PIPING [46.67 h] | 46.67 | AIRE | un | 1 | 2.3.1 | 9.1.3.6 |  |
| A4770 |  | TIE-IN N° 1426 - 25-IA-5871-I1-1644 a Línea Proyectada 25-IA-5871-I1-1634 | 1.09d | 2025-12-27 | 2025-12-28 | A4760 | 87.18d | 0d | SQM-PIPING [29 h] | 29 | AIRE | un | 1 | 2.3.2 | 9.1.3.5 |  |
| A4780 |  | TIE-IN N° 1427 - 25-IA-5871-I1-1644 a Línea Proyectada 25-IA-5871-I1-1638 | 1.09d | 2025-12-28 | 2025-12-29 | A4770 | 87.18d | 0d | SQM-PIPING [29 h] | 29 | AIRE | un | 1 | 2.3.3 | 9.1.3.4 |  |
| A4790 |  | TIE-IN N° 1428 - Líne Existente (TAG por Confirmar) a Línea Proyectada 25-IA-5871-I1-1642 | 1.09d | 2025-12-29 | 2025-12-30 | A4780 | 87.18d | 0d | SQM-PIPING [29 h] | 29 | AIRE | un | 1 | 2.3.4 | 9.1.3.3 |  |
| A4800 |  | TIE-IN N° 1429 - Línea Existente (TAG por Confirmar) a Línea Proyectada 25-IA-5871-I1-1646 | 1.09d | 2025-12-30 | 2025-12-31 | A4790 | 87.18d | 0d | SQM-PIPING [29 h] | 29 | AIRE | un | 1 | 2.3.5 | 9.1.3.2 |  |
| A4810 |  | TIE-IN N° 1430 - Línea Existente (TAG por Confirmar) a Línea Proyectada 25-IA-5871-I1-1649 | 1.09d | 2025-12-31 | 2026-01-01 | A4800 | 87.18d | 6.55d | SQM-PIPING [29 h] | 29 | AIRE | un | 1 | 2.3.6 | 9.1.3.1 |  |
|  | 5 | **OBRAS ELÉCTRICAS TK-6060** |  | 2025-10-23 | 2025-12-28 |  |  |  |  |  |  |  |  |  |  |  |
|  | 1 | **MONTAJE DE CANALIZACIÓN Y FERRETERÍA TK-6060** |  | 2025-10-23 | 2025-11-23 |  |  |  |  |  |  |  |  |  |  |  |
| A4820 |  | EPC y Copla Porta Conductores 600x100mm e:2,5 mm, tiras 3m. Incluir tapa dos aguas, eclisas y pernos de unión. | 13.09d | 2025-10-23 | 2025-11-05 | A4360, A4330 FF | 80.64d | 0d | SQM-ELÉCTRICO [1120 h] | 1,120 | 5817-TK6060 | m | 200 | 3.2.1 | 5.3.2.1 | MODIFICAR FECHA PARA QUE TERMINE DESPUES DEL PIPING |
| A4830 |  | EPC Curva de 90°, 600x100mm e:2,5mm. Incluir tapa dos aguas, eclisas y pernos de unión. | 3.27d | 2025-11-02 | 2025-11-05 | A4820 FF | 80.64d | 0d | SQM-ELÉCTRICO [56 h] | 56 | 5817-TK6060 | un | 10 | 3.2.2 | 5.3.2.2 | R FF |
| A4840 |  | Canalización y Copla de Conduit de Acero Galvanizado 6"Ø, Conduit ANSI C80.1 | 7.64d | 2025-11-05 | 2025-11-13 | A4830 | 124.27d | 0d | SQM-ELÉCTRICO [441.21 h] | 441.21 | 5817-TK6060 | m | 110 | 3.2.3 | 5.3.2.7 |  |
| A4880 |  | Canalización y Copla de Conduit de Acero Galvanizado 2"Ø, Conduit ANSI C80.1 | 3.27d | 2025-11-05 | 2025-11-09 | A4820 | 92.64d | 0d | SQM-ELÉCTRICO [56.7 h] | 56.7 | 5817-TK6060 | m | 30 | 3.2.7 | 5.3.2.8 |  |
| A4900 |  | Canalización y Copla de Conduit de Acero Galvanizado 1 ½"Ø, Conduit ANSI C80.1 | 7.64d | 2025-11-09 | 2025-11-16 | A4880 | 92.64d | 0d | SQM-ELÉCTRICO [441 h] | 441 | 5817-TK6060 | m | 350 | 3.2.9 | 5.3.2.10 |  |
| A4850 |  | Canalización y Copla de Conduit Flexible Metálico con Cubierta PVC 6" Ø Trabajo Pesado | 3.27d | 2025-11-13 | 2025-11-16 | A4840 | 124.27d | 0d | SQM-ELÉCTRICO [50.4 h] | 50.4 | 5817-TK6060 | m | 15 | 3.2.4 | 5.3.2.3 |  |
| A4860 |  | Canalización y Copla de Conduit de Acero Galvanizado 2 ½"Ø, Conduit ANSI C80.1 | 3.27d | 2025-11-16 | 2025-11-19 | A4850 | 124.27d | 10.91d | SQM-ELÉCTRICO [85.05 h] | 85.05 | 5817-TK6060 | m | 45 | 3.2.5 | 5.3.2.9 |  |
| A4870 |  | Canalización y Copla de Conduit Flexible Metálico con Cubierta PVC 2 ½" Ø Trabajo Pesado | 1.09d | 2025-11-16 | 2025-11-17 | A4900 | 92.64d | 0d | SQM-ELÉCTRICO [9.45 h] | 9.45 | 5817-TK6060 | m | 5 | 3.2.6 | 5.3.2.5 |  |
| A4920 |  | Perno de Ensamble de Malla a Tierra en E.P.C. | 2.18d | 2025-11-16 | 2025-11-18 | A4900 | 107.91d | 0d | SQM-ELÉCTRICO [12.6 h] | 12.6 | 5817-TK6060 | un | 200 | 3.1.5 | 5.3.1.1 |  |
| A4890 |  | Canalización y Copla de Conduit Flexible Metálico con Cubierta PVC 2" Ø Trabajo Pesado | 1.09d | 2025-11-17 | 2025-11-18 | A4870 | 92.64d | 0d | SQM-ELÉCTRICO [9.45 h] | 9.45 | 5817-TK6060 | m | 5 | 3.2.8 | 5.3.2.4 |  |
| A4910 |  | Canalización y Copla de Conduit Flexible Metálico con Cubierta PVC 1 ½" Ø Trabajo Pesado | 4.36d | 2025-11-18 | 2025-11-23 | A4890 | 92.64d | 0d | SQM-ELÉCTRICO [75.6 h] | 75.6 | 5817-TK6060 | m | 60 | 3.2.10 | 5.3.2.6 |  |

| ID | WBS | Activity | Duration | Start | Finish | Predecessors | Total float | Free float | Resources | Cost | Área | Unidad | Cantidad | Ítem LP | Ìtem EDP |
| --- | --- | --- | --- | --- | --- | --- | --- | --- | --- | --- | --- | --- | --- | --- | --- |
|  | 2 | **TENDIDO Y CONEXIONADO DE CABLES DE ALIMENTACIÓN TK-6060** |  | 2025-11-23 | 2025-12-15 |  |  |  |  |  |  |  |  |  |  |
| A4930 |  | Cable Monoconductor de Cobre con Aislación XLPE, 1C #500 MCM, Clase 1 kV | 17.45d | 2025-11-23 | 2025-12-10 | A4910 | 92.64d | 0d | SQM-ELÉCTRICO [1737 h] | 1,737 | 5817-TK6060 | m | 1800 | 3.3.1 | 5.3.3.7 |
| A4990 |  | Cable Multiconductor de Cobre con Aislación XLPE, 1X4C #2 AWG, Clase 1 kV | 2.18d | 2025-11-23 | 2025-11-25 | A5000 SS | 107.91d | 0d | SQM-ELÉCTRICO [31.6 h] | 31.6 | 5817-TK6060 | m | 20 | 3.3.7 | 5.3.3.2 |
| A5000 |  | Cable Multiconductor de Cobre con Aislación de XLPE, 1x5C #12 AWG, Clase 1 kV | 2.18d | 2025-11-23 | 2025-11-25 | A5010, A4910 | 107.91d | 0d | SQM-ELÉCTRICO [47.49 h] | 47.49 | 5817-TK6060 | m | 62 | 3.3.8 | 5.3.3.6 |
| A4970 |  | Cable Multiconductor de Cobre con Aislación XLPE, 1X3C #4 AWG, Clase 1 kV | 3.27d | 2025-11-25 | 2025-11-28 | A4980 SS | 107.91d | 0d | SQM-ELÉCTRICO [157.36 h] | 157.36 | 5817-TK6060 | m | 196 | 3.3.5 | 5.3.3.5 |
| A4980 |  | Cable Multiconductor de Cobre con Aislación XLPE, 1X4C #10 AWG, Clase 1 kV | 2.18d | 2025-11-25 | 2025-11-27 | A4990 | 107.91d | 0d | SQM-ELÉCTRICO [10.82 h] | 10.82 | 5817-TK6060 | m | 10 | 3.3.6 | 5.3.3.3 |
| A4960 |  | Cable Multiconductor de Cobre con Aislación XLPE, 1X3C #8 AWG, Clase 1 kV | 8.73d | 2025-11-28 | 2025-12-07 | A4970 | 107.91d | 15.27d | SQM-ELÉCTRICO [384.11 h] | 384.11 | 5817-TK6060 | m | 445 | 3.3.4 | 5.3.3.4 |
| A4940 |  | Cable Monoconductor de Cobre con Aislación XLPE, 1C #250 MCM, Clase 1 kV | 3.27d | 2025-12-10 | 2025-12-13 | A4930 | 92.64d | 0d | SQM-ELÉCTRICO [107.44 h] | 107.44 | 5817-TK6060 | m | 426 | 3.3.2 | 5.3.3.8 |
| A4950 |  | Cable Multiconductor de Cobre con Aislación XLPE, 1X4C #8 AWG, Clase 1 kV | 1.09d | 2025-12-14 | 2025-12-15 | A4960 SS, A4940 | 92.64d | 0d | SQM-ELÉCTRICO [10.82 h] | 10.82 | 5817-TK6060 | m | 7 | 3.3.3 | 5.3.3.1 |
|  | 3 | **MONTAJE DE POSTACIÓN TK-6060** |  | 2025-11-18 | 2025-11-23 |  |  |  |  |  |  |  |  |  |  |
| A5010 |  | Poste de Acero Galvanizado para Iluminación. | 4.36d | 2025-11-18 | 2025-11-23 | A4920 | 107.91d | 0d | SQM-ELÉCTRICO [130 h] | 130 | 5817-TK6060 | un | 16 | 3.6.1 | 5.3.6.1 |
|  | 4 | **MONTAJE Y CONEXIONADO DE EQUIPOS ELÉCTRICOS TK-6060** |  | 2025-11-23 | 2025-12-20 |  |  |  |  |  |  |  |  |  |  |
| A5020 |  | Tablero Partidor de Motores TAG: 5817-TPM-1501 | 5.45d | 2025-11-23 | 2025-11-28 | A4910 | 109d | 16.36d | SQM-ELÉCTRICO [124.1 h] | 124.1 | 5817-TK6060 | gl | 1 | 3.4.1 | 5.3.4.9 |
| A5030 |  | Conexión de Motor TAG: 5817-MTR-6078 a TPM TAG: 5817-TPM-1501. | 1.09d | 2025-12-15 | 2025-12-16 | A4950, A5020 | 92.64d | 0d | SQM-ELÉCTRICO [4.12 h] | 4.12 | 5817-TK6060 | gl | 1 | 3.4.2 | 5.3.4.2 |
| A5040 |  | Conexión de Motor TAG: 5817-MTR-6070 a TPM TAG: 5817-TPM-1501. | 1.09d | 2025-12-15 | 2025-12-16 | A5030 SS | 92.64d | 0d | SQM-ELÉCTRICO [4.12 h] | 4.12 | 5817-TK6060 | gl | 1 | 3.4.3 | 5.3.4.5 |
| A5050 |  | Conexión de Motor TAG: 5817-MTR-6073 a TPM TAG: 5817-TPM-1501. | 1.09d | 2025-12-16 | 2025-12-17 | A5040 | 92.64d | 0d | SQM-ELÉCTRICO [4.12 h] | 4.12 | 5817-TK6060 | gl | 1 | 3.4.4 | 5.3.4.4 |
| A5060 |  | Conexión de Motor TAG: 5817-MTR-6062 a TPM TAG: 5817-TPM-1501. | 1.09d | 2025-12-16 | 2025-12-17 | A5050 SS | 92.64d | 0d | SQM-ELÉCTRICO [4.12 h] | 4.12 | 5817-TK6060 | gl | 1 | 3.4.5 | 5.3.4.6 |
| A5070 |  | Conexión de Motor TAG: 5817-MTR-6076 a TPM TAG: 5817-TPM-1501. | 1.09d | 2025-12-17 | 2025-12-18 | A5060 | 92.64d | 0d | SQM-ELÉCTRICO [4.12 h] | 4.12 | 5817-TK6060 | gl | 1 | 3.4.6 | 5.3.4.3 |
| A5080 |  | Conexión de Tablero Partidor de Motores TAG: 5817-TPM-1501 a Sala Eléctrica TAG: SEL-4016. | 1.09d | 2025-12-17 | 2025-12-18 | A5070 SS | 92.64d | 0d | SQM-ELÉCTRICO [4.12 h] | 4.12 | 5817-TK6060 | gl | 1 | 3.4.7 | 5.3.4.1 |
| A5090 |  | Conexión de Luminarias Tipo Pedestal. | 2.18d | 2025-12-18 | 2025-12-20 | A5080 | 92.64d | 0d | SQM-ELÉCTRICO [28.88 h] | 28.88 | 5817-TK6060 | un | 7 | 3.4.8 | 5.3.4.8 |
| A5100 |  | Conexión de Luminarias Tipo Proyector. | 2.18d | 2025-12-18 | 2025-12-20 | A5090 SS, A5000 | 92.64d | 0d | SQM-ELÉCTRICO [37.12 h] | 37.12 | 5817-TK6060 | un | 9 | 3.4.9 | 5.3.4.7 |
|  | 5 | **PRUEBAS DE FUNCIONAMIENTO Y PEM TK-6060** |  | 2025-12-20 | 2025-12-28 |  |  |  |  |  |  |  |  |  |  |
| A5110 |  | Pruebas de Funcionamiento y Puesta en Marcha de Motor TAG: 5817-MTR-6078. | 1.09d | 2025-12-20 | 2025-12-21 | A5100 | 92.64d | 0d | SQM-ELÉCTRICO [12 h] | 12 | 5817-TK6060 | gl | 1 | 3.5.1 | 5.3.5.1 |
| A5120 |  | Pruebas de Funcionamiento y Puesta en Marcha de Motor TAG: 5817-MTR-6070. | 1.09d | 2025-12-21 | 2025-12-22 | A5110 | 92.64d | 0d | SQM-ELÉCTRICO [12 h] | 12 | 5817-TK6060 | gl | 1 | 3.5.2 | 5.3.5.4 |
| A5130 |  | Pruebas de Funcionamiento y Puesta en Marcha de Motor TAG: 5817-MTR-6073. | 1.09d | 2025-12-22 | 2025-12-23 | A5120 | 92.64d | 0d | SQM-ELÉCTRICO [12 h] | 12 | 5817-TK6060 | gl | 1 | 3.5.3 | 5.3.5.3 |
| A5140 |  | Pruebas de Funcionamiento y Puesta en Marcha de Motor TAG: 5817-MTR-6062. | 1.09d | 2025-12-23 | 2025-12-24 | A5130 | 92.64d | 0d | SQM-ELÉCTRICO [12 h] | 12 | 5817-TK6060 | gl | 1 | 3.5.4 | 5.3.5.5 |
| A5150 |  | Pruebas de Funcionamiento y Puesta en Marcha de Motor TAG: 5817-MTR-6076. | 1.09d | 2025-12-24 | 2025-12-25 | A5140 | 92.64d | 0d | SQM-ELÉCTRICO [12 h] | 12 | 5817-TK6060 | gl | 1 | 3.5.5 | 5.3.5.2 |
| A5160 |  | Pruebas de Funcionamiento y Puesta de Luminarias Tipo Pedestal. | 1.09d | 2025-12-26 | 2025-12-27 | A5150 | 92.64d | 0d | SQM-ELÉCTRICO [12 h] | 12 | 5817-TK6060 | gl | 1 | 3.5.6 | 5.3.5.7 |
| A5170 |  | Pruebas de Funcionamiento y Puesta de Luminarias Tipo Proyector. | 1.09d | 2025-12-27 | 2025-12-28 | A5160 | 92.64d | 39.18d | SQM-ELÉCTRICO [12 h] | 12 | 5817-TK6060 | gl | 1 | 3.5.7 | 5.3.5.6 |

| ID | WBS | Activity | Duration | Start | Finish | Predecessors | Total float | Free float | Resources | Cost | Área | Unidad | Cantidad | Ítem LP | Ìtem EDP |
| --- | --- | --- | --- | --- | --- | --- | --- | --- | --- | --- | --- | --- | --- | --- | --- |
|  | 6 | **OBRAS DE INSTRUMENTACIÓN TK-6060** |  | 2025-11-05 | 2026-01-09 |  |  |  |  |  |  |  |  |  |  |
|  | 1 | **MONTAJE DE CANALIZACIÓN Y FERRETERÍA INST. TK-6060** |  | 2025-11-05 | 2025-12-06 |  |  |  |  |  |  |  |  |  |  |
| A5180 |  | EPC y Copla Porta Conductores 600x100mm e:2,5 mm, tiras 3m. Incluir tapa dos aguas, eclisas y pernos de unión. | 18.55d | 2025-11-05 | 2025-11-24 | A4830 | 80.64d | 0d | SQM-INSTRUMENTACIÓN [1120 h] | 1,120 | 5817-TK6060 | m | 200 | 4.2.1 | 5.4.1.1 |
| A5200 |  | Canalización y Copla de Conduit de Acero Galvanizado 1"Ø, Conduit ANSI C80.1 | 22.91d | 2025-11-08 | 2025-11-30 | A5180 SS+2.18d | 113.36d | 0d | SQM-INSTRUMENTACIÓN [1890 h] | 1,890 | 5817-TK6060 | m | 1500 | 4.2.3 | 5.4.1.3 |
| A5190 |  | EPC Curva de 90°, 600x100mm e:2,5mm. Incluir tapa dos aguas, eclisas y pernos de unión. | 3.27d | 2025-11-24 | 2025-11-27 | A5180 | 80.64d | 0d | SQM-INSTRUMENTACIÓN [56 h] | 56 | 5817-TK6060 | un | 10 | 4.2.2 | 5.4.1.2 |
| A5210 |  | Canalización y Copla de Conduit Flexible Metálico con Cubierta PVC 1" Ø Trabajo Pesado | 5.45d | 2025-11-30 | 2025-12-06 | A5200, A4860 | 113.36d | 32.73d | SQM-INSTRUMENTACIÓN [189 h] | 189 | 5817-TK6060 | m | 150 | 4.2.4 | 5.4.1.4 |
|  | 2 | **TENDIDO Y CONEXIONADO DE CABLES DE INSTRUMENTACIÓN TK-6060** |  | 2025-11-27 | 2025-12-24 |  |  |  |  |  |  |  |  |  |  |
| A5220 |  | Cable Multiconductor de Cobre con Aislación de XLPE, 1x3C #12 AWG, Clase 1 kV | 15.27d | 2025-11-27 | 2025-12-12 | A5190 | 80.64d | 0d | SQM-INSTRUMENTACIÓN [511.47 h] | 511.47 | 5817-TK6060 | m | 1400 | 4.3.1 | 5.4.2.1 |
| A5230 |  | Cable de Instrumentación (Señales Análogas), 1x1 par #16 AWG Apantallado | 5.45d | 2025-12-12 | 2025-12-18 | A5220 | 80.64d | 0d | SQM-INSTRUMENTACIÓN [68.08 h] | 68.08 | 5817-TK6060 | m | 230 | 4.3.2 | 5.4.2.3 |
| A5240 |  | Cable Multiconductor de Cobre Blando 1x3C #12 AWG, Clase 0,3 | 4.36d | 2025-12-12 | 2025-12-17 | A5230 SS | 80.64d | 0d | SQM-INSTRUMENTACIÓN [219.2 h] | 219.2 | 5817-TK6060 | m | 600 | 4.3.3 | 5.4.2.5 |
| A5250 |  | Cable Multiconductor de Cobre Blando 1x5C #12 AWG, Clase 0,3 | 4.36d | 2025-12-17 | 2025-12-21 | A5240 | 80.64d | 0d | SQM-INSTRUMENTACIÓN [219.2 h] | 219.2 | 5817-TK6060 | m | 600 | 4.3.4 | 5.4.2.4 |
| A5260 |  | Conductor Fibra Óptica Multimodo 12 Hilos | 3.27d | 2025-12-21 | 2025-12-24 | A5250 | 80.64d | 0d | SQM-INSTRUMENTACIÓN [406.3 h] | 406.3 | 5817-TK6060 | m | 850 | 4.3.5 | 5.4.2.2 |
|  | 3 | **MONTAJE Y CONEXIONADO DE EQUIPOS E INSTRUMENTOS TK-6060** |  | 2025-12-18 | 2025-12-29 |  |  |  |  |  |  |  |  |  |  |
| A5270 |  | Pruebas de Funcionamiento y Puesta en Marcha de TAG: 5817-RIO-1501. | 1.09d | 2025-12-18 | 2025-12-19 | A5230 | 81.73d | 0d | SQM-INSTRUMENTACIÓN [12 h] | 12 | 5817-TK6060 | gl | 1 | 4.4.1 | 5.4.3.35 |
| A5280 |  | Conexión de Fibra Óptica en RIO y Sala Eléctrica TAG: SEL-4016. | 1.09d | 2025-12-18 | 2025-12-19 | A5270 SS | 81.73d | 0d | SQM-INSTRUMENTACIÓN [4.12 h] | 4.12 | 5817-TK6060 | gl | 1 | 4.4.2 | 5.4.3.1 |
| A5290 |  | Instrumento TAG: FIT-6207 a Panel de señales Remotas TAG: 5817-RIO-1501. | 1.09d | 2025-12-18 | 2025-12-19 | A5280 SS | 81.73d | 0d | SQM-INSTRUMENTACIÓN [21.75 h] | 21.75 | 5817-TK6060 | gl | 1 | 4.4.3 | 5.4.3.33 |
| A5300 |  | Instrumento TAG: FIT-6209 a Panel de señales Remotas TAG: 5817-RIO-1501. | 1.09d | 2025-12-19 | 2025-12-20 | A5290 | 81.73d | 0d | SQM-INSTRUMENTACIÓN [21.75 h] | 21.75 | 5817-TK6060 | gl | 1 | 4.4.4 | 5.4.3.32 |
| A5310 |  | Instrumento TAG: FIT-6260 a Panel de señales Remotas TAG: 5817-RIO-1501. | 1.09d | 2025-12-19 | 2025-12-20 | A5300 SS | 81.73d | 0d | SQM-INSTRUMENTACIÓN [21.75 h] | 21.75 | 5817-TK6060 | gl | 1 | 4.4.5 | 5.4.3.31 |
| A5320 |  | Instrumento TAG: FIT-6261 a Panel de señales Remotas TAG: 5817-RIO-1501. | 1.09d | 2025-12-19 | 2025-12-20 | A5310 SS | 81.73d | 0d | SQM-INSTRUMENTACIÓN [21.75 h] | 21.75 | 5817-TK6060 | gl | 1 | 4.4.6 | 5.4.3.30 |
| A5330 |  | Instrumento TAG: DIT-6279 a Panel de señales Remotas TAG: 5817-RIO-1501. | 1.09d | 2025-12-19 | 2025-12-20 | A5320 SS | 81.73d | 0d | SQM-INSTRUMENTACIÓN [21.75 h] | 21.75 | 5817-TK6060 | gl | 1 | 4.4.7 | 5.4.3.34 |
| A5340 |  | Instrumento TAG: PIT-6226 a Panel de señales Remotas TAG: 5817-RIO-1501. | 1.09d | 2025-12-20 | 2025-12-21 | A5330 | 81.73d | 0d | SQM-INSTRUMENTACIÓN [12 h] | 12 | 5817-TK6060 | gl | 1 | 4.4.8 | 5.4.3.26 |
| A5350 |  | Instrumento TAG: PIT-6236 a Panel de señales Remotas TAG: 5817-RIO-1501. | 1.09d | 2025-12-20 | 2025-12-21 | A5340 SS | 81.73d | 0d | SQM-INSTRUMENTACIÓN [12 h] | 12 | 5817-TK6060 | gl | 1 | 4.4.9 | 5.4.3.25 |
| A5360 |  | Instrumento TAG: PIT-6222 a Panel de señales Remotas TAG: 5817-RIO-1501. | 1.09d | 2025-12-20 | 2025-12-21 | A5350 SS | 81.73d | 0d | SQM-INSTRUMENTACIÓN [12 h] | 12 | 5817-TK6060 | gl | 1 | 4.4.10 | 5.4.3.27 |
| A5370 |  | Instrumento TAG: FV-6208 a Panel de señales Remotas TAG: 5817-RIO-1501. | 1.09d | 2025-12-20 | 2025-12-21 | A5360 SS | 81.73d | 0d | SQM-INSTRUMENTACIÓN [21.75 h] | 21.75 | 5817-TK6060 | gl | 1 | 4.4.11 | 5.4.3.29 |
| A5380 |  | Instrumento TAG: FV-6217 a Panel de señales Remotas TAG: 5817-RIO-1501. | 1.09d | 2025-12-21 | 2025-12-22 | A5370 | 81.73d | 0d | SQM-INSTRUMENTACIÓN [21.75 h] | 21.75 | 5817-TK6060 | gl | 1 | 4.4.12 | 5.4.3.28 |
| A5390 |  | Instrumento TAG: XV-1178 a Panel de señales Remotas TAG: 5817-RIO-1501. | 1.09d | 2025-12-21 | 2025-12-22 | A5380 SS | 81.73d | 0d | SQM-INSTRUMENTACIÓN [21.75 h] | 21.75 | 5817-TK6060 | gl | 1 | 4.4.13 | 5.4.3.24 |
| A5400 |  | Instrumento TAG: XV-1179 a Panel de señales Remotas TAG: 5817-RIO-1501. | 1.09d | 2025-12-21 | 2025-12-22 | A5390 SS | 81.73d | 0d | SQM-INSTRUMENTACIÓN [21.75 h] | 21.75 | 5817-TK6060 | gl | 1 | 4.4.14 | 5.4.3.23 |
| A5410 |  | Instrumento TAG: XV-1180 a Panel de señales Remotas TAG: 5817-RIO-1501. | 1.09d | 2025-12-21 | 2025-12-22 | A5400 SS | 81.73d | 0d | SQM-INSTRUMENTACIÓN [21.75 h] | 21.75 | 5817-TK6060 | gl | 1 | 4.4.15 | 5.4.3.22 |
| A5420 |  | Instrumento TAG: XV-1181 a Panel de señales Remotas TAG: 5817-RIO-1501. | 1.09d | 2025-12-22 | 2025-12-23 | A5410 | 81.73d | 0d | SQM-INSTRUMENTACIÓN [21.75 h] | 21.75 | 5817-TK6060 | gl | 1 | 4.4.16 | 5.4.3.21 |
| A5430 |  | Instrumento TAG: XV-1182 a Panel de señales Remotas TAG: 5817-RIO-1501. | 1.09d | 2025-12-22 | 2025-12-23 | A5420 SS | 81.73d | 0d | SQM-INSTRUMENTACIÓN [21.75 h] | 21.75 | 5817-TK6060 | gl | 1 | 4.4.17 | 5.4.3.20 |
| A5440 |  | Instrumento TAG: XV-6206 a Panel de señales Remotas TAG: 5817-RIO-1501. | 1.09d | 2025-12-22 | 2025-12-23 | A5430 SS | 81.73d | 0d | SQM-INSTRUMENTACIÓN [21.75 h] | 21.75 | 5817-TK6060 | gl | 1 | 4.4.18 | 5.4.3.19 |
| A5450 |  | Instrumento TAG: XV-6209 a Panel de señales Remotas TAG: 5817-RIO-1501. | 1.09d | 2025-12-22 | 2025-12-23 | A5440 SS | 81.73d | 1.09d | SQM-INSTRUMENTACIÓN [21.75 h] | 21.75 | 5817-TK6060 | gl | 1 | 4.4.19 | 5.4.3.18 |
| A5460 |  | Instrumento TAG: XV-6216 a Panel de señales Remotas TAG: 5817-RIO-1501. | 1.09d | 2025-12-24 | 2025-12-25 | A5450, A5260 | 80.64d | 0d | SQM-INSTRUMENTACIÓN [21.75 h] | 21.75 | 5817-TK6060 | gl | 1 | 4.4.20 | 5.4.3.17 |
| A5470 |  | Instrumento TAG: XV-6219 a Panel de señales Remotas TAG: 5817-RIO-1501. | 1.09d | 2025-12-24 | 2025-12-25 | A5460 SS | 80.64d | 0d | SQM-INSTRUMENTACIÓN [21.75 h] | 21.75 | 5817-TK6060 | gl | 1 | 4.4.21 | 5.4.3.16 |
| A5480 |  | Instrumento TAG: XV-6223 a Panel de señales Remotas TAG: 5817-RIO-1501. | 1.09d | 2025-12-24 | 2025-12-25 | A5470 SS | 80.64d | 0d | SQM-INSTRUMENTACIÓN [21.75 h] | 21.75 | 5817-TK6060 | gl | 1 | 4.4.22 | 5.4.3.15 |
| A5490 |  | Instrumento TAG: XV-6223 a Panel de señales Remotas TAG: 5817-RIO-1501. | 1.09d | 2025-12-24 | 2025-12-25 | A5480 SS | 80.64d | 0d | SQM-INSTRUMENTACIÓN [21.75 h] | 21.75 | 5817-TK6060 | gl | 1 | 4.4.23 | 5.4.3.14 |
| A5500 |  | Instrumento TAG: XV-6224 a Panel de señales Remotas TAG: 5817-RIO-1501. | 1.09d | 2025-12-26 | 2025-12-27 | A5490 | 80.64d | 0d | SQM-INSTRUMENTACIÓN [21.75 h] | 21.75 | 5817-TK6060 | gl | 1 | 4.4.24 | 5.4.3.13 |
| A5510 |  | Instrumento TAG: XV-6225 a Panel de señales Remotas TAG: 5817-RIO-1501. | 1.09d | 2025-12-26 | 2025-12-27 | A5500 SS | 80.64d | 0d | SQM-INSTRUMENTACIÓN [21.75 h] | 21.75 | 5817-TK6060 | gl | 1 | 4.4.25 | 5.4.3.12 |
| A5520 |  | Instrumento TAG: XV-6226 a Panel de señales Remotas TAG: 5817-RIO-1501. | 1.09d | 2025-12-26 | 2025-12-27 | A5510 SS | 80.64d | 0d | SQM-INSTRUMENTACIÓN [21.75 h] | 21.75 | 5817-TK6060 | gl | 1 | 4.4.26 | 5.4.3.11 |
| A5530 |  | Instrumento TAG: XV-6227 a Panel de señales Remotas TAG: 5817-RIO-1501. | 1.09d | 2025-12-26 | 2025-12-27 | A5520 SS | 80.64d | 0d | SQM-INSTRUMENTACIÓN [21.75 h] | 21.75 | 5817-TK6060 | gl | 1 | 4.4.27 | 5.4.3.10 |
| A5540 |  | Instrumento TAG: XV-6228 a Panel de señales Remotas TAG: 5817-RIO-1501. | 1.09d | 2025-12-27 | 2025-12-28 | A5530 | 80.64d | 0d | SQM-INSTRUMENTACIÓN [21.75 h] | 21.75 | 5817-TK6060 | gl | 1 | 4.4.28 | 5.4.3.9 |
| A5550 |  | Instrumento TAG: XV-6233 a Panel de señales Remotas TAG: 5817-RIO-1501. | 1.09d | 2025-12-27 | 2025-12-28 | A5540 SS | 80.64d | 0d | SQM-INSTRUMENTACIÓN [21.75 h] | 21.75 | 5817-TK6060 | gl | 1 | 4.4.29 | 5.4.3.8 |
| A5560 |  | Instrumento TAG: XV-6234 a Panel de señales Remotas TAG: 5817-RIO-1501. | 1.09d | 2025-12-27 | 2025-12-28 | A5550 SS | 80.64d | 0d | SQM-INSTRUMENTACIÓN [21.75 h] | 21.75 | 5817-TK6060 | gl | 1 | 4.4.30 | 5.4.3.7 |
| A5570 |  | Instrumento TAG: XV-6237 a Panel de señales Remotas TAG: 5817-RIO-1501. | 1.09d | 2025-12-27 | 2025-12-28 | A5560 SS | 80.64d | 0d | SQM-INSTRUMENTACIÓN [21.75 h] | 21.75 | 5817-TK6060 | gl | 1 | 4.4.31 | 5.4.3.6 |
| A5580 |  | Instrumento TAG: XV-6238 a Panel de señales Remotas TAG: 5817-RIO-1501. | 1.09d | 2025-12-28 | 2025-12-29 | A5570 | 80.64d | 0d | SQM-INSTRUMENTACIÓN [21.75 h] | 21.75 | 5817-TK6060 | gl | 1 | 4.4.32 | 5.4.3.5 |
| A5590 |  | Instrumento TAG: XV-6243 a Panel de señales Remotas TAG: 5817-RIO-1501. | 1.09d | 2025-12-28 | 2025-12-29 | A5580 SS | 80.64d | 0d | SQM-INSTRUMENTACIÓN [21.75 h] | 21.75 | 5817-TK6060 | gl | 1 | 4.4.33 | 5.4.3.4 |
| A5600 |  | Instrumento TAG: XV-6259 a Panel de señales Remotas TAG: 5817-RIO-1501. | 1.09d | 2025-12-28 | 2025-12-29 | A5590 SS | 80.64d | 0d | SQM-INSTRUMENTACIÓN [21.75 h] | 21.75 | 5817-TK6060 | gl | 1 | 4.4.34 | 5.4.3.3 |
| A5610 |  | Instrumento TAG: XV-6263 a Panel de señales Remotas TAG: 5817-RIO-1501. | 1.09d | 2025-12-28 | 2025-12-29 | A5600 SS | 80.64d | 0d | SQM-INSTRUMENTACIÓN [21.75 h] | 21.75 | 5817-TK6060 | gl | 1 | 4.4.35 | 5.4.3.2 |

| ID | WBS | Activity | Duration | Start | Finish | Predecessors | Total float | Free float | Resources | Cost | Área | Unidad | Cantidad | Ítem LP | Ìtem EDP |
| --- | --- | --- | --- | --- | --- | --- | --- | --- | --- | --- | --- | --- | --- | --- | --- |
|  | 4 | **PRUEBAS DE FUNCIONAMIENTO Y PEM INST. TK-6060** |  | 2025-12-29 | 2026-01-09 |  |  |  |  |  |  |  |  |  |  |
| A5620 |  | Pruebas de Funcionamiento y Puesta en Marcha de TAG: 5817-RIO-1501. | 3.27d | 2025-12-29 | 2026-01-01 | A5610 | 80.64d | 0d | SQM-INSTRUMENTACIÓN [12 h] | 12 | 5817-TK6060 | gl | 1 | 4.5.1 | 5.4.4.34 |
| A5630 |  | Pruebas de Operación y Puesta en Marcha de Instrumento TAG: FIT-6207 | 1.09d | 2026-01-01 | 2026-01-02 | A5620 | 80.64d | 0d | SQM-INSTRUMENTACIÓN [12 h] | 12 | 5817-TK6060 | gl | 1 | 4.5.2 | 5.4.4.32 |
| A5640 |  | Pruebas de Operación y Puesta en Marcha de Instrumento TAG: FIT-6209 | 1.09d | 2026-01-01 | 2026-01-02 | A5630 SS | 80.64d | 0d | SQM-INSTRUMENTACIÓN [12 h] | 12 | 5817-TK6060 | gl | 1 | 4.5.3 | 5.4.4.31 |
| A5650 |  | Pruebas de Operación y Puesta en Marcha de Instrumento TAG: FIT-6260 | 1.09d | 2026-01-01 | 2026-01-02 | A5640 SS | 80.64d | 0d | SQM-INSTRUMENTACIÓN [12 h] | 12 | 5817-TK6060 | gl | 1 | 4.5.4 | 5.4.4.30 |
| A5660 |  | Pruebas de Operación y Puesta en Marcha de Instrumento TAG: FIT-6261 | 1.09d | 2026-01-01 | 2026-01-02 | A5650 SS | 80.64d | 0d | SQM-INSTRUMENTACIÓN [12 h] | 12 | 5817-TK6060 | gl | 1 | 4.5.5 | 5.4.4.29 |
| A5670 |  | Pruebas de Operación y Puesta en Marcha de Instrumento TAG: DIT-6279 | 1.09d | 2026-01-01 | 2026-01-02 | A5660 SS | 80.64d | 0d | SQM-INSTRUMENTACIÓN [12 h] | 12 | 5817-TK6060 | gl | 1 | 4.5.6 | 5.4.4.33 |
| A5680 |  | Pruebas de Operación y Puesta en Marcha de Instrumento TAG: PIT-6226 | 1.09d | 2026-01-02 | 2026-01-03 | A5670 | 80.64d | 0d | SQM-INSTRUMENTACIÓN [12 h] | 12 | 5817-TK6060 | gl | 1 | 4.5.7 | 5.4.4.25 |
| A5690 |  | Pruebas de Operación y Puesta en Marcha de Instrumento TAG: PIT-6236 | 1.09d | 2026-01-02 | 2026-01-03 | A5680 SS | 80.64d | 0d | SQM-INSTRUMENTACIÓN [12 h] | 12 | 5817-TK6060 | gl | 1 | 4.5.8 | 5.4.4.24 |
| A5700 |  | Pruebas de Operación y Puesta en Marcha de Instrumento TAG: PIT-6222 | 1.09d | 2026-01-02 | 2026-01-03 | A5690 SS | 80.64d | 0d | SQM-INSTRUMENTACIÓN [12 h] | 12 | 5817-TK6060 | gl | 1 | 4.5.9 | 5.4.4.26 |
| A5710 |  | Pruebas de Operación y Puesta en Marcha de Instrumento TAG: FV-6208 | 1.09d | 2026-01-02 | 2026-01-03 | A5700 SS | 80.64d | 0d | SQM-INSTRUMENTACIÓN [12 h] | 12 | 5817-TK6060 | gl | 1 | 4.5.10 | 5.4.4.28 |
| A5720 |  | Pruebas de Operación y Puesta en Marcha de Instrumento TAG: FV-6217 | 1.09d | 2026-01-02 | 2026-01-03 | A5710 SS | 80.64d | 0d | SQM-INSTRUMENTACIÓN [12 h] | 12 | 5817-TK6060 | gl | 1 | 4.5.11 | 5.4.4.27 |
| A5730 |  | Pruebas de Operación y Puesta en Marcha de Instrumento TAG: XV-1178 | 1.09d | 2026-01-03 | 2026-01-04 | A5720 | 80.64d | 0d | SQM-INSTRUMENTACIÓN [12 h] | 12 | 5817-TK6060 | gl | 1 | 4.5.12 | 5.4.4.23 |
| A5740 |  | Pruebas de Operación y Puesta en Marcha de Instrumento TAG: XV-1179 | 1.09d | 2026-01-03 | 2026-01-04 | A5730 SS | 80.64d | 0d | SQM-INSTRUMENTACIÓN [12 h] | 12 | 5817-TK6060 | gl | 1 | 4.5.13 | 5.4.4.22 |
| A5750 |  | Pruebas de Operación y Puesta en Marcha de Instrumento TAG: XV-1180 | 1.09d | 2026-01-03 | 2026-01-04 | A5740 SS | 80.64d | 0d | SQM-INSTRUMENTACIÓN [12 h] | 12 | 5817-TK6060 | gl | 1 | 4.5.14 | 5.4.4.21 |
| A5760 |  | Pruebas de Operación y Puesta en Marcha de Instrumento TAG: XV-1181 | 1.09d | 2026-01-03 | 2026-01-04 | A5750 SS | 80.64d | 0d | SQM-INSTRUMENTACIÓN [12 h] | 12 | 5817-TK6060 | gl | 1 | 4.5.15 | 5.4.4.20 |
| A5770 |  | Pruebas de Operación y Puesta en Marcha de Instrumento TAG: XV-1182 | 1.09d | 2026-01-03 | 2026-01-04 | A5760 SS | 80.64d | 0d | SQM-INSTRUMENTACIÓN [12 h] | 12 | 5817-TK6060 | gl | 1 | 4.5.16 | 5.4.4.19 |
| A5780 |  | Pruebas de Operación y Puesta en Marcha de Instrumento TAG: XV-6206 | 1.09d | 2026-01-04 | 2026-01-05 | A5770 | 80.64d | 0d | SQM-INSTRUMENTACIÓN [12 h] | 12 | 5817-TK6060 | gl | 1 | 4.5.17 | 5.4.4.18 |
| A5790 |  | Pruebas de Operación y Puesta en Marcha de Instrumento TAG: XV-6209 | 1.09d | 2026-01-04 | 2026-01-05 | A5780 SS | 80.64d | 0d | SQM-INSTRUMENTACIÓN [12 h] | 12 | 5817-TK6060 | gl | 1 | 4.5.18 | 5.4.4.17 |
| A5800 |  | Pruebas de Operación y Puesta en Marcha de Instrumento TAG: XV-6216 | 1.09d | 2026-01-04 | 2026-01-05 | A5790 SS | 80.64d | 0d | SQM-INSTRUMENTACIÓN [12 h] | 12 | 5817-TK6060 | gl | 1 | 4.5.19 | 5.4.4.16 |
| A5810 |  | Pruebas de Operación y Puesta en Marcha de Instrumento TAG: XV-6219 | 1.09d | 2026-01-04 | 2026-01-05 | A5800 SS | 80.64d | 0d | SQM-INSTRUMENTACIÓN [12 h] | 12 | 5817-TK6060 | gl | 1 | 4.5.20 | 5.4.4.15 |
| A5820 |  | Pruebas de Operación y Puesta en Marcha de Instrumento TAG: XV-6223 | 1.09d | 2026-01-04 | 2026-01-05 | A5810 SS | 80.64d | 0d | SQM-INSTRUMENTACIÓN [12 h] | 12 | 5817-TK6060 | gl | 1 | 4.5.21 | 5.4.4.13 |
| A5830 |  | Pruebas de Operación y Puesta en Marcha de Instrumento TAG: XV-6223 | 1.09d | 2026-01-05 | 2026-01-06 | A5820 | 80.64d | 0d | SQM-INSTRUMENTACIÓN [12 h] | 12 | 5817-TK6060 | gl | 1 | 4.5.22 | 5.4.4.13 |
| A5840 |  | Pruebas de Operación y Puesta en Marcha de Instrumento TAG: XV-6224 | 1.09d | 2026-01-05 | 2026-01-06 | A5830 SS | 80.64d | 0d | SQM-INSTRUMENTACIÓN [12 h] | 12 | 5817-TK6060 | gl | 1 | 4.5.23 | 5.4.4.12 |
| A5850 |  | Pruebas de Operación y Puesta en Marcha de Instrumento TAG: XV-6225 | 1.09d | 2026-01-05 | 2026-01-06 | A5840 SS | 80.64d | 0d | SQM-INSTRUMENTACIÓN [12 h] | 12 | 5817-TK6060 | gl | 1 | 4.5.24 | 5.4.4.11 |
| A5860 |  | Pruebas de Operación y Puesta en Marcha de Instrumento TAG: XV-6226 | 1.09d | 2026-01-05 | 2026-01-06 | A5850 SS | 80.64d | 0d | SQM-INSTRUMENTACIÓN [12 h] | 12 | 5817-TK6060 | gl | 1 | 4.5.25 | 5.4.4.10 |
| A5870 |  | Pruebas de Operación y Puesta en Marcha de Instrumento TAG: XV-6227 | 1.09d | 2026-01-05 | 2026-01-06 | A5860 SS | 80.64d | 0d | SQM-INSTRUMENTACIÓN [12 h] | 12 | 5817-TK6060 | gl | 1 | 4.5.26 | 5.4.4.9 |
| A5880 |  | Pruebas de Operación y Puesta en Marcha de Instrumento TAG: XV-6228 | 1.09d | 2026-01-07 | 2026-01-08 | A5870 | 80.64d | 0d | SQM-INSTRUMENTACIÓN [12 h] | 12 | 5817-TK6060 | gl | 1 | 4.5.27 | 5.4.4.8 |
| A5890 |  | Pruebas de Operación y Puesta en Marcha de Instrumento TAG: XV-6233 | 1.09d | 2026-01-07 | 2026-01-08 | A5880 SS | 80.64d | 0d | SQM-INSTRUMENTACIÓN [12 h] | 12 | 5817-TK6060 | gl | 1 | 4.5.28 | 5.4.4.7 |
| A5900 |  | Pruebas de Operación y Puesta en Marcha de Instrumento TAG: XV-6234 | 1.09d | 2026-01-07 | 2026-01-08 | A5890 SS | 80.64d | 0d | SQM-INSTRUMENTACIÓN [12 h] | 12 | 5817-TK6060 | gl | 1 | 4.5.29 | 5.4.4.6 |
| A5910 |  | Pruebas de Operación y Puesta en Marcha de Instrumento TAG: XV-6237 | 1.09d | 2026-01-07 | 2026-01-08 | A5900 SS | 80.64d | 0d | SQM-INSTRUMENTACIÓN [12 h] | 12 | 5817-TK6060 | gl | 1 | 4.5.30 | 5.4.4.5 |
| A5920 |  | Pruebas de Operación y Puesta en Marcha de Instrumento TAG: XV-6238 | 1.09d | 2026-01-07 | 2026-01-08 | A5910 SS | 80.64d | 0d | SQM-INSTRUMENTACIÓN [12 h] | 12 | 5817-TK6060 | gl | 1 | 4.5.31 | 5.4.4.4 |
| A5930 |  | Pruebas de Operación y Puesta en Marcha de Instrumento TAG: XV-6243 | 1.09d | 2026-01-08 | 2026-01-09 | A5920 | 80.64d | 0d | SQM-INSTRUMENTACIÓN [12 h] | 12 | 5817-TK6060 | gl | 1 | 4.5.32 | 5.4.4.3 |
| A5940 |  | Pruebas de Operación y Puesta en Marcha de Instrumento TAG: XV-6259 | 1.09d | 2026-01-08 | 2026-01-09 | A5930 SS | 80.64d | 0d | SQM-INSTRUMENTACIÓN [12 h] | 12 | 5817-TK6060 | gl | 1 | 4.5.33 | 5.4.4.2 |
| A5950 |  | Pruebas de Operación y Puesta en Marcha de Instrumento TAG: XV-6263 | 1.09d | 2026-01-08 | 2026-01-09 | A5940 SS, A5210, A4810 | 80.64d | 27.18d | SQM-INSTRUMENTACIÓN [12 h] | 12 | 5817-TK6060 | gl | 1 | 4.5.34 | 5.4.4.1 |

| ID | WBS | Activity | Duration | Start | Finish | Predecessors | Total float | Free float | Resources | Cost | Área | Unidad | Cantidad | Ítem LP | Ìtem EDP |
| --- | --- | --- | --- | --- | --- | --- | --- | --- | --- | --- | --- | --- | --- | --- | --- |
|  | 2 | **ÁREA 5772 - SECTOR TK-800** |  | 2025-09-12 | 2025-12-09 |  |  |  |  |  |  |  |  |  |  |
|  | 1 | **OBRAS CIVILES TK-800** |  | 2025-09-24 | 2025-10-10 |  |  |  |  |  |  |  |  |  |  |
|  | 1 | **OOCC SECTOR ESTANQUE DE AGUA BLANDA TAG:5772-EST-800** |  | 2025-09-24 | 2025-10-10 |  |  |  |  |  |  |  |  |  |  |
| A5970 |  | Nivelación Pedestal | 3.27d | 2025-09-24 | 2025-09-27 | A4220 | 70.82d | 0d | SQM-OOCC [2.7 h] | 2.7 | 5772-TK800 | m3 | 0.03 | 3.1.2. | 8.3.1.2 |
| A5980 |  | Armadura de Refuerzo A630-420H para Estructura Monorriel | 3.27d | 2025-09-27 | 2025-09-30 | A5970 | 70.82d | 0d | SQM-OOCC [8.95 h] | 8.95 | 5772-TK800 | kg | 65 | 3.2.1. | 8.3.2.1 |
| A5960 |  | Ampliación Pedestal (TAG: 5772-BBA-1601 y TAG: 5772-BBA-1604) | 3.27d | 2025-09-30 | 2025-10-04 | A5980 | 70.82d | 0d | SQM-OOCC [8.06 h] | 8.06 | 5772-TK800 | m3 | 1.05 | 3.1.1. | 8.3.1.1 |
| A6000 |  | Emplantillado Estructura Monorriel | 3.27d | 2025-10-04 | 2025-10-07 | A5960 | 70.82d | 0d | SQM-OOCC [0.22 h] | 0.22 | 5772-TK800 | m3 | 0.02 | 3.4.1. | 8.3.4.1 |
| A5990 |  | Estructura Monorriel | 3.27d | 2025-10-07 | 2025-10-10 | A6000 | 70.82d | 0d | SQM-OOCC [168.22 h] | 168.22 | 5772-TK800 | kg | 1106.7 | 3.3.1. | 8.3.3.1 |
|  | 2 | **OBRAS MECÁNICAS TK-800** |  | 2025-10-04 | 2025-10-16 |  |  |  |  |  |  |  |  |  |  |
|  | 1 | **MONTAJE Y PRUEBAS DE EQUIPOS MECÁNICOS ÁREA 5772 SECTOR TK-800** |  | 2025-10-04 | 2025-10-16 |  |  |  |  |  |  |  |  |  |  |
| A6010 |  | Bomba Centrífuga y Motor TAG: 5772-BBA-1601; 5772-MTR-1602 | 4.36d | 2025-10-04 | 2025-10-08 | A5960 | 85d | 0d | SQM-MECANICA [139.9 h] | 139.9 | 5772-TK800 | un | 1 | 1.1.1 | 4.1.1.1 |
| A6020 |  | Bomba Centrífuga y Motor TAG: 5772-BBA-1604; 5772-MTR-1605 | 4.36d | 2025-10-08 | 2025-10-12 | A6010 | 85d | 0d | SQM-MECANICA [139.9 h] | 139.9 | 5772-TK800 | un | 1 | 1.1.2 | 4.1.1.2 |
| A6030 |  | Tecle Mantenimiento de Bombas TAG: 5772-TEC-1607 | 3.27d | 2025-10-12 | 2025-10-16 | A5990, A6020 | 85d | 0d | SQM-MECANICA [62 h] | 62 | 5772-TK800 | un | 1 | 1.1.3 | 4.1.1.3 |
|  | 3 | **OBRAS PIPING TK-800** |  | 2025-09-12 | 2025-12-09 |  |  |  |  |  |  |  |  |  |  |
|  | 1 | **FABRICACIÓN Y MONTAJE DE CAÑERÍAS ÁREA TK-800** |  | 2025-09-12 | 2025-12-03 |  |  |  |  |  |  |  |  |  |  |
| A6040 |  | Ø 200 mm - Cañería HDPE, PE 100, PN20 (8") - Fabricación | 30.55d | 2025-09-12 | 2025-10-12 | A1070 SS | 64.27d | 0d | SQM-PIPING [227.5 h] | 227.5 | 5772-TK800 | un | 65 | 2.1.31 | 4.2.1.3 |
| A6050 |  | Ø 8" - Cañería Acero Inoxidable - Fabricación | 5.45d | 2025-10-12 | 2025-10-18 | A6040 | 107.91d | 0d | SQM-PIPING [59.2 h] | 59.2 | 5772-TK800 | un | 4 | 2.1.32 | 4.2.1.4 |
| A6060 |  | Ø 6" - Cañería Acero Inoxidable - Fabricación | 7.64d | 2025-10-12 | 2025-10-20 | A6050 SS | 107.91d | 0d | SQM-PIPING [481 h] | 481 | 5772-TK800 | un | 37 | 2.1.33 | 4.2.1.15 |
| A6070 |  | Ø 4" - Cañería Acero Inoxidable - Fabricación | 15.27d | 2025-10-12 | 2025-10-28 | A6060 SS | 107.91d | 0d | SQM-PIPING [600.4 h] | 600.4 | 5772-TK800 | un | 79 | 2.1.34 | 4.2.1.21 |
| A6110 |  | Ø 200 mm - Cañería HDPE, PE 100, PN20 (8") - Montaje | 45.82d | 2025-10-12 | 2025-11-27 | A6040 | 118.82d | 0d | SQM-PIPING [439.84 h] | 439.84 | 5772-TK800 | m | 235 | 2.1.1 | 4.2.1.10 |
| A6080 |  | Ø 3" - Cañería Acero Inoxidable - Fabricación | 2.18d | 2025-10-28 | 2025-10-30 | A6070 | 112.27d | 0d | SQM-PIPING [22.4 h] | 22.4 | 5772-TK800 | un | 4 | 2.1.35 | 4.2.1.28 |
| A6120 |  | Ø 8" - Cañería Acero Inoxidable - Montaje | 5.45d | 2025-10-28 | 2025-11-02 | A6070 | 107.91d | 0d | SQM-PIPING [7.26 h] | 7.26 | 5772-TK800 | m | 0.65 | 2.1.2 | 4.2.1.11 |
| A6090 |  | Ø 2" - Cañería Acero Inoxidable - Fabricación | 4.36d | 2025-10-30 | 2025-11-03 | A6080 | 112.27d | 0d | SQM-PIPING [49.27 h] | 49.27 | 5772-TK800 | un | 12 | 2.1.36 | 4.2.1.33 |
| A6130 |  | Ø 6" - Cañería Acero Inoxidable - Montaje | 7.64d | 2025-11-02 | 2025-11-10 | A6120 | 107.91d | 0d | SQM-PIPING [13.74 h] | 13.74 | 5772-TK800 | m | 10 | 2.1.3 | 4.2.1.20 |
| A6100 |  | Ø 1" - Cañería Acero Inoxidable - Fabricación | 2.18d | 2025-11-03 | 2025-11-05 | A6090 | 112.27d | 4.36d | SQM-PIPING [2 h] | 2 | 5772-TK800 | un | 1 | 2.1.37 | 4.2.1.36 |
| A6140 |  | Ø 4" - Cañería Acero Inoxidable - Montaje | 15.27d | 2025-11-10 | 2025-11-25 | A6130, A6100 | 107.91d | 0d | SQM-PIPING [48.55 h] | 48.55 | 5772-TK800 | m | 20.704785914 | 2.1.4 | 4.2.1.27 |
| A6150 |  | Ø 3" - Cañería Acero Inoxidable - Montaje | 4.36d | 2025-11-25 | 2025-11-29 | A6140 | 107.91d | 0d | SQM-PIPING [0.4 h] | 0.4 | 5772-TK800 | m | 0.20092 | 2.1.5 | 4.2.1.31 |
| A6160 |  | Ø 2" - Cañería Acero Inoxidable - Montaje | 3.27d | 2025-11-29 | 2025-12-03 | A6150, A6180 FF, A6170 FF | 107.91d | 0d | SQM-PIPING [8.69 h] | 8.69 | 5772-TK800 | m | 3.111241137 | 2.1.6 | 4.2.1.35 |

Notes:
- A6000: Corregir: ATRASO POR INTERFERENCIA POR TERRENO Y LLEGADA DE EQUIPO TECLE
- A6030: Corregir: LLEGADA DE TECLE, SE RETIRA EL 7-11
- A6160: Corregir: R FF

| ID | WBS | Activity | Duration | Start | Finish | Predecessors | Total float | Free float | Resources | Cost | Área | Unidad | Cantidad | Ítem LP | Ìtem EDP | Corregir |
| --- | --- | --- | --- | --- | --- | --- | --- | --- | --- | --- | --- | --- | --- | --- | --- | --- |
|  | 2 | **MONTAJE DE VÁLVULAS Y FITTING SECTOR TK-800** |  | 2025-09-12 | 2025-12-03 |  |  |  |  |  |  |  |  |  |  |  |
| A6170 |  | Fitting Sector TK-800 (Global) | 81.82d | 2025-09-12 | 2025-12-03 | A6040 SS | 107.91d | 0d | SQM-PIPING [1666.71 h] | 1,666.71 | 5772-TK800 | un | 118 | 99.8 | 99.8 |  |
| A6180 |  | Válvulas Sector TK-800 (Global) | 81.82d | 2025-09-12 | 2025-12-03 | A6040 SS | 107.91d | 0d | SQM-PIPING [251.25 h] | 251.25 | 5772-TK800 | un | 21 | 99.17 | 99.17 |  |
|  | 3 | **TIE IN LÍNEAS ASOCIADAS A TK-800** |  | 2025-12-03 | 2025-12-09 |  |  |  |  |  |  |  |  |  |  |  |
| A6190 |  | TIE-IN N° 1431 - 5772-EST-800 FRP a Línea Proyectada 150-TW-5772-I1-1661 | 2.18d | 2025-12-03 | 2025-12-05 | A6160 | 107.91d | 0d | SQM-PIPING [50.67 h] | 50.67 | 5772-TK800 | un | 1 | 2.3.1 | 4.2.3.2 |  |
| A6200 |  | TIE-IN N° 1432 - 5772-EST-800 FRP a Línea Proyectada 150-TW-5772-I1-1663 | 2.18d | 2025-12-05 | 2025-12-07 | A6190 | 107.91d | 0d | SQM-PIPING [50.67 h] | 50.67 | 5772-TK800 | un | 1 | 2.3.2 | 4.2.3.1 |  |
| A6210 |  | Perforación de Estanque Existente TK-800 para TIE-IN N°1431 y 1432. | 2.18d | 2025-12-07 | 2025-12-09 | A6200, A6250 | 107.91d | 0d | SQM-PIPING [101.33 h] | 101.33 | 5772-TK800 | un | 2 | 2.1.39 | 4.2.1.39 |  |
|  | 4 | **FABRICACIÓN Y MONTAJE DE SOPORTES TK-800** |  | 2025-11-23 | 2025-11-27 |  |  |  |  |  |  |  |  |  |  |  |
| A6220 |  | Soporte N°001 - Pedestal Tipo TEE, Acero Estructural para Tuberías Diámetros Pequeños | 4.36d | 2025-11-23 | 2025-11-27 | A6110 FF | 118.82d | 0d | SQM-PIPING [9 h] | 9 | 5772-TK800 | un | 2 | 2.4.1 | 4.2.4.4 | R FF |
| A6230 |  | Soporte N°002B - Pedestal con Repisa de Acero Estructural para Tuberías Diámetros Pequeños | 4.36d | 2025-11-23 | 2025-11-27 | A6220 SS | 118.82d | 0d | SQM-PIPING [9 h] | 9 | 5772-TK800 | un | 2 | 2.4.2 | 4.2.4.3 |  |
| A6240 |  | Soporte N°003 - Tirángulo Tipo Repisa (Existente), Acero Estructural (NOTA 4) | 0d | 2025-11-23 | 2025-11-23 | A6230 SS | 118.82d | 0d | SQM-PIPING |  | 5772-TK800 | (NOTA 4) | 0 | 2.4.3 | 4.2.4.2 |  |
| A6250 |  | Soporte Primario Tipo "U" (Para Uso General) | 3.27d | 2025-11-23 | 2025-11-26 | A6240 SS | 118.82d | 4.36d | SQM-PIPING [1 h] | 1 | 5772-TK800 | un | 75 | 2.4.4 | 4.2.4.1 |  |
|  | 4 | **OBRAS ELÉCTRICAS TK-800** |  | 2025-10-16 | 2025-12-01 |  |  |  |  |  |  |  |  |  |  |  |
|  | 1 | **MONTAJE DE CANALIZACIÓN Y FERRETERÍA TK-800** |  | 2025-10-16 | 2025-11-04 |  |  |  |  |  |  |  |  |  |  |  |
| A6260 |  | Canalización y Copla de Conduit de Acero Galvanizado 6"Ø, Conduit ANSI C80.1 | 10.91d | 2025-10-16 | 2025-10-26 | A6030 | 90.45d | 0d | SQM-ELÉCTRICO [521.43 h] | 521.43 | 5772-TK800 | m | 130 | 3.2.1 | 4.3.1.3 |  |
| A6270 |  | Canalización y Copla de Conduit Flexible Metálico con Cubierta PVC 6" Ø Trabajo Pesado | 2.18d | 2025-10-27 | 2025-10-29 | A6260 | 90.45d | 0d | SQM-ELÉCTRICO [33.6 h] | 33.6 | 5772-TK800 | m | 10 | 3.2.2 | 4.3.1.1 |  |
| A6280 |  | Canalización y Copla de Conduit de Acero Galvanizado 1 ½"Ø, Conduit ANSI C80.1 | 4.36d | 2025-10-29 | 2025-11-02 | A6270 | 90.45d | 0d | SQM-ELÉCTRICO [126 h] | 126 | 5772-TK800 | m | 100 | 3.2.3 | 4.3.1.4 |  |
| A6290 |  | Canalización y Copla de Conduit Flexible Metálico con Cubierta PVC 1 ½" Ø Trabajo Pesado | 2.18d | 2025-11-02 | 2025-11-04 | A6280 | 90.45d | 0d | SQM-ELÉCTRICO [6.3 h] | 6.3 | 5772-TK800 | m | 5 | 3.2.4 | 4.3.1.2 |  |
|  | 2 | **TENDIDO Y CONEXIONADO DE CABLES DE ALIMENTACIÓN TK-800** |  | 2025-11-04 | 2025-11-19 |  |  |  |  |  |  |  |  |  |  |  |
| A6300 |  | Cable Monoconductor de Cobre con Aislación XLPE, 1C #350 MCM, Clase 1 kV | 15.27d | 2025-11-04 | 2025-11-19 | A6290, A6280 | 90.45d | 0d | SQM-ELÉCTRICO [1930 h] | 1,930 | 5772-TK800 | m | 920 | 3.3.1 | 4.3.2.2 |  |
| A6310 |  | Cable Multiconductor de Cobre con Aislación de XLPE, 1x5C #12 AWG, Clase 1 kV | 5.45d | 2025-11-14 | 2025-11-19 | A6300 FF | 90.45d | 0d | SQM-ELÉCTRICO [182.67 h] | 182.67 | 5772-TK800 | m | 174 | 3.3.2 | 4.3.2.1 | R FF |
|  | 3 | **MONTAJE Y CONEXIONADO DE EQUIPOS ELÉCTRICOS TK-800** |  | 2025-11-20 | 2025-11-29 |  |  |  |  |  |  |  |  |  |  |  |
| A6320 |  | Variador de Frecuencia TAG: 5772-VSD-1603 en SEL-403. | 2.18d | 2025-11-20 | 2025-11-22 | A6310 | 117.73d | 0d | SQM-ELÉCTRICO [36 h] | 36 | 5772-TK800 | gl | 1 | 3.4.1 | 4.3.3.2 |  |
| A6330 |  | Variador de Frecuencia TAG: 5772-VSD-1605 en SEL-403. | 2.18d | 2025-11-22 | 2025-11-24 | A6320 | 117.73d | 0d | SQM-ELÉCTRICO [36 h] | 36 | 5772-TK800 | gl | 1 | 3.4.2 | 4.3.3.1 |  |
| A6340 |  | Modificación de Cubiculo Existente en TAG: 5770-CCM-488, para Suministro de Energía de TAG: 5772-VSD-1603. | 2.18d | 2025-11-24 | 2025-11-26 | A6330 | 117.73d | 0d | SQM-ELÉCTRICO [35 h] | 35 | 5772-TK800 | gl | 1 | 3.4.3 | 4.3.3.4 |  |
| A6350 |  | Modificación de Cubiculo Existente en TAG: 5770-CCM-488, para Suministro de Energía de TAG: 5772-VSD-1605. | 2.18d | 2025-11-26 | 2025-11-28 | A6340 | 117.73d | 0d | SQM-ELÉCTRICO [35 h] | 35 | 5772-TK800 | gl | 1 | 3.4.4 | 4.3.3.3 |  |
| A6360 |  | Conexión de entre CCM TAG: 5770-CCM-488 y VDF TAG: 5772-VSD-1603. | 1.09d | 2025-11-28 | 2025-11-29 | A6350 | 117.73d | 0d | SQM-ELÉCTRICO [4.12 h] | 4.12 | 5772-TK800 | gl | 1 | 3.4.5 | 4.4.4.6 |  |
| A6370 |  | Conexión de entre CCM TAG: 5770-CCM-488 y VDF TAG: 5772-VSD-1605. | 1.09d | 2025-11-28 | 2025-11-29 | A6360 SS | 117.73d | 0d | SQM-ELÉCTRICO [4.12 h] | 4.12 | 5772-TK800 | gl | 1 | 3.4.6 | 4.4.4.5 |  |
| A6380 |  | Conexión de entre VDF TAG: 5772-VSD-1603 y Motor TAG: 5772-MTR-1602. | 1.09d | 2025-11-28 | 2025-11-29 | A6370 SS | 117.73d | 0d | SQM-ELÉCTRICO [4.12 h] | 4.12 | 5772-TK800 | gl | 1 | 3.4.7 | 4.4.4.4 |  |
| A6390 |  | Conexión de entre VDF TAG: 5772-VSD-1605 y Motor TAG: 5772-MTR-1604. | 1.09d | 2025-11-28 | 2025-11-29 | A6380 SS | 117.73d | 0d | SQM-ELÉCTRICO [4.12 h] | 4.12 | 5772-TK800 | gl | 1 | 3.4.8 | 4.4.4.3 |  |

| ID | WBS | Activity | Duration | Start | Finish | Predecessors | Total float | Free float | Resources | Cost | Área | Unidad | Cantidad | Ítem LP | Ìtem EDP | Corregir |
| --- | --- | --- | --- | --- | --- | --- | --- | --- | --- | --- | --- | --- | --- | --- | --- | --- |
|  | 4 | **PRUEBAS DE FUNCIONAMIENTO Y PEM TK-800** |  | 2025-11-29 | 2025-12-01 |  |  |  |  |  |  |  |  |  |  |  |
| A6400 |  | Pruebas de Funcionamiento y Puesta en Marcha de Motor TAG: 5772-MTR-1602. | 1.09d | 2025-11-29 | 2025-11-30 | A6390 | 117.73d | 0d | SQM-ELÉCTRICO [12 h] | 12 | 5772-TK800 | gl | 1 | 3.5.1 | 4.3.4.2 |  |
| A6410 |  | Pruebas de Funcionamiento y Puesta en Marcha de Motor TAG: 5772-MTR-1604. | 1.09d | 2025-11-30 | 2025-12-01 | A6400, A6250 | 117.73d | 0d | SQM-ELÉCTRICO [12 h] | 12 | 5772-TK800 | gl | 1 | 3.5.2 | 4.3.4.1 |  |
|  | 5 | **OBRAS DE INSTRUMENTACIÓN TK-800** |  | 2025-11-04 | 2025-12-03 |  |  |  |  |  |  |  |  |  |  |  |
|  | 1 | **MONTAJE DE CANALIZACIÓN Y FERRETERÍA INST. TK-800** |  | 2025-11-04 | 2025-11-14 |  |  |  |  |  |  |  |  |  |  |  |
| A6420 |  | Canalización y Copla de Conduit de Acero Galvanizado 1"Ø, Conduit ANSI C80.1 | 7.64d | 2025-11-04 | 2025-11-12 | A6290 | 131.91d | 0d | SQM-INSTRUMENTACIÓN [151.2 h] | 151.2 | 5772-TK800 | m | 120 | 4.2.1 | 4.4.1.1 |  |
| A6430 |  | Canalización y Copla de Conduit Flexible Metálico con Cubierta PVC 1" Ø Trabajo Pesado | 2.18d | 2025-11-12 | 2025-11-14 | A6420 | 131.91d | 0d | SQM-INSTRUMENTACIÓN [12.6 h] | 12.6 | 5772-TK800 | m | 10 | 4.2.2 | 4.4.1.2 |  |
|  | 2 | **TENDIDO Y CONEXIONADO DE CABLES INSTRUMENTACIÓN TK-800** |  | 2025-11-14 | 2025-11-14 |  |  |  |  |  |  |  |  |  |  |  |
| A6440 |  | Cable Multiconductor de Cobre con Aislación de XLPE, 1x3C #12 AWG, Clase 1 kV | 0d | 2025-11-14 | 2025-11-14 | A6430 | 131.91d | 0d | SQM-INSTRUMENTACIÓN |  | 5772-TK800 | m | 0 | 4.3.1 | 4.4.2.1 |  |
| A6450 |  | Cable de Instrumentación (Señales Análogas), 1x1 par #16 AWG Apantallado | 0d | 2025-11-14 | 2025-11-14 | A6440 | 131.91d | 0d | SQM-INSTRUMENTACIÓN |  | 5772-TK800 | m | 0 | 4.3.2 | 4.4.2.2 |  |
|  | 3 | **MONTAJE Y CONEXIONADO DE EQUIPOS E INSTRUMENTOSTK-800** |  | 2025-11-14 | 2025-11-16 |  |  |  |  |  |  |  |  |  |  |  |
| A6460 |  | Instrumento TAG: PIT-1151 | 1.09d | 2025-11-14 | 2025-11-15 | A6450 | 131.91d | 0d | SQM-INSTRUMENTACIÓN [12 h] | 12 | 5772-TK800 | gl | 1 | 4.4.1 | 4.4.3.1 |  |
| A6470 |  | Instrumento TAG: FIT-1152 | 1.09d | 2025-11-15 | 2025-11-16 | A6460 | 131.91d | 0d | SQM-INSTRUMENTACIÓN [12 h] | 12 | 5772-TK800 | gl | 1 | 4.4.2 | 4.4.3.2 |  |
|  | 4 | **PRUEBAS DE FUNCIONAMIENTO Y PEM INST. TK-800** |  | 2025-11-16 | 2025-12-03 |  |  |  |  |  |  |  |  |  |  |  |
| A6480 |  | Pruebas de Operación y Puesta en Marcha de Instrumento TAG: PIT-1151 | 1.09d | 2025-11-16 | 2025-11-17 | A6470 | 131.91d | 14.18d | SQM-INSTRUMENTACIÓN [12 h] | 12 | 5772-TK800 | gl | 1 | 4.5.1 | 4.4.4.1 |  |
| A6490 |  | Pruebas de Operación y Puesta en Marcha de Instrumento TAG: FIT-1152 | 1.09d | 2025-12-02 | 2025-12-03 | A6480, A6410 | 117.73d | 64.27d | SQM-INSTRUMENTACIÓN [12 h] | 12 | 5772-TK800 | gl | 1 | 4.5.2 | 4.4.4.2 |  |
|  | 3 | **ÁREA 5728 - SECTOR TK-3000** |  | 2025-10-10 | 2026-01-02 |  |  |  |  |  |  |  |  |  |  |  |
|  | 1 | **OBRAS CIVILES TK-3000** |  | 2025-10-10 | 2025-10-23 |  |  |  |  |  |  |  |  |  |  |  |
|  | 1 | **EXTRACCIÓN DE ESTRUCTURA, FUNDACIONES Y DEM TK3000** |  | 2025-10-10 | 2025-10-13 |  |  |  |  |  |  |  |  |  |  |  |
| A6500 |  | Recorte de Grating Existente a Plomo Peldaño Escalera | 1.09d | 2025-10-10 | 2025-10-11 | A5990 | 70.82d | 0d | SQM-OOCC [0.55 h] | 0.55 | 5728-TK3000 | m3 | 0.12 | 4.1.1. | 8.4.1.1 | ACTIVIDADES DEL 001 |
| A6510 |  | Extracción Columnas Existentes de Estructura Monorriel | 3.27d | 2025-10-10 | 2025-10-13 | A6500 SS | 70.82d | 0d | SQM-OOCC [9.94 h] | 9.94 | 5728-TK3000 | kg | 108 | 4.1.2. | 8.4.1.2 |  |
| A6520 |  | Extracción Diagonales Existentes de Estructura Monorriel | 1.09d | 2025-10-10 | 2025-10-11 | A6510 SS | 70.82d | 0d | SQM-OOCC [1.11 h] | 1.11 | 5728-TK3000 | kg | 12.02 | 4.1.3. | 8.4.1.3 |  |
| A6530 |  | Extracción de Ducha | 1.09d | 2025-10-11 | 2025-10-12 | A6520 | 70.82d | 0d | SQM-OOCC [9.15 h] | 9.15 | 5728-TK3000 | cant | 1 | 4.1.4. | 8.4.1.4 |  |
|  | 2 | **FABRICACIÓN Y MONTAJE DE ESTRUCTURA MONORRIEL TK-3000** |  | 2025-10-12 | 2025-10-23 |  |  |  |  |  |  |  |  |  |  |  |
| A6550 |  | Armadura de refuerzo A630-420H Fundaciones TK-3000 | 3.27d | 2025-10-12 | 2025-10-16 | A6530 | 70.82d | 0d | SQM-OOCC [10.19 h] | 10.19 | 5728-TK3000 | kg | 74 | 4.3.1 | 8.4.3.1 |  |
| A6540 |  | Hormigón G30 Pedestal PD-1 (TAG: 5728-BBA-6066 y TAG: 5728-BBA-6063) | 2.18d | 2025-10-16 | 2025-10-18 | A6550 | 70.82d | 0d | SQM-OOCC [9.63 h] | 9.63 | 5728-TK3000 | m3 | 0.86 | 4.2.1. | 8.4.2.1 |  |
| A6560 |  | Columna Nueva de Estructura Monorriel | 3.27d | 2025-10-18 | 2025-10-21 | A6540 | 70.82d | 0d | SQM-OOCC [12.84 h] | 12.84 | 5728-TK3000 | kg | 84.48 | 4.4.1. | 8.4.4.1 |  |
| A6570 |  | Diagonales Nuevas de Refuerzo Estructura Monorriel | 2.18d | 2025-10-21 | 2025-10-23 | A6560 | 70.82d | 0d | SQM-OOCC [5.12 h] | 5.12 | 5728-TK3000 | kg | 33.66 | 4.4.2. | 8.4.4.2 |  |

| ID | WBS | Activity | Duration | Start | Finish | Predecessors | Total float | Free float | Resources | Cost | Área | Unidad | Cantidad | Ítem LP | Ìtem EDP | Corregir |
| --- | --- | --- | --- | --- | --- | --- | --- | --- | --- | --- | --- | --- | --- | --- | --- | --- |
|  | 2 | **OBRAS MECÁNICAS TK-3000** |  | 2025-11-08 | 2025-11-16 |  |  |  |  |  |  |  |  |  |  |  |
|  | 1 | **MONTAJE Y PRUEBAS DE EQUIPOS MECÁNICOS TK-3000** |  | 2025-11-08 | 2025-11-16 |  |  |  |  |  |  |  |  |  |  |  |
| A6580 |  | Bomba Centrífuga y Motor TAG: 5728-BBA-6063; 5728-MTR-6064 | 4.36d | 2025-11-08 | 2025-11-12 | A8370 | 70.82d | 0d | SQM-MECANICA [139.9 h] | 139.9 | 5728-TK3000 | un | 1 | 1.1.1 | 3.1.1.1 |  |
| A6590 |  | Bomba Centrífuga y Motor TAG: 5728-BBA-6066; 5728-MTR-6067 | 4.36d | 2025-11-12 | 2025-11-16 | A6580 | 70.82d | 0d | SQM-MECANICA [139.9 h] | 139.9 | 5728-TK3000 | un | 1 | 1.1.2 | 3.1.1.2 |  |
|  | 3 | **OBRAS DE ESTRUCTURA TK-3000** |  | 2025-12-09 | 2025-12-12 |  |  |  |  |  |  |  |  |  |  |  |
|  | 1 | **MONTAJE Y PRUEBAS DE EQUIPOS MECÁNICOS ÁREA 5827 SECTOR TK-3000** |  | 2025-12-09 | 2025-12-12 |  |  |  |  |  |  |  |  |  |  |  |
| A6600 |  | Modificación de Estructura para Tecle Monorriel Existente | 3.27d | 2025-12-09 | 2025-12-12 | A6570, A6210, A3450 | 107.91d | 54.45d | SQM-ESTRUCTURA [254.5 h] | 254.5 | 5728-TK3000 | un | 1 | 1.1.3 | 3.1.1.3 | VALIDAR INFORMACIÓN SI REQUIERE TECLE |
|  | 4 | **OBRAS PIPING TK-3000** |  | 2025-11-04 | 2025-12-28 |  |  |  |  |  |  |  |  |  |  |  |
|  | 1 | **FABRICACIÓN Y MONTAJE DE CAÑERÍAS ÁREA TK-3000** |  | 2025-11-04 | 2025-12-27 |  |  |  |  |  |  |  |  |  |  |  |
| A6610 |  | Ø 6" - Cañería Acero Inoxidable - Fabricación | 32.73d | 2025-11-04 | 2025-12-07 | A6550 SS+4.36d, A4380 | 61d | 0d | SQM-PIPING [7189 h] | 7,189 | 5728-TK3000 | un | 587 | 2.1.28 | 3.2.1.7 |  |
| A6660 |  | Ø 6" - Cañería Acero Inoxidable - Montaje | 32.73d | 2025-11-06 | 2025-12-09 | A6610 SS+2.18d, A6700, A6710, A4490 SS | 95.91d | 0d | SQM-PIPING [3873.6 h] | 3,873.6 | 5728-TK3000 | m | 1428 | 2.1.1 | 3.2.1.12 | R FF |
| A6620 |  | Ø 4" - Cañería Acero Inoxidable - Fabricación | 4.36d | 2025-12-07 | 2025-12-11 | A6610 | 70.82d | 0d | SQM-PIPING [60.8 h] | 60.8 | 5728-TK3000 | un | 8 | 2.1.29 | 3.2.1.14 |  |
| A6630 |  | Ø 3" - Cañería Acero Inoxidable - Fabricación | 3.27d | 2025-12-08 | 2025-12-11 | A6620 FF | 70.82d | 0d | SQM-PIPING [22.4 h] | 22.4 | 5728-TK3000 | un | 4 | 2.1.30 | 3.2.1.19 |  |
| A6680 |  | Ø 3" - Cañería Acero Inoxidable - Montaje | 3.27d | 2025-12-10 | 2025-12-13 | A6670 FF | 74.09d | 2.18d | SQM-PIPING [0.34 h] | 0.34 | 5728-TK3000 | m | 0.170091882 | 2.1.3 | 3.2.1.22 |  |
| A6640 |  | Ø 2" - Cañería Acero Inoxidable - Fabricación | 15.27d | 2025-12-11 | 2025-12-27 | A6630 | 70.82d | 0d | SQM-PIPING [1059.22 h] | 1,059.22 | 5728-TK3000 | un | 258 | 2.1.31 | 3.2.1.25 |  |
| A6670 |  | Ø 4" - Cañería Acero Inoxidable - Montaje | 2.18d | 2025-12-11 | 2025-12-13 | A6620 | 70.82d | 0d | SQM-PIPING [0.36 h] | 0.36 | 5728-TK3000 | m | 0.152475419 | 2.1.2 | 3.2.1.17 |  |
| A6690 |  | Ø 2" - Cañería Acero Inoxidable - Montaje | 10.91d | 2025-12-16 | 2025-12-27 | A6680, A6640 FF | 71.91d | 0d | SQM-PIPING [273.65 h] | 273.65 | 5728-TK3000 | m | 98.025434821 | 2.1.4 | 3.2.1.32 |  |
| A6650 |  | Ø 1" - Cañería Acero Inoxidable - Fabricación | 3.27d | 2025-12-23 | 2025-12-27 | A6640 FF, A4000 | 70.82d | 0d | SQM-PIPING [8 h] | 8 | 5728-TK3000 | un | 4 | 2.1.32 | 3.2.1.33 |  |
|  | 2 | **MONTAJE DE VÁLVULAS Y FITTING SECTOR TK-3000** |  | 2025-11-04 | 2025-11-06 |  |  |  |  |  |  |  |  |  |  |  |
| A6700 |  | Fitting Sector TK-3000 (Global) | 2.18d | 2025-11-04 | 2025-11-06 | A6610 SS | 95.91d | 0d | SQM-PIPING [4812.47 h] | 4,812.47 | 5728-TK3000 | un | 384 | 99.9 | 99.9 |  |
| A6710 |  | Válvulas Sector TK-3000 (Global) | 2.18d | 2025-11-04 | 2025-11-06 | A6610 SS | 95.91d | 0d | SQM-PIPING [591 h] | 591 | 5728-TK3000 | un | 61 | 99.18 | 99.18 |  |
|  | 3 | **TIE IN LÍNEAS ASOCIADAS A TK-3000** |  | 2025-12-21 | 2025-12-28 |  |  |  |  |  |  |  |  |  |  |  |
| A6720 |  | Perforación de Estanque Existente TK-001 para TIE-IN N°6451, 6452 y 6453. | 5.45d | 2025-12-21 | 2025-12-27 | A6690 FF | 71.91d | 0d | SQM-PIPING [152 h] | 152 | 5728-TK3000 | un | 3 | 2.1.33 | 3.2.1.1 |  |
| A6730 |  | TIE-IN N° 6451 - 5728-EST-001 FRP a Línea Proyectada 150-LC-5728-I1-6633-A | 1.09d | 2025-12-26 | 2025-12-27 | A6720 FF | 71.91d | 0d | SQM-PIPING [50.67 h] | 50.67 | 5728-TK3000 | un | 1 | 2.3.1 | 3.2.3.3 |  |
| A6740 |  | TIE-IN N° 6452 - 5728-EST-001 FRP a Línea Proyectada 150-LC-5728-I1-6605-A | 1.09d | 2025-12-26 | 2025-12-27 | A6730 FF | 71.91d | 1.09d | SQM-PIPING [50.67 h] | 50.67 | 5728-TK3000 | un | 1 | 2.3.2 | 3.2.3.2 |  |
| A6750 |  | TIE-IN N° 6453 - 5728-EST-001 FRP a Línea Proyectada 150-LC-5817-I1-6604-A | 1.09d | 2025-12-27 | 2025-12-28 | A6740 FF, A6650 | 70.82d | 2.09d | SQM-PIPING [50.67 h] | 50.67 | 5728-TK3000 | un | 1 | 2.3.3 | 3.2.3.1 |  |

| ID | WBS | Activity | Duration | Start | Finish | Predecessors | Total float | Free float | Resources | Cost | Área | Unidad | Cantidad | Ítem LP | Ìtem EDP | Corregir |
| --- | --- | --- | --- | --- | --- | --- | --- | --- | --- | --- | --- | --- | --- | --- | --- | --- |
|  | 4 | **AISLACIÓN LÍNEAS TK-3000** |  | 2025-11-15 | 2025-12-20 |  |  |  |  |  |  |  |  |  |  |  |
| A6760 |  | Ø 6" - Aislación de Lana Mineral de 1,5" de espesor | 32.73d | 2025-11-15 | 2025-12-18 | A6660 FF+8.73d | 95.91d | 2.18d | SQM-PIPING [6114.66 h] | 6,114.66 | 5728-TK3000 | un | 1428 | 2.1.5 | 3.2.1.13 | R FF |
| A6770 |  | Ø 4" - Aislación de Lana Mineral de 1,5" de espesor | 3.27d | 2025-12-14 | 2025-12-17 | A6670 | 70.82d | 0d | SQM-PIPING [0.73 h] | 0.73 | 5728-TK3000 | un | 0.152475419 | 2.1.6 | 3.2.1.18 |  |
| A6780 |  | Ø 3" - Aislación de Lana Mineral de 1,5" de espesor | 3.27d | 2025-12-17 | 2025-12-20 | A6680, A6770 | 70.82d | 0d | SQM-PIPING [0.54 h] | 0.54 | 5728-TK3000 | un | 0.170091882 | 2.1.7 | 3.2.1.23 |  |
|  | 5 | **RETIRO DE ELEMENTOS EXISTENTES TK-3000** |  | 2025-12-20 | 2025-12-27 |  |  |  |  |  |  |  |  |  |  |  |
| A6790 |  | Retiro y Reubicación de Ducha Existente | 5.45d | 2025-12-20 | 2025-12-25 | A6780 | 93.73d | 0d | SQM-PIPING [60 h] | 60 | 5728-TK3000 | gl | 1 | 2.1.34 | 3.2.1.2 |  |
| A6800 |  | Corte y Retiro de Parrilla de Piso Existente | 6.55d | 2025-12-20 | 2025-12-27 | A6790 SS | 93.73d | 0d | SQM-PIPING [66 h] | 66 | 5728-TK3000 | gl | 1 | 2.1.35 | 3.2.1.35 |  |
| A6810 |  | Corte y Retiro de Columna Estructural Existente y Reforzamiento de Viga Voladizo. | 6.55d | 2025-12-20 | 2025-12-27 | A6800 FF, A6760, A6870 | 93.73d | 6.55d | SQM-PIPING [624 h] | 624 | 5728-TK3000 | gl | 1 | 2.1.36 | 3.2.1.36 |  |
|  | 6 | **FABRICACIÓN Y MONTAJE DE SOPORTES TK-3000** |  | 2025-11-06 | 2025-12-07 |  |  |  |  |  |  |  |  |  |  |  |
| A6820 |  | Soporte N°001 - Pedestal Tipo TEE, Acero Estructural para Tuberías Diámetros Pequeños | 6.55d | 2025-11-06 | 2025-11-13 | A6660 SS, A4630 | 106.82d | 0d | SQM-PIPING [12.75 h] | 12.75 | 5728-TK3000 | un | 3 | 2.4.1 | 3.2.4.6 |  |
| A6830 |  | Soporte N°002 - Pedestal con Repisa de Acero Estructural para Tuberías Diámetros Pequeños | 4.36d | 2025-11-13 | 2025-11-17 | A6820 | 106.82d | 0d | SQM-PIPING [8.5 h] | 8.5 | 5728-TK3000 | un | 2 | 2.4.2 | 3.2.4.5 |  |
| A6840 |  | Soporte N°003 - Pedestal, Acero Estructural para Tuberías Diámetros Pequeños | 4.36d | 2025-11-17 | 2025-11-22 | A6830 | 106.82d | 0d | SQM-PIPING [4.25 h] | 4.25 | 5728-TK3000 | un | 1 | 2.4.3 | 3.2.4.4 |  |
| A6850 |  | Soporte N°004 - Pedestal y Voladizo Tipo Simple, Acero Estructural para Tuberías Diámetros Pequeños | 4.36d | 2025-11-22 | 2025-11-26 | A6840 | 106.82d | 0d | SQM-PIPING [4.25 h] | 4.25 | 5728-TK3000 | un | 1 | 2.4.4 | 3.2.4.3 |  |
| A6860 |  | Soporte N°005 - Arco Tipo Colgante, Acero Estructural para Tuberías Diámetros Pequeños | 4.36d | 2025-11-26 | 2025-11-30 | A6850 | 106.82d | 0d | SQM-PIPING [4.25 h] | 4.25 | 5728-TK3000 | (NOTA 4) | 1 | 2.4.5 | 3.2.4.2 |  |
| A6870 |  | Soporte Primario Tipo "U" (Para Uso General) | 6.55d | 2025-11-30 | 2025-12-07 | A6860 | 106.82d | 13.09d | SQM-PIPING [3.66 h] | 3.66 | 5728-TK3000 | un | 360 | 2.4.6 | 3.2.4.1 |  |
|  | 5 | **OBRAS ELÉCTRICAS TK-3000** |  | 2025-11-16 | 2025-12-31 |  |  |  |  |  |  |  |  |  |  |  |
|  | 1 | **MONTAJE DE CANALIZACIÓN Y FERRETERÍA TK-3000** |  | 2025-11-16 | 2025-11-30 |  |  |  |  |  |  |  |  |  |  |  |
| A6880 |  | Canalización y Copla de Conduit de Acero Galvanizado 6"Ø, Conduit ANSI C80.1 | 4.36d | 2025-11-16 | 2025-11-21 | A6590, A6260 SS | 70.82d | 0d | SQM-ELÉCTRICO [802.2 h] | 802.2 | 5728-TK3000 | m | 200 | 3.2.1 | 3.3.1.2 |  |
| A6890 |  | Canalización y Copla de Conduit Flexible Metálico con Cubierta PVC 6" Ø Trabajo Pesado. | 2.18d | 2025-11-21 | 2025-11-23 | A6880 | 70.82d | 0d | SQM-ELÉCTRICO [33.6 h] | 33.6 | 5728-TK3000 | m | 10 | 3.2.2 | 3.3.1.3 |  |
| A6900 |  | Canalización y Copla de Conduit de Acero Galvanizado 1 ½"Ø, Conduit ANSI C80.1 | 5.45d | 2025-11-23 | 2025-11-28 | A6890 | 70.82d | 0d | SQM-ELÉCTRICO [214.2 h] | 214.2 | 5728-TK3000 | m | 170 | 3.2.3 | 3.3.1.4 |  |
| A6910 |  | Canalización y Copla de Conduit Flexible Metálico con Cubierta PVC 1 ½" Ø Trabajo Pesado. | 2.18d | 2025-11-28 | 2025-11-30 | A6900 | 70.82d | 0d | SQM-ELÉCTRICO [6.3 h] | 6.3 | 5728-TK3000 | m | 5 | 3.2.4 | 3.3.1.1 |  |
|  | 2 | **TENDIDO Y CONEXIONADO DE CABLES DE ALIMENTACIÓN TK-3000** |  | 2025-11-28 | 2025-12-15 |  |  |  |  |  |  |  |  |  |  |  |
| A6920 |  | Cable Monoconductor de Cobre con Aislación XLPE, 1C #350 MCM, Clase 1 kV | 16.36d | 2025-11-28 | 2025-12-15 | A6880 SS, A6910 SS | 87.18d | 0d | SQM-ELÉCTRICO [1544 h] | 1,544 | 5728-TK3000 | m | 2320 | 3.3.1 | 3.3.2.1 |  |
| A6930 |  | Cable Multiconductor de Cobre con Aislación de XLPE, 1x5C #12 AWG, Clase 1 kV | 5.45d | 2025-12-09 | 2025-12-15 | A6920 FF | 87.18d | 0d | SQM-ELÉCTRICO [184.5 h] | 184.5 | 5728-TK3000 | m | 460 | 3.3.2 | 3.3.1.5 |  |

| ID | WBS | Activity | Duration | Start | Finish | Predecessors | Total float | Free float | Resources | Cost | Área | Unidad | Cantidad | Ítem LP | Ìtem EDP | Corregir |
| --- | --- | --- | --- | --- | --- | --- | --- | --- | --- | --- | --- | --- | --- | --- | --- | --- |
|  | 3 | **MONTAJE Y CONEXIONADO DE EQUIPOS ELÉCTRICOS TK-3000** |  | 2025-12-15 | 2025-12-27 |  |  |  |  |  |  |  |  |  |  |  |
| A6940 |  | Variador de Frecuencia TAG: 5728-VSD-6065 en SEL-401. | 2.18d | 2025-12-15 | 2025-12-17 | A6920, A6930 | 87.18d | 0d | SQM-ELÉCTRICO [36 h] | 36 | 5728-TK3000 | gl | 1 | 3.4.1 | 3.3.3.8 |  |
| A6950 |  | Variador de Frecuencia TAG: 5728-VSD-6068 en SEL-401. | 2.18d | 2025-12-17 | 2025-12-19 | A6940 | 87.18d | 0d | SQM-ELÉCTRICO [36 h] | 36 | 5728-TK3000 | gl | 1 | 3.4.2 | 3.3.3.7 |  |
| A6960 |  | Modificación de Cubiculo Existente en TAG: 5770-CCM-431, para Suministro de Energía de TAG: 5728-VSD-6065. | 2.18d | 2025-12-19 | 2025-12-21 | A6950 | 87.18d | 0d | SQM-ELÉCTRICO [35 h] | 35 | 5728-TK3000 | gl | 1 | 3.4.3 | 3.3.3.6 |  |
| A6970 |  | Modificación de Cubiculo Existente en TAG: 5770-CCM-431, para Suministro de Energía de TAG: 5728-VSD-6068. | 2.18d | 2025-12-21 | 2025-12-23 | A6960 | 87.18d | 0d | SQM-ELÉCTRICO [35 h] | 35 | 5728-TK3000 | gl | 1 | 3.4.4 | 3.3.3.5 |  |
| A6980 |  | Conexión de entre CCM TAG: 5770-CCM-431 y VDF TAG: 5728-VSD-6065. | 1.09d | 2025-12-22 | 2025-12-23 | A6970 FF | 87.18d | 0d | SQM-ELÉCTRICO [4.12 h] | 4.12 | 5728-TK3000 | gl | 1 | 3.4.5 | 3.3.3.4 |  |
| A6990 |  | Conexión de entre CCM TAG: 5770-CCM-431 y VDF TAG: 5728-VSD-6068. | 1.09d | 2025-12-23 | 2025-12-24 | A6980 | 87.18d | 0d | SQM-ELÉCTRICO [4.12 h] | 4.12 | 5728-TK3000 | gl | 1 | 3.4.6 | 3.3.3.3 |  |
| A7000 |  | Conexión de entre VDF TAG: 5728-VSD-6065 y Motor TAG: 5728-MTR-6064. | 1.09d | 2025-12-24 | 2025-12-25 | A6990 | 87.18d | 0d | SQM-ELÉCTRICO [4.12 h] | 4.12 | 5728-TK3000 | gl | 1 | 3.4.7 | 3.3.3.2 |  |
| A7010 |  | Conexión de entre VDF TAG: 5728-VSD-6068 y Motor TAG: 5728-MTR-6067. | 1.09d | 2025-12-26 | 2025-12-27 | A7000 | 87.18d | 0d | SQM-ELÉCTRICO [4.12 h] | 4.12 | 5728-TK3000 | gl | 1 | 3.4.8 | 3.3.3.1 |  |
|  | 4 | **PRUEBAS DE FUNCIONAMIENTO Y PEM TK-3000** |  | 2025-12-27 | 2025-12-31 |  |  |  |  |  |  |  |  |  |  |  |
| A7020 |  | Pruebas de Funcionamiento y Puesta en Marcha de Motor TAG: 5728-MTR-6065. | 2.18d | 2025-12-27 | 2025-12-29 | A7010 | 87.18d | 0d | SQM-ELÉCTRICO [12 h] | 12 | 5728-TK3000 | gl | 1 | 3.5.1 | 3.3.4.2 |  |
| A7030 |  | Pruebas de Funcionamiento y Puesta en Marcha de Motor TAG: 5728-MTR-6067. | 2.18d | 2025-12-29 | 2025-12-31 | A7020 | 87.18d | 0d | SQM-ELÉCTRICO [12 h] | 12 | 5728-TK3000 | gl | 1 | 3.5.2 | 3.3.4.1 |  |
|  | 6 | **OBRAS DE INSTRUMENTACIÓN TK-3000** |  | 2025-11-28 | 2026-01-02 |  |  |  |  |  |  |  |  |  |  |  |
|  | 1 | **MONTAJE DE CANALIZACIÓN Y FERRETERÍA INST. TK-3000** |  | 2025-11-28 | 2025-12-16 |  |  |  |  |  |  |  |  |  |  |  |
| A7040 |  | EPC y Copla Porta Conductores 600x100mm e:2,5 mm, tiras 3m. Incluir tapa dos aguas, eclisas y pernos de unión. | 3.27d | 2025-11-28 | 2025-12-01 | A6910 SS | 87.18d | 0d | SQM-INSTRUMENTACIÓN [168 h] | 168 | 5728-TK3000 | m | 30 | 4.2.1 | 3.4.1.2 |  |
| A7050 |  | EPC Curva Tipo "T", 600x100x2,5mm. Incluir tapa dos aguas, eclisas y pernos de unión. | 3.27d | 2025-11-28 | 2025-12-01 | A7040 FF | 87.18d | 0d | SQM-INSTRUMENTACIÓN [5.6 h] | 5.6 | 5728-TK3000 | un | 1 | 4.2.2 | 3.4.1.1 | R FF |
| A7060 |  | Canalización y Copla de Conduit de Acero Galvanizado 1"Ø, Conduit ANSI C80.1 | 13.09d | 2025-11-28 | 2025-12-11 | A7050 SS | 87.18d | 0d | SQM-INSTRUMENTACIÓN [907.2 h] | 907.2 | 5728-TK3000 | m | 720 | 4.2.3 | 3.4.1.4 |  |
| A7070 |  | Canalización y Copla de Conduit Flexible Metálico con Cubierta PVC 1" Ø Trabajo Pesado | 4.36d | 2025-12-11 | 2025-12-16 | A7060 | 104.64d | 19.64d | SQM-INSTRUMENTACIÓN [100.8 h] | 100.8 | 5728-TK3000 | m | 80 | 4.2.4 | 3.4.1.3 |  |
|  | 2 | **TENDIDO Y CONEXIONADO DE CABLES INSTRUMENTACIÓN TK-3000** |  | 2025-11-28 | 2025-12-22 |  |  |  |  |  |  |  |  |  |  |  |
| A7080 |  | Cable Multiconductor de Cobre con Aislación de XLPE, 1x3C #12 AWG, Clase 1 kV | 5.45d | 2025-11-28 | 2025-12-04 | A7060 SS | 87.18d | 0d | SQM-INSTRUMENTACIÓN [120.56 h] | 120.56 | 5728-TK3000 | m | 330 | 4.3.1 | 3.4.2.1 |  |
| A7090 |  | Cable de Instrumentación (Señales Análogas), 1x1 par #16 AWG Apantallado | 8.73d | 2025-11-28 | 2025-12-07 | A7080 SS | 87.18d | 0d | SQM-INSTRUMENTACIÓN [192.4 h] | 192.4 | 5728-TK3000 | m | 650 | 4.3.2 | 3.4.2.4 |  |
| A7100 |  | Cable Multiconductor de Cobre Blando 1x3C #12 AWG, Clase 0,3 | 15.27d | 2025-12-07 | 2025-12-22 | A7090 | 87.18d | 0d | SQM-INSTRUMENTACIÓN [774.51 h] | 774.51 | 5728-TK3000 | m | 2120 | 4.3.3 | 3.4.2.3 |  |
| A7110 |  | Cable Multiconductor de Cobre Blando 1x5C #12 AWG, Clase 0,3 | 15.27d | 2025-12-07 | 2025-12-22 | A7100 SS | 87.18d | 0d | SQM-INSTRUMENTACIÓN [774.51 h] | 774.51 | 5728-TK3000 | m | 2120 | 4.3.4 | 3.4.2.2 |  |
|  | 3 | **MONTAJE Y CONEXIONADO DE EQUIPOS E INSTRUMENTOSTK-3000** |  | 2025-12-22 | 2025-12-31 |  |  |  |  |  |  |  |  |  |  |  |
| A7120 |  | Instrumento TAG: PIT-6204 | 2.18d | 2025-12-22 | 2025-12-24 | A7110 | 87.18d | 0d | SQM-INSTRUMENTACIÓN [12 h] | 12 | 5728-TK3000 | gl | 1 | 4.4.1 | 3.4.3.17 |  |
| A7130 |  | Instrumento TAG: PIT-6214 | 2.18d | 2025-12-22 | 2025-12-24 | A7120 SS | 87.18d | 0d | SQM-INSTRUMENTACIÓN [12 h] | 12 | 5728-TK3000 | gl | 1 | 4.4.2 | 3.4.3.16 |  |
| A7140 |  | Instrumento TAG: UIT-6218 | 2.18d | 2025-12-22 | 2025-12-24 | A7130 SS | 87.18d | 0d | SQM-INSTRUMENTACIÓN [12 h] | 12 | 5728-TK3000 | gl | 1 | 4.4.3 | 3.4.3.15 |  |
| A7150 |  | Instrumento TAG: UIT-6220 | 2.18d | 2025-12-22 | 2025-12-24 | A7140 SS | 87.18d | 0d | SQM-INSTRUMENTACIÓN [12 h] | 12 | 5728-TK3000 | gl | 1 | 4.4.4 | 3.4.3.14 |  |
| A7160 |  | Instrumento TAG: XV-1153 | 2.18d | 2025-12-22 | 2025-12-24 | A7150 SS | 87.18d | 0d | SQM-INSTRUMENTACIÓN [21.75 h] | 21.75 | 5728-TK3000 | gl | 1 | 4.4.5 | 3.4.3.13 |  |
| A7170 |  | Instrumento TAG: XV-1154 | 2.18d | 2025-12-24 | 2025-12-27 | A7160 | 87.18d | 0d | SQM-INSTRUMENTACIÓN [21.75 h] | 21.75 | 5728-TK3000 | gl | 1 | 4.4.6 | 3.4.3.12 |  |
| A7180 |  | Instrumento TAG: XV-1155 | 2.18d | 2025-12-24 | 2025-12-27 | A7170 SS | 87.18d | 0d | SQM-INSTRUMENTACIÓN [21.75 h] | 21.75 | 5728-TK3000 | gl | 1 | 4.4.7 | 3.4.3.11 |  |
| A7190 |  | Instrumento TAG: XV-1156 | 2.18d | 2025-12-24 | 2025-12-27 | A7180 SS | 87.18d | 0d | SQM-INSTRUMENTACIÓN [21.75 h] | 21.75 | 5728-TK3000 | gl | 1 | 4.4.8 | 3.4.3.10 |  |
| A7200 |  | Instrumento TAG: XV-1157 | 2.18d | 2025-12-24 | 2025-12-27 | A7190 SS | 87.18d | 0d | SQM-INSTRUMENTACIÓN [21.75 h] | 21.75 | 5728-TK3000 | gl | 1 | 4.4.9 | 3.4.3.9 |  |
| A7210 |  | Instrumento TAG: XV-6201 | 2.18d | 2025-12-24 | 2025-12-27 | A7200 SS | 87.18d | 0d | SQM-INSTRUMENTACIÓN [21.75 h] | 21.75 | 5728-TK3000 | gl | 1 | 4.4.10 | 3.4.3.8 |  |
| A7220 |  | Instrumento TAG: XV-6204 | 2.18d | 2025-12-27 | 2025-12-29 | A7210 | 87.18d | 0d | SQM-INSTRUMENTACIÓN [21.75 h] | 21.75 | 5728-TK3000 | gl | 1 | 4.4.11 | 3.4.3.7 |  |
| A7230 |  | Instrumento TAG: XV-6205 | 2.18d | 2025-12-27 | 2025-12-29 | A7220 SS | 87.18d | 0d | SQM-INSTRUMENTACIÓN [21.75 h] | 21.75 | 5728-TK3000 | gl | 1 | 4.4.12 | 3.4.3.6 |  |
| A7240 |  | Instrumento TAG: XV-6210 | 2.18d | 2025-12-27 | 2025-12-29 | A7230 SS | 87.18d | 0d | SQM-INSTRUMENTACIÓN [21.75 h] | 21.75 | 5728-TK3000 | gl | 1 | 4.4.13 | 3.4.3.5 |  |
| A7250 |  | Instrumento TAG: XV-6211 | 2.18d | 2025-12-27 | 2025-12-29 | A7240 SS | 87.18d | 0d | SQM-INSTRUMENTACIÓN [21.75 h] | 21.75 | 5728-TK3000 | gl | 1 | 4.4.14 | 3.4.3.4 |  |
| A7260 |  | Instrumento TAG: XV-6214 | 2.18d | 2025-12-27 | 2025-12-29 | A7250 SS | 87.18d | 0d | SQM-INSTRUMENTACIÓN [21.75 h] | 21.75 | 5728-TK3000 | gl | 1 | 4.4.15 | 3.4.3.3 |  |
| A7270 |  | Instrumento TAG: XV-6215 | 2.18d | 2025-12-29 | 2025-12-31 | A7260 | 87.18d | 0d | SQM-INSTRUMENTACIÓN [21.75 h] | 21.75 | 5728-TK3000 | gl | 1 | 4.4.16 | 3.4.3.2 |  |
| A7280 |  | Instrumento TAG: XV-6221 | 2.18d | 2025-12-29 | 2025-12-31 | A7270 SS | 87.18d | 0d | SQM-INSTRUMENTACIÓN [21.75 h] | 21.75 | 5728-TK3000 | gl | 1 | 4.4.17 | 3.4.3.1 |  |

| ID | WBS | Activity | Duration | Start | Finish | Predecessors | Total float | Free float | Resources | Cost | Área | Unidad | Cantidad | Ítem LP | Ìtem EDP | Corregir |
| --- | --- | --- | --- | --- | --- | --- | --- | --- | --- | --- | --- | --- | --- | --- | --- | --- |
|  | 4 | **PRUEBAS DE FUNCIONAMIENTO Y PEM INST. TK-3000** |  | 2025-12-27 | 2026-01-02 |  |  |  |  |  |  |  |  |  |  |  |
| A7290 |  | Pruebas de Operación y Puesta en Marcha de Instrumento TAG: PIT-6204 | 2.18d | 2025-12-27 | 2025-12-29 | A7210 | 87.18d | 0d | SQM-INSTRUMENTACIÓN [12 h] | 12 | 5728-TK3000 | gl | 1 | 4.5.1 | 3.4.4.16 |  |
| A7300 |  | Pruebas de Operación y Puesta en Marcha de Instrumento TAG: PIT-6214 | 2.18d | 2025-12-27 | 2025-12-29 | A7290 SS | 87.18d | 0d | SQM-INSTRUMENTACIÓN [12 h] | 12 | 5728-TK3000 | gl | 1 | 4.5.2 | 3.4.4.15 |  |
| A7310 |  | Pruebas de Operación y Puesta en Marcha de Instrumento TAG: UIT-6218 | 2.18d | 2025-12-27 | 2025-12-29 | A7300 SS | 87.18d | 0d | SQM-INSTRUMENTACIÓN [12 h] | 12 | 5728-TK3000 | gl | 1 | 4.5.3 | 3.4.4.14 |  |
| A7320 |  | Pruebas de Operación y Puesta en Marcha de Instrumento TAG: UIT-6220 | 2.18d | 2025-12-27 | 2025-12-29 | A7310 SS | 87.18d | 0d | SQM-INSTRUMENTACIÓN [12 h] | 12 | 5728-TK3000 | gl | 1 | 4.5.4 | 3.4.4.13 |  |
| A7330 |  | Pruebas de Operación y Puesta en Marcha de Instrumento TAG: XV-1153 | 2.18d | 2025-12-27 | 2025-12-29 | A7320 SS | 87.18d | 0d | SQM-INSTRUMENTACIÓN [12 h] | 12 | 5728-TK3000 | gl | 1 | 4.5.5 | 3.4.4.12 |  |
| A7340 |  | Pruebas de Operación y Puesta en Marcha de Instrumento TAG: XV-1154 | 2.18d | 2025-12-29 | 2025-12-31 | A7260, A7330 | 87.18d | 0d | SQM-INSTRUMENTACIÓN [12 h] | 12 | 5728-TK3000 | gl | 1 | 4.5.6 | 3.4.4.11 |  |
| A7350 |  | Pruebas de Operación y Puesta en Marcha de Instrumento TAG: XV-1155 | 2.18d | 2025-12-29 | 2025-12-31 | A7340 SS | 87.18d | 0d | SQM-INSTRUMENTACIÓN [12 h] | 12 | 5728-TK3000 | gl | 1 | 4.5.7 | 3.4.4.10 |  |
| A7360 |  | Pruebas de Operación y Puesta en Marcha de Instrumento TAG: XV-1156 | 2.18d | 2025-12-29 | 2025-12-31 | A7350 SS | 87.18d | 0d | SQM-INSTRUMENTACIÓN [12 h] | 12 | 5728-TK3000 | gl | 1 | 4.5.8 | 3.4.4.9 |  |
| A7370 |  | Pruebas de Operación y Puesta en Marcha de Instrumento TAG: XV-1157 | 2.18d | 2025-12-29 | 2025-12-31 | A7360 SS | 87.18d | 0d | SQM-INSTRUMENTACIÓN [12 h] | 12 | 5728-TK3000 | gl | 1 | 4.5.9 | 3.4.4.8 |  |
| A7380 |  | Pruebas de Operación y Puesta en Marcha de Instrumento TAG: XV-6201 | 2.18d | 2025-12-29 | 2025-12-31 | A7370 SS | 87.18d | 0d | SQM-INSTRUMENTACIÓN [12 h] | 12 | 5728-TK3000 | gl | 1 | 4.5.10 | 3.4.4.7 |  |
| A7390 |  | Pruebas de Operación y Puesta en Marcha de Instrumento TAG: XV-6204 | 2.18d | 2025-12-31 | 2026-01-02 | A7280, A7380, A7030 | 87.18d | 0d | SQM-INSTRUMENTACIÓN [12 h] | 12 | 5728-TK3000 | gl | 1 | 4.5.11 | 3.4.4.6 |  |
| A7400 |  | Pruebas de Operación y Puesta en Marcha de Instrumento TAG: XV-6205 | 2.18d | 2025-12-31 | 2026-01-02 | A7390 SS | 87.18d | 0d | SQM-INSTRUMENTACIÓN [12 h] | 12 | 5728-TK3000 | gl | 1 | 4.5.12 | 3.4.4.5 |  |
| A7410 |  | Pruebas de Operación y Puesta en Marcha de Instrumento TAG: XV-6210 | 2.18d | 2025-12-31 | 2026-01-02 | A7400 SS | 87.18d | 0d | SQM-INSTRUMENTACIÓN [12 h] | 12 | 5728-TK3000 | gl | 1 | 4.5.13 | 3.4.4.4 |  |
| A7420 |  | Pruebas de Operación y Puesta en Marcha de Instrumento TAG: XV-6211 | 2.18d | 2025-12-31 | 2026-01-02 | A7410 SS | 87.18d | 0d | SQM-INSTRUMENTACIÓN [12 h] | 12 | 5728-TK3000 | gl | 1 | 4.5.14 | 3.4.4.3 |  |
| A7430 |  | Pruebas de Operación y Puesta en Marcha de Instrumento TAG: XV-6214 | 2.18d | 2025-12-31 | 2026-01-02 | A7420 SS | 87.18d | 0d | SQM-INSTRUMENTACIÓN [12 h] | 12 | 5728-TK3000 | gl | 1 | 4.5.15 | 3.4.4.2 |  |
| A7440 |  | Pruebas de Operación y Puesta en Marcha de Instrumento TAG: XV-6215 | 2.18d | 2025-12-31 | 2026-01-02 | A7430 SS, A6810 FF | 87.18d | 33.73d | SQM-INSTRUMENTACIÓN [12 h] | 12 | 5728-TK3000 | gl | 1 | 4.5.16 | 3.4.4.1 |  |
|  | 4 | **ÁREA 5827 - SECTOR ESTANQUES L5 LiOH (TK-6100)** |  | 2025-11-30 | 2026-02-05 |  |  |  |  |  |  |  |  |  |  |  |
|  | 1 | **OBRAS PIPING SECTOR ESTANQUES L5 LiOH (TK-6100)** |  | 2025-12-15 | 2026-02-05 |  |  |  |  |  |  |  |  |  |  |  |
|  | 1 | **FABRICACIÓN Y MONTAJE DE CAÑERÍAS ÁREA ESTANQUES L5 LiOH (TK-6100)** |  | 2025-12-15 | 2026-01-29 |  |  |  |  |  |  |  |  |  |  |  |
| A7450 |  | Ø 6" - Cañería Acero Inoxidable - Fabricación | 21.82d | 2025-12-15 | 2026-01-05 | A6610, A1620 SS | 53.45d | 0d | SQM-PIPING [2457 h] | 2,457 | 5827-L5 LiOH | un | 190 | 2.1.30 | 6.1.1.3 |  |
| A7500 |  | Ø 6" - Cañería Acero Inoxidable - Montaje | 43.64d | 2025-12-17 | 2026-01-29 | A7450 SS+2.18d | 60d | 0d | SQM-PIPING [1169.67 h] | 1,169.67 | 5827-L5 LiOH | m | 15 | 2.1.1 | 6.1.1.8 | R FF |
| A7520 |  | Ø 3" - Cañería Acero Inoxidable - Montaje | 30.55d | 2025-12-21 | 2026-01-21 | A7470 FF+2.18d | 68.73d | 15.27d | SQM-PIPING [579.43 h] | 579.43 | 5827-L5 LiOH | m | 172 | 2.1.3 | 6.1.1.29 | R FF |
| A7530 |  | Ø 2" - Cañería Acero Inoxidable - Montaje | 15.27d | 2025-12-21 | 2026-01-05 | A7480 FF | 58.91d | 5.45d | SQM-PIPING [75.38 h] | 75.38 | 5827-L5 LiOH | m | 27 | 2.1.4 | 6.1.1.34 |  |
| A7470 |  | Ø 3" - Cañería Acero Inoxidable - Fabricación | 27.27d | 2025-12-22 | 2026-01-18 | A7450 SS+5.45d, A1630, A6780 | 68.73d | 0d | SQM-PIPING [1635.2 h] | 1,635.2 | 5827-L5 LiOH | un | 292 | 2.1.32 | 6.1.1.18 |  |
| A7460 |  | Ø 4" - Cañería Acero Inoxidable - Fabricación | 10.91d | 2025-12-25 | 2026-01-05 | A7450 FF | 58.91d | 0d | SQM-PIPING [425.6 h] | 425.6 | 5827-L5 LiOH | un | 56 | 2.1.31 | 6.1.1.11 |  |
| A7540 |  | Ø 3" - Cañería CPVC, SCH 80 - Montaje | 15.27d | 2025-12-30 | 2026-01-14 | A7490 FF, A6750 | 68.73d | 0d | SQM-PIPING [138.6 h] | 138.6 | 5827-L5 LiOH | m | 44 | 2.1.5 | 6.1.1.28 |  |
| A7480 |  | Ø 2" - Cañería Acero Inoxidable - Fabricación | 0d | 2026-01-05 | 2026-01-05 | A7460 FF | 58.91d | 0d | SQM-PIPING |  | 5827-L5 LiOH | un | 0 | 2.1.33 | 6.1.1.31 |  |
| A7490 |  | Ø 3" - Cañería CPVC, SCH 80 - Fabricación | 8.73d | 2026-01-05 | 2026-01-14 | A7480 SS | 68.73d | 0d | SQM-PIPING [407 h] | 407 | 5827-L5 LiOH | un | 148 | 2.1.34 | 6.1.1.19 |  |
| A7510 |  | Ø 4" - Cañería Acero Inoxidable - Montaje | 10.91d | 2026-01-18 | 2026-01-29 | A7500 FF, A7460 FF | 60d | 0d | SQM-PIPING [32.83 h] | 32.83 | 5827-L5 LiOH | m | 84 | 2.1.2 | 6.1.1.16 |  |

| ID | WBS | Activity | Duration | Start | Finish | Predecessors | Total float | Free float | Resources | Cost | Área | Unidad | Cantidad | Ítem LP | Ìtem EDP | Corregir |
| --- | --- | --- | --- | --- | --- | --- | --- | --- | --- | --- | --- | --- | --- | --- | --- | --- |
|  | 2 | **MONTAJE DE VÁLVULAS Y FITTING SECTOR ESTANQUES L5 LiOH (TK-6100)** |  | 2025-12-15 | 2026-02-05 |  |  |  |  |  |  |  |  |  |  |  |
| A7550 |  | Fitting Sector L5 LiOH - TK-6100 (Global) | 27.27d | 2025-12-15 | 2026-01-11 | A7450 SS, A7530 FF | 53.45d | 0d | SQM-PIPING [3535.19 h] | 3,535.19 | 5827-L5 LiOH | un | 431 | 99.10 | 99.10 | R FF |
| A7560 |  | Válvulas Sector L5 LiOH - TK-6100 (Global) | 25.09d | 2026-01-11 | 2026-02-05 | A7450 SS, A7530 FF, A7550 | 53.45d | 0d | SQM-PIPING [290.25 h] | 290.25 | 5827-L5 LiOH | un | 28 | 99.19 | 99.19 | R FF |
|  | 3 | **TIE IN LÍNEAS ASOCIADAS A ESTANQUES L5 LiOH (TK-6100)** |  | 2026-01-14 | 2026-02-05 |  |  |  |  |  |  |  |  |  |  |  |
| A7610 |  | TIE-IN N° 6456 - 5827-EST-6050 Ac. Inoc. a Línea Proyectada 80-DR-5827-P2-6625 | 2.18d | 2026-01-14 | 2026-01-16 | A7540 | 68.73d | 0d | SQM-PIPING [46.67 h] | 46.67 | 5827-L5 LiOH | un | 1 | 2.3.5 | 6.1.3.6 |  |
| A7620 |  | TIE-IN N° 6457 - 5827-EST-6050 Ac. Inox. a Línea Proyectada 80-DR-5827-P2-6622 | 2.18d | 2026-01-14 | 2026-01-16 | A7610 SS | 68.73d | 0d | SQM-PIPING [46.67 h] | 46.67 | 5827-L5 LiOH | un | 1 | 2.3.6 | 6.1.3.5 |  |
| A7630 |  | TIE-IN N° 6460 -5827-EST-7050 Ac. Inox. a Línea Proyectada 80-DR-5827-P2-6627 | 2.18d | 2026-01-16 | 2026-01-18 | A7620 | 68.73d | 0d | SQM-PIPING [46.67 h] | 46.67 | 5827-L5 LiOH | un | 1 | 2.3.7 | 6.1.3.2 |  |
| A7640 |  | TIE-IN N° 6461 - 5827-EST-7050 Ac. Inox. a Línea Proyectada 80-DR-5827-P2-6624 | 2.18d | 2026-01-16 | 2026-01-18 | A7630 SS | 68.73d | 15.27d | SQM-PIPING [46.67 h] | 46.67 | 5827-L5 LiOH | un | 1 | 2.3.8 | 6.1.3.1 |  |
| A7570 |  | TIE-IN N° 6454 - 5827-EST-6100 Ac. Inox. a Línea Proyectada 100-LC-5827-I1-6615-A | 2.18d | 2026-02-03 | 2026-02-05 | A7530 FF, A7560 FF | 53.45d | 0d | SQM-PIPING [50.67 h] | 50.67 | 5827-L5 LiOH | un | 1 | 2.3.1 | 6.1.3.8 |  |
| A7580 |  | TIE-IN N° 6455 - 5827-EST-6100 Ac. Inox. a Línea Proyectada 100-LC-5827-I1-6619-A | 2.18d | 2026-02-03 | 2026-02-05 | A7570 SS | 53.45d | 0d | SQM-PIPING [50.67 h] | 50.67 | 5827-L5 LiOH | un | 1 | 2.3.2 | 6.1.3.7 |  |
| A7590 |  | TIE-IN N° 6458 - 5827-EST-7100 Ac Inox. a Línea Proyectada 80-LC-5827-I1-6623-A | 2.18d | 2026-02-03 | 2026-02-05 | A7580 FF | 53.45d | 0d | SQM-PIPING [46.67 h] | 46.67 | 5827-L5 LiOH | un | 1 | 2.3.3 | 6.1.3.4 |  |
| A7600 |  | TIE-IN N° 6459 - 5827-EST-7100 Ac. Inox. a Línea Proyectada 80-LC-5827-I1-6626-A | 2.18d | 2026-02-03 | 2026-02-05 | A7590 FF, A7640, A7520 FF | 53.45d | 0d | SQM-PIPING [46.67 h] | 46.67 | 5827-L5 LiOH | un | 1 | 2.3.4 | 6.1.3.3 |  |
|  | 4 | **AISLACIÓN LÍNEAS L5 LiOH (TK-6100)** |  | 2026-01-02 | 2026-02-05 |  |  |  |  |  |  |  |  |  |  |  |
| A7650 |  | Ø 6" - Aislación de Lana Mineral de 1,5" de espesor | 27.27d | 2026-01-02 | 2026-01-29 | A7500 FF | 60d | 0d | SQM-PIPING [1846.38 h] | 1,846.38 | 5827-L5 LiOH | un | 15 | 2.1.6 | 6.1.1.9 | R FF |
| A7670 |  | Ø 3" - Aislación de Lana Mineral de 1,5" de espesor | 16.36d | 2026-01-20 | 2026-02-05 | A7660 FF, A7530 FF, A7640 FF, A7520 FF, A7600 FF | 53.45d | 0d | SQM-PIPING [915.2 h] | 915.2 | 5827-L5 LiOH | un | 172 | 2.1.8 | 6.1.1.30 |  |
| A7660 |  | Ø 4" - Aislación de Lana Mineral de 1,5" de espesor | 3.27d | 2026-01-26 | 2026-01-29 | A7650 FF, A7510 FF | 60d | 6.55d | SQM-PIPING [67.2 h] | 67.2 | 5827-L5 LiOH | un | 84 | 2.1.7 | 6.1.1.17 |  |
|  | 2 | **OBRAS DE INSTRUMENTACIÓN SECTOR ESTANQUES L5 LiOH (TK-6100)** |  | 2025-11-30 | 2026-01-18 |  |  |  |  |  |  |  |  |  |  |  |
|  | 1 | **MONTAJE DE CANALIZACIÓN Y FERRETERÍA INST. ESTANQUES L5 LiOH (TK-6100)** |  | 2025-11-30 | 2025-12-03 |  |  |  |  |  |  |  |  |  |  |  |
| A7680 |  | Canalización y Copla de Conduit de Acero Galvanizado 1"Ø, Conduit ANSI C80.1 | 1.09d | 2025-11-30 | 2025-12-01 | A6910 | 70.82d | 0d | SQM-INSTRUMENTACIÓN [1.26 h] | 1.26 | 5827-L5 LiOH | m | 1 | 4.2.1 | 6.2.1.2 |  |
| A7690 |  | Canalización y Copla de Conduit Flexible Metálico con Cubierta PVC 1" Ø Trabajo Pesado | 1.09d | 2025-12-02 | 2025-12-03 | A7680 | 70.82d | 0d | SQM-INSTRUMENTACIÓN [1.26 h] | 1.26 | 5827-L5 LiOH | m | 1 | 4.2.2 | 6.2.1.1 |  |
|  | 2 | **TENDIDO Y CONEXIONADO DE CABLES INSTRUMENTACIÓN ESTANQUES L5 LiOH (TK-6100)** |  | 2025-12-03 | 2025-12-23 |  |  |  |  |  |  |  |  |  |  |  |
| A7700 |  | Cable Multiconductor de Cobre con Aislación de XLPE, 1x3C #12 AWG, Clase 1 kV | 6.55d | 2025-12-03 | 2025-12-09 | A7690 | 70.82d | 0d | SQM-INSTRUMENTACIÓN [127.87 h] | 127.87 | 5827-L5 LiOH | m | 350 | 4.3.1 | 6.2.2.1 |  |
| A7710 |  | Cable de Instrumentación (Señales Análogas), 1x1 par #16 AWG Apantallado | 3.27d | 2025-12-09 | 2025-12-12 | A7700 | 70.82d | 0d | SQM-INSTRUMENTACIÓN [192.4 h] | 192.4 | 5827-L5 LiOH | m | 1500 | 4.3.2 | 6.2.2.3 |  |
| A7720 |  | Cable Multiconductor de Cobre Blando 1x3C #12 AWG, Clase 0,3 | 5.45d | 2025-12-12 | 2025-12-18 | A7710 | 70.82d | 0d | SQM-INSTRUMENTACIÓN [548 h] | 548 | 5827-L5 LiOH | m | 650 | 4.3.3 | 6.2.2.4 |  |
| A7730 |  | Cable Multiconductor de Cobre Blando 1x5C #12 AWG, Clase 0,3 | 5.45d | 2025-12-18 | 2025-12-23 | A7720 | 70.82d | 0d | SQM-INSTRUMENTACIÓN [548 h] | 548 | 5827-L5 LiOH | m | 1500 | 4.3.4 | 6.2.2.2 |  |

| ID | WBS | Activity | Duration | Start | Finish | Predecessors | Total float | Free float | Resources | Cost | Área | Unidad | Cantidad | Ítem LP | Ìtem EDP |
| --- | --- | --- | --- | --- | --- | --- | --- | --- | --- | --- | --- | --- | --- | --- | --- |
|  | 3 | **MONTAJE Y CONEXIONADO DE EQUIPOS E INSTRUMENTOS ESTANQUES L5 LiOH (TK-6100)** |  | 2025-12-23 | 2026-01-08 |  |  |  |  |  |  |  |  |  |  |
| A7740 |  | Módulos de Entradas y Salidas Análogas/Digitales en TAG: 5804-PNC-6402. | 8.73d | 2025-12-23 | 2026-01-01 | A7730 | 70.82d | 0d | SQM-INSTRUMENTACIÓN [620.5 h] | 620.5 | 5827-L5 LiOH | un | 5 | 4.4.1 | 6.2.3.1 |
| A7750 |  | Módulos de Entradas y Salidas Análogas/Digitales en TAG: 5804-PNC-7502. | 8.73d | 2025-12-23 | 2026-01-01 | A7740 SS | 70.82d | 0d | SQM-INSTRUMENTACIÓN [620.5 h] | 620.5 | 5827-L5 LiOH | un | 5 | 4.4.2 | 6.2.3.2 |
| A7760 |  | Brazo Prealambrado para Módulos de Entradas y Ealidas Análogas/Digitales en TAG: 5804-PNC-6402. | 8.73d | 2025-12-23 | 2026-01-01 | A7750 SS | 70.82d | 0d | SQM-INSTRUMENTACIÓN [620.5 h] | 620.5 | 5827-L5 LiOH | un | 5 | 4.4.3 | 6.2.3.3 |
| A7770 |  | Brazo Prealambrado para Módulos de Entradas y Ealidas Análogas/Digitales en TAG: 5804-PNC-7502. | 8.73d | 2025-12-23 | 2026-01-01 | A7760 SS | 70.82d | 0d | SQM-INSTRUMENTACIÓN [620.5 h] | 620.5 | 5827-L5 LiOH | un | 5 | 4.4.4 | 6.2.3.4 |
| A7780 |  | Instrumento TAG: FIT-6230 | 1.09d | 2025-12-31 | 2026-01-01 | A7770 FF | 80.64d | 0d | SQM-INSTRUMENTACIÓN [21.75 h] | 21.75 | 5827-L5 LiOH | gl | 1 | 4.4.5 | 6.2.3.30 |
| A7790 |  | Instrumento TAG: FIT-6240 | 1.09d | 2025-12-31 | 2026-01-01 | A7780 SS | 80.64d | 0d | SQM-INSTRUMENTACIÓN [21.75 h] | 21.75 | 5827-L5 LiOH | gl | 1 | 4.4.6 | 6.2.3.29 |
| A7800 |  | Instrumento TAG: FIT-6268 | 1.09d | 2025-12-31 | 2026-01-01 | A7790 SS | 80.64d | 0d | SQM-INSTRUMENTACIÓN [21.75 h] | 21.75 | 5827-L5 LiOH | gl | 1 | 4.4.7 | 6.2.3.28 |
| A7810 |  | Instrumento TAG: FIT-6670 | 1.09d | 2025-12-31 | 2026-01-01 | A7800 SS | 80.64d | 0d | SQM-INSTRUMENTACIÓN [21.75 h] | 21.75 | 5827-L5 LiOH | gl | 1 | 4.4.8 | 6.2.3.27 |
| A7820 |  | Instrumento TAG: FV-6264 | 1.09d | 2025-12-31 | 2026-01-01 | A7810 SS | 80.64d | 0d | SQM-INSTRUMENTACIÓN [21.75 h] | 21.75 | 5827-L5 LiOH | gl | 1 | 4.4.9 | 6.2.3.26 |
| A7830 |  | Instrumento TAG: FV-6265 | 1.09d | 2025-12-31 | 2026-01-01 | A7820 SS | 80.64d | 0d | SQM-INSTRUMENTACIÓN [21.75 h] | 21.75 | 5827-L5 LiOH | gl | 1 | 4.4.10 | 6.2.3.24 |
| A7840 |  | Instrumento TAG: FV-6264 | 1.09d | 2025-12-31 | 2026-01-01 | A7830 SS | 80.64d | 0d | SQM-INSTRUMENTACIÓN [21.75 h] | 21.75 | 5827-L5 LiOH | gl | 1 | 4.4.11 | 6.2.3.25 |
| A7850 |  | Instrumento TAG: FV-6265 | 1.09d | 2025-12-31 | 2026-01-01 | A7840 SS | 80.64d | 0d | SQM-INSTRUMENTACIÓN [21.75 h] | 21.75 | 5827-L5 LiOH | gl | 1 | 4.4.12 | 6.2.3.23 |
| A7860 |  | Instrumento TAG: XV-6251 | 1.09d | 2026-01-01 | 2026-01-02 | A7850 | 80.64d | 0d | SQM-INSTRUMENTACIÓN [21.75 h] | 21.75 | 5827-L5 LiOH | gl | 1 | 4.4.13 | 6.2.3.9 |
| A7870 |  | Instrumento TAG: XV-6229 | 1.09d | 2026-01-01 | 2026-01-02 | A7860 SS | 80.64d | 0d | SQM-INSTRUMENTACIÓN [21.75 h] | 21.75 | 5827-L5 LiOH | gl | 1 | 4.4.14 | 6.2.3.21 |
| A7880 |  | Instrumento TAG: XV-6232 | 1.09d | 2026-01-01 | 2026-01-02 | A7870 SS | 80.64d | 0d | SQM-INSTRUMENTACIÓN [21.75 h] | 21.75 | 5827-L5 LiOH | gl | 1 | 4.4.15 | 6.2.3.19 |
| A7890 |  | Instrumento TAG: XV-6245 | 1.09d | 2026-01-01 | 2026-01-02 | A7880 SS | 80.64d | 0d | SQM-INSTRUMENTACIÓN [21.75 h] | 21.75 | 5827-L5 LiOH | gl | 1 | 4.4.16 | 6.2.3.15 |
| A7900 |  | Instrumento TAG: XV-6246 | 1.09d | 2026-01-02 | 2026-01-03 | A7890 | 80.64d | 0d | SQM-INSTRUMENTACIÓN [21.75 h] | 21.75 | 5827-L5 LiOH | gl | 1 | 4.4.17 | 6.2.3.14 |
| A7910 |  | Instrumento TAG: XV-6247 | 1.09d | 2026-01-02 | 2026-01-03 | A7900 SS | 80.64d | 0d | SQM-INSTRUMENTACIÓN [21.75 h] | 21.75 | 5827-L5 LiOH | gl | 1 | 4.4.18 | 6.2.3.13 |
| A7920 |  | Instrumento TAG: XV-6252 | 1.09d | 2026-01-02 | 2026-01-03 | A7910 SS | 80.64d | 0d | SQM-INSTRUMENTACIÓN [21.75 h] | 21.75 | 5827-L5 LiOH | gl | 1 | 4.4.19 | 6.2.3.8 |
| A7930 |  | Instrumento TAG: XV-6253 | 1.09d | 2026-01-02 | 2026-01-03 | A7920 SS | 80.64d | 0d | SQM-INSTRUMENTACIÓN [21.75 h] | 21.75 | 5827-L5 LiOH | gl | 1 | 4.4.20 | 6.2.3.7 |
| A7940 |  | Instrumento TAG: XV-6258 | 1.09d | 2026-01-03 | 2026-01-04 | A7930 | 80.64d | 0d | SQM-INSTRUMENTACIÓN [21.75 h] | 21.75 | 5827-L5 LiOH | gl | 1 | 4.4.21 | 6.2.3.5 |
| A7950 |  | Instrumento TAG: XV-6249 | 1.09d | 2026-01-03 | 2026-01-04 | A7940 SS | 80.64d | 0d | SQM-INSTRUMENTACIÓN [21.75 h] | 21.75 | 5827-L5 LiOH | gl | 1 | 4.4.22 | 6.2.3.12 |
| A7960 |  | Instrumento TAG: XV-6229 | 1.09d | 2026-01-03 | 2026-01-04 | A7950 SS | 80.64d | 0d | SQM-INSTRUMENTACIÓN [21.75 h] | 21.75 | 5827-L5 LiOH | gl | 1 | 4.4.23 | 6.2.3.22 |
| A7970 |  | Instrumento TAG: XV-6230 | 1.09d | 2026-01-03 | 2026-01-04 | A7960 SS | 80.64d | 0d | SQM-INSTRUMENTACIÓN [21.75 h] | 21.75 | 5827-L5 LiOH | gl | 1 | 4.4.24 | 6.2.3.20 |
| A7980 |  | Instrumento TAG: XV-6240 | 1.09d | 2026-01-04 | 2026-01-05 | A7970 | 80.64d | 0d | SQM-INSTRUMENTACIÓN [21.75 h] | 21.75 | 5827-L5 LiOH | gl | 1 | 4.4.25 | 6.2.3.18 |
| A7990 |  | Instrumento TAG: XV-6242 | 1.09d | 2026-01-04 | 2026-01-05 | A7980 SS | 80.64d | 0d | SQM-INSTRUMENTACIÓN [21.75 h] | 21.75 | 5827-L5 LiOH | gl | 1 | 4.4.26 | 6.2.3.17 |
| A8000 |  | Instrumento TAG: XV-6245 | 1.09d | 2026-01-04 | 2026-01-05 | A7990 SS | 80.64d | 0d | SQM-INSTRUMENTACIÓN [21.75 h] | 21.75 | 5827-L5 LiOH | gl | 1 | 4.4.27 | 6.2.3.16 |
| A8010 |  | Instrumento TAG: XV-6250 | 1.09d | 2026-01-04 | 2026-01-05 | A8000 SS | 80.64d | 0d | SQM-INSTRUMENTACIÓN [21.75 h] | 21.75 | 5827-L5 LiOH | gl | 1 | 4.4.28 | 6.2.3.11 |
| A8020 |  | Instrumento TAG: XV-6251 | 1.09d | 2026-01-05 | 2026-01-06 | A8010 | 80.64d | 0d | SQM-INSTRUMENTACIÓN [21.75 h] | 21.75 | 5827-L5 LiOH | gl | 1 | 4.4.29 | 6.2.3.10 |
| A8030 |  | Instrumento TAG: XV-6258 | 1.09d | 2026-01-07 | 2026-01-08 | A8020 | 80.64d | 9.82d | SQM-INSTRUMENTACIÓN [21.75 h] | 21.75 | 5827-L5 LiOH | gl | 1 | 4.4.30 | 6.2.3.6 |

| ID | WBS | Activity | Duration | Start | Finish | Predecessors | Total float | Free float | Resources | Cost | Área | Unidad | Cantidad | Ítem LP | Ìtem EDP |
| --- | --- | --- | --- | --- | --- | --- | --- | --- | --- | --- | --- | --- | --- | --- | --- |
|  | 4 | **PRUEBAS DE FUNCIONAMIENTO Y PEM INST. ESTANQUES L5 LiOH (TK-6100)** |  | 2026-01-01 | 2026-01-18 |  |  |  |  |  |  |  |  |  |  |
| A8040 |  | Pruebas de Operación y PEM Módulos de Entradas y Salidas Análogas/Digitales en TAG: 5804-PNC-6402 | 3.27d | 2026-01-01 | 2026-01-04 | A7770 | 70.82d | 0d | SQM-INSTRUMENTACIÓN [60 h] | 60 | 5827-L5 LiOH | un | 5 | 4.5.1 | 6.2.4.1 |
| A8050 |  | Pruebas de Operación y PEM de Entradas y Salidas Análogas/Digitales en TAG: 5801-PNC-7502 | 3.27d | 2026-01-04 | 2026-01-08 | A8040 | 70.82d | 0d | SQM-INSTRUMENTACIÓN [60 h] | 60 | 5827-L5 LiOH | un | 5 | 4.5.2 | 6.2.4.28 |
| A8060 |  | Pruebas de Operación y PEM de Brazo Prealambrado Módulos de Entradas y Salidas Análogas/Digitales en TAG: 5804-PNC-6402 | 3.27d | 2026-01-08 | 2026-01-11 | A8050 | 70.82d | 0d | SQM-INSTRUMENTACIÓN [60 h] | 60 | 5827-L5 LiOH | un | 5 | 4.5.3 | 6.2.4.29 |
| A8070 |  | Pruebas de Operación y PEM de Brazo Prealambrado Módulos de Entradas y Salidas Análogas/Digitales en TAG: 5801-PNC-7502 | 3.27d | 2026-01-11 | 2026-01-14 | A8060 | 70.82d | 0d | SQM-INSTRUMENTACIÓN [60 h] | 60 | 5827-L5 LiOH | un | 5 | 4.5.4 | 6.2.4.30 |
| A8080 |  | Pruebas de Operación y Puesta en Marcha de Instrumento TAG: FIT-6230 | 1.09d | 2026-01-11 | 2026-01-12 | A8070 SS | 70.82d | 0d | SQM-INSTRUMENTACIÓN [12 h] | 12 | 5827-L5 LiOH | gl | 1 | 4.5.5 | 6.2.4.27 |
| A8090 |  | Pruebas de Operación y Puesta en Marcha de Instrumento TAG: FIT-6240 | 1.09d | 2026-01-11 | 2026-01-12 | A8080 SS | 70.82d | 0d | SQM-INSTRUMENTACIÓN [12 h] | 12 | 5827-L5 LiOH | gl | 1 | 4.5.6 | 6.2.4.26 |
| A8100 |  | Pruebas de Operación y Puesta en Marcha de Instrumento TAG: FIT-6268 | 1.09d | 2026-01-11 | 2026-01-12 | A8090 SS | 70.82d | 0d | SQM-INSTRUMENTACIÓN [12 h] | 12 | 5827-L5 LiOH | gl | 1 | 4.5.7 | 6.2.4.25 |
| A8110 |  | Pruebas de Operación y Puesta en Marcha de Instrumento TAG: FIT-6670 | 1.09d | 2026-01-12 | 2026-01-13 | A8100 | 70.82d | 0d | SQM-INSTRUMENTACIÓN [12 h] | 12 | 5827-L5 LiOH | gl | 1 | 4.5.8 | 6.2.4.24 |
| A8120 |  | Pruebas de Operación y Puesta en Marcha de Instrumento TAG: FV-6264 | 1.09d | 2026-01-12 | 2026-01-13 | A8110 SS | 70.82d | 0d | SQM-INSTRUMENTACIÓN [12 h] | 12 | 5827-L5 LiOH | gl | 1 | 4.5.9 | 6.2.4.23 |
| A8130 |  | Pruebas de Operación y Puesta en Marcha de Instrumento TAG: FV-6265 | 1.09d | 2026-01-12 | 2026-01-13 | A8120 SS | 70.82d | 0d | SQM-INSTRUMENTACIÓN [12 h] | 12 | 5827-L5 LiOH | gl | 1 | 4.5.10 | 6.2.4.21 |
| A8140 |  | Pruebas de Operación y Puesta en Marcha de Instrumento TAG: FV-6264 | 1.09d | 2026-01-12 | 2026-01-13 | A8130 SS | 70.82d | 0d | SQM-INSTRUMENTACIÓN [12 h] | 12 | 5827-L5 LiOH | gl | 1 | 4.5.11 | 6.2.4.22 |
| A8150 |  | Pruebas de Operación y Puesta en Marcha de Instrumento TAG: FV-6265 | 1.09d | 2026-01-13 | 2026-01-14 | A8140 | 70.82d | 0d | SQM-INSTRUMENTACIÓN [12 h] | 12 | 5827-L5 LiOH | gl | 1 | 4.5.12 | 6.2.4.20 |
| A8160 |  | Pruebas de Operación y Puesta en Marcha de Instrumento TAG: XV-6251 | 1.09d | 2026-01-13 | 2026-01-14 | A8150 SS | 70.82d | 0d | SQM-INSTRUMENTACIÓN [12 h] | 12 | 5827-L5 LiOH | gl | 1 | 4.5.13 | 6.2.4.7 |
| A8170 |  | Pruebas de Operación y Puesta en Marcha de Instrumento TAG: XV-6229 | 1.09d | 2026-01-13 | 2026-01-14 | A8160 SS | 70.82d | 0d | SQM-INSTRUMENTACIÓN [12 h] | 12 | 5827-L5 LiOH | gl | 1 | 4.5.14 | 6.2.4.19 |
| A8180 |  | Pruebas de Operación y Puesta en Marcha de Instrumento TAG: XV-6232 | 1.09d | 2026-01-13 | 2026-01-14 | A8170 SS | 70.82d | 0d | SQM-INSTRUMENTACIÓN [12 h] | 12 | 5827-L5 LiOH | gl | 1 | 4.5.15 | 6.2.4.16 |
| A8190 |  | Pruebas de Operación y Puesta en Marcha de Instrumento TAG: XV-6245 | 1.09d | 2026-01-14 | 2026-01-15 | A8180 | 70.82d | 0d | SQM-INSTRUMENTACIÓN [12 h] | 12 | 5827-L5 LiOH | gl | 1 | 4.5.16 | 6.2.4.13 |
| A8200 |  | Pruebas de Operación y Puesta en Marcha de Instrumento TAG: XV-6246 | 1.09d | 2026-01-14 | 2026-01-15 | A8190 SS | 70.82d | 0d | SQM-INSTRUMENTACIÓN [12 h] | 12 | 5827-L5 LiOH | gl | 1 | 4.5.17 | 6.2.4.11 |
| A8210 |  | Pruebas de Operación y Puesta en Marcha de Instrumento TAG: XV-6247 | 1.09d | 2026-01-14 | 2026-01-15 | A8200 SS | 70.82d | 0d | SQM-INSTRUMENTACIÓN [12 h] | 12 | 5827-L5 LiOH | gl | 1 | 4.5.18 | 6.2.4.10 |
| A8220 |  | Pruebas de Operación y Puesta en Marcha de Instrumento TAG: XV-6252 | 1.09d | 2026-01-14 | 2026-01-15 | A8210 SS | 70.82d | 0d | SQM-INSTRUMENTACIÓN [12 h] | 12 | 5827-L5 LiOH | gl | 1 | 4.5.19 | 6.2.4.5 |
| A8230 |  | Pruebas de Operación y Puesta en Marcha de Instrumento TAG: XV-6253 | 1.09d | 2026-01-15 | 2026-01-16 | A8220 | 70.82d | 0d | SQM-INSTRUMENTACIÓN [12 h] | 12 | 5827-L5 LiOH | gl | 1 | 4.5.20 | 6.2.4.4 |
| A8240 |  | Pruebas de Operación y Puesta en Marcha de Instrumento TAG: XV-6258 | 1.09d | 2026-01-15 | 2026-01-16 | A8230 SS | 70.82d | 0d | SQM-INSTRUMENTACIÓN [12 h] | 12 | 5827-L5 LiOH | gl | 1 | 4.5.21 | 6.2.4.3 |
| A8250 |  | Pruebas de Operación y Puesta en Marcha de Instrumento TAG: XV-6249 | 1.09d | 2026-01-15 | 2026-01-16 | A8240 SS | 70.82d | 0d | SQM-INSTRUMENTACIÓN [12 h] | 12 | 5827-L5 LiOH | gl | 1 | 4.5.22 | 6.2.4.9 |
| A8260 |  | Pruebas de Operación y Puesta en Marcha de Instrumento TAG: XV-6229 | 1.09d | 2026-01-15 | 2026-01-16 | A8250 SS | 70.82d | 0d | SQM-INSTRUMENTACIÓN [12 h] | 12 | 5827-L5 LiOH | gl | 1 | 4.5.23 | 6.2.4.18 |
| A8270 |  | Pruebas de Operación y Puesta en Marcha de Instrumento TAG: XV-6230 | 1.09d | 2026-01-16 | 2026-01-17 | A8260 | 70.82d | 0d | SQM-INSTRUMENTACIÓN [12 h] | 12 | 5827-L5 LiOH | gl | 1 | 4.5.24 | 6.2.4.17 |
| A8280 |  | Pruebas de Operación y Puesta en Marcha de Instrumento TAG: XV-6240 | 1.09d | 2026-01-16 | 2026-01-17 | A8270 SS | 70.82d | 0d | SQM-INSTRUMENTACIÓN [12 h] | 12 | 5827-L5 LiOH | gl | 1 | 4.5.25 | 6.2.4.15 |
| A8290 |  | Pruebas de Operación y Puesta en Marcha de Instrumento TAG: XV-6242 | 1.09d | 2026-01-16 | 2026-01-17 | A8280 SS | 70.82d | 0d | SQM-INSTRUMENTACIÓN [12 h] | 12 | 5827-L5 LiOH | gl | 1 | 4.5.26 | 6.2.4.14 |
| A8300 |  | Pruebas de Operación y Puesta en Marcha de Instrumento TAG: XV-6245 | 1.09d | 2026-01-16 | 2026-01-17 | A8290 SS | 70.82d | 0d | SQM-INSTRUMENTACIÓN [12 h] | 12 | 5827-L5 LiOH | gl | 1 | 4.5.27 | 6.2.4.12 |
| A8310 |  | Pruebas de Operación y Puesta en Marcha de Instrumento TAG: XV-6250 | 1.09d | 2026-01-17 | 2026-01-18 | A8300 | 70.82d | 0d | SQM-INSTRUMENTACIÓN [12 h] | 12 | 5827-L5 LiOH | gl | 1 | 4.5.28 | 6.2.4.8 |
| A8320 |  | Pruebas de Operación y Puesta en Marcha de Instrumento TAG: XV-6251 | 1.09d | 2026-01-17 | 2026-01-18 | A8310 SS | 70.82d | 0d | SQM-INSTRUMENTACIÓN [12 h] | 12 | 5827-L5 LiOH | gl | 1 | 4.5.29 | 6.2.4.6 |
| A8330 |  | Pruebas de Operación y Puesta en Marcha de Instrumento TAG: XV-6258 | 1.09d | 2026-01-17 | 2026-01-18 | A8320 SS, A8030 | 70.82d | 17.36d | SQM-INSTRUMENTACIÓN [12 h] | 12 | 5827-L5 LiOH | gl | 1 | 4.5.30 | 6.2.4.2 |

| ID | WBS | Activity | Duration | Start | Finish | Predecessors | Total float | Free float | Resources | Cost | Área | Unidad | Cantidad | Ítem LP | Ìtem EDP | Corregir |
| --- | --- | --- | --- | --- | --- | --- | --- | --- | --- | --- | --- | --- | --- | --- | --- | --- |
|  | 5 | **ÁREA 5872 - SECTOR TK-3016** |  | 2025-10-23 | 2026-01-04 |  |  |  |  |  |  |  |  |  |  |  |
|  | 6 | **OBRAS CIVILES TK-3016** |  | 2025-10-23 | 2025-10-30 |  |  |  |  |  |  |  |  |  |  |  |
|  | 1 | **OOCC SECTOR ESTANQUE DE AGUA ULTRA PURA TAG:5872-EST-3016** |  | 2025-10-23 | 2025-10-30 |  |  |  |  |  |  |  |  |  |  |  |
| A8350 |  | Armadura de Refuerzo A630-420H para PD-1 | 4.36d | 2025-10-23 | 2025-10-28 | A6570 | 70.82d | 0d | SQM-OOCC [9.78 h] | 9.78 | 5872-TK3016 | kg | 75.52 | 2.2.1. | 8.2.2.1 |  |
| A8340 |  | Hormigón G30 Pedestal PD-1 (TAG: 5817-BBA-1681 y TAG: 5817-BBA-1684) | 2.18d | 2025-10-28 | 2025-10-30 | A8350, A6540 | 70.82d | 0d | SQM-OOCC [9.86 h] | 9.86 | 5872-TK3016 | m3 | 1.2 | 2.1.1. | 8.2.1.1 |  |
|  | 1 | **OBRAS MECÁNICAS TK-3016** |  | 2025-10-30 | 2025-11-07 |  |  |  |  |  |  |  |  |  |  |  |
|  | 1 | **MONTAJE Y PRUEBAS DE EQUIPOS MECÁNICOS ÁREA 5872 TK3016 HIDRÓXIDO** |  | 2025-10-30 | 2025-11-07 |  |  |  |  |  |  |  |  |  |  |  |
| A8360 |  | Bomba Centrífuga y Motor TAG: 5872-BBA-1681; 5872-MTR-1682 | 4.36d | 2025-10-30 | 2025-11-03 | A8340, A6030 | 70.82d | 0d | SQM-MECANICA [139.9 h] | 139.9 | 5872-TK3016 | un | 1 | 1.1.1 | 7.1.1.2 |  |
| A8370 |  | Bomba Centrífuga y Motor TAG: 5872-BBA-1684; 5872-MTR-1685 | 4.36d | 2025-11-03 | 2025-11-07 | A8360 | 70.82d | 0d | SQM-MECANICA [139.9 h] | 139.9 | 5872-TK3016 | un | 1 | 1.1.2 | 7.1.1.1 |  |
|  | 2 | **OBRAS PIPING TK-3016** |  | 2025-11-17 | 2026-01-04 |  |  |  |  |  |  |  |  |  |  |  |
|  | 1 | **FABRICACIÓN Y MONTAJE DE CAÑERÍAS ÁREA TK-3016** |  | 2025-11-17 | 2026-01-02 |  |  |  |  |  |  |  |  |  |  |  |
| A8380 |  | Ø 200 mm - Cañería HDPE, PE 100, PN20 (8") - Fabricación | 6.55d | 2025-11-17 | 2025-11-24 | A3600, A8370 | 85d | 0d | SQM-PIPING [157.5 h] | 157.5 | 5872-TK3016 | un | 45 | 2.1.28 | 7.2.1.2 |  |
| A8390 |  | Ø 8" - Cañería Acero Inoxidable - Fabricación | 4.36d | 2025-11-24 | 2025-11-28 | A8380 | 93.73d | 0d | SQM-PIPING [59.2 h] | 59.2 | 5872-TK3016 | un | 4 | 2.1.29 | 7.2.1.3 |  |
| A8400 |  | Ø 6" - Cañería Acero Inoxidable - Fabricación | 38.18d | 2025-11-24 | 2026-01-01 | A6610 SS, A8380 | 85d | 0d | SQM-PIPING [1378 h] | 1,378 | 5872-TK3016 | un | 122 | 2.1.30 | 7.2.1.14 |  |
| A8460 |  | Ø 6" - Cañería Acero Inoxidable - Montaje | 38.18d | 2025-11-25 | 2026-01-02 | A8400 FF+1.09d, A8510 FF, A8520 FF | 85d | 0d | SQM-PIPING [95.45 h] | 95.45 | 5872-TK3016 | m | 46.3 | 2.1.2 | 7.2.1.19 | R FF |
| A8410 |  | Ø 4" - Cañería Acero Inoxidable - Fabricación | 3.27d | 2025-11-28 | 2025-12-01 | A8390 | 93.73d | 0d | SQM-PIPING [30.4 h] | 30.4 | 5872-TK3016 | un | 4 | 2.1.31 | 7.2.1.20 |  |
| A8420 |  | Ø 3" - Cañería Acero Inoxidable - Fabricación | 3.27d | 2025-12-02 | 2025-12-05 | A8410 | 93.73d | 0d | SQM-PIPING [22.4 h] | 22.4 | 5872-TK3016 | un | 4 | 2.1.32 | 7.2.1.24 |  |
| A8430 |  | Ø 2" - Cañería Acero Inoxidable - Fabricación | 4.36d | 2025-12-05 | 2025-12-09 | A8420 | 95.91d | 0d | SQM-PIPING [49.27 h] | 49.27 | 5872-TK3016 | un | 12 | 2.1.33 | 7.2.1.29 |  |
| A8500 |  | Ø 200 mm - Cañería HDPE, PE 100, PN20 (8") - Montaje | 3.27d | 2025-12-05 | 2025-12-08 | A8420 | 93.73d | 0d | SQM-PIPING [242.79 h] | 242.79 | 5872-TK3016 | m | 135 | 2.1.6 | 7.2.1.9 |  |
| A8450 |  | Ø 8" - Cañería Acero Inoxidable - Montaje | 3.27d | 2025-12-08 | 2025-12-11 | A8500 | 93.73d | 0d | SQM-PIPING [7.26 h] | 7.26 | 5872-TK3016 | m | 0.65 | 2.1.1 | 7.2.1.10 |  |
| A8440 |  | Ø 1" - Cañería Acero Inoxidable - Fabricación | 3.27d | 2025-12-09 | 2025-12-12 | A8430 | 95.91d | 0d | SQM-PIPING [6 h] | 6 | 5872-TK3016 | un | 3 | 2.1.34 | 7.2.1.32 |  |
| A8480 |  | Ø 3" - Cañería Acero Inoxidable - Montaje | 3.27d | 2025-12-11 | 2025-12-15 | A8450 | 93.73d | 0d | SQM-PIPING [0.53 h] | 0.53 | 5872-TK3016 | m | 0.265968066 | 2.1.4 | 7.2.1.27 |  |
| A8490 |  | Ø 2" - Cañería Acero Inoxidable - Montaje | 3.27d | 2025-12-15 | 2025-12-18 | A8480 | 93.73d | 0d | SQM-PIPING [9.14 h] | 9.14 | 5872-TK3016 | m | 3.273658441 | 2.1.5 | 7.2.1.31 |  |
| A8470 |  | Ø 4" - Cañería Acero Inoxidable - Montaje | 3.27d | 2025-12-18 | 2025-12-21 | A8490 | 93.73d | 0d | SQM-PIPING [1.07 h] | 1.07 | 5872-TK3016 | m | 0.456945876 | 2.1.3 | 7.2.1.23 |  |

| ID | WBS | Activity | Duration | Start | Finish | Predecessors | Total float | Free float | Resources | Cost | Área | Unidad | Cantidad | Ítem LP | Ìtem EDP | Corregir |
| --- | --- | --- | --- | --- | --- | --- | --- | --- | --- | --- | --- | --- | --- | --- | --- | --- |
|  | 2 | **MONTAJE DE VÁLVULAS Y FITTING SECTOR TK-3016** |  | 2025-11-17 | 2026-01-02 |  |  |  |  |  |  |  |  |  |  |  |
| A8510 |  | Fitting Sector TK-3016 (Global) | 45.82d | 2025-11-17 | 2026-01-02 | A8380 SS | 85d | 0d | SQM-PIPING [1507.89 h] | 1,507.89 | 5872-TK3016 | un | 117 | 99.11 | 99.11 |  |
| A8520 |  | Válvulas Sector TK-3016(Global) | 45.82d | 2025-11-17 | 2026-01-02 | A8380 SS | 85d | 0d | SQM-PIPING [281.25 h] | 281.25 | 5872-TK3016 | un | 21 | 99.20 | 99.20 |  |
|  | 3 | **TIE IN LÍNEAS ASOCIADAS A TK-3016** |  | 2026-01-02 | 2026-01-04 |  |  |  |  |  |  |  |  |  |  |  |
| A8530 |  | TIE-IN N° 1421 - 5872-EST-3016 a Línea Proyectada 150-IW-5872-I1-1621 | 2.18d | 2026-01-02 | 2026-01-04 | A8460 | 85d | 0d | SQM-PIPING [50.67 h] | 50.67 | 5872-TK3016 | un | 1 | 2.3.1 | 7.2.3.2 |  |
| A8540 |  | TIE-IN N° 1422 - 5872-EST-3016 a Línea Proyectada 150-IW-5872-I1-1622 | 2.18d | 2026-01-02 | 2026-01-04 | A8530 FF | 85d | 0d | SQM-PIPING [50.67 h] | 50.67 | 5872-TK3016 | un | 1 | 2.3.2 | 7.2.3.1 |  |
| A8550 |  | Perforación de Estanque Existente TK-3016 para TIE-IN N°1421 y 1422. | 2.18d | 2026-01-02 | 2026-01-04 | A8540 FF, A8580, A7070 FF | 85d | 31.55d | SQM-PIPING [101.33 h] | 101.33 | 5872-TK3016 | un | 2 | 2.1.35 | 7.2.1.35 | R FF |
|  | 4 | **FABRICACIÓN Y MONTAJE DE SOPORTES TK-3016** |  | 2025-12-12 | 2025-12-24 |  |  |  |  |  |  |  |  |  |  |  |
| A8560 |  | Soporte N°001 - Pedestal Tipo TEE, Acero Estructural para Tuberías Diámetros Pequeños | 3.27d | 2025-12-12 | 2025-12-16 | A8440 | 95.91d | 0d | SQM-PIPING [8.5 h] | 8.5 | 5872-TK3016 | un | 2 | 2.4.1 | 7.2.4.3 |  |
| A8570 |  | Soporte N°002A - Pedestal con Repisa de Acero Estructural para Tuberías Diámetros Pequeños | 3.27d | 2025-12-16 | 2025-12-19 | A8560 | 95.91d | 2.18d | SQM-PIPING [17 h] | 17 | 5872-TK3016 | un | 4 | 2.4.2 | 7.2.4.2 |  |
| A8580 |  | Soporte Primario Tipo "U" (Para Uso General) | 3.27d | 2025-12-21 | 2025-12-24 | A8570, A8470 | 93.73d | 8.73d | SQM-PIPING [1.16 h] | 1.16 | 5872-TK3016 | un | 54 | 2.4.3 | 7.2.4.1 |  |
|  | 3 | **OBRAS ELÉCTRICAS TK-3016** |  | 2025-11-20 | 2025-12-23 |  |  |  |  |  |  |  |  |  |  |  |
|  | 1 | **MONTAJE DE CANALIZACIÓN Y FERRETERÍA TK-3016** |  | 2025-11-20 | 2025-12-08 |  |  |  |  |  |  |  |  |  |  |  |
| A8590 |  | Canalización y Copla de Conduit de Acero Galvanizado 4"Ø, Conduit ANSI C80.1 | 3.27d | 2025-11-20 | 2025-11-23 | A6310 | 90.45d | 0d | SQM-ELÉCTRICO [73.5 h] | 73.5 | 5872-TK3016 | m | 25 | 3.2.1 | 7.3.1.4 |  |
| A8600 |  | Canalización y Copla de Conduit Flexible Metálico con Cubierta PVC 4" Ø Trabajo Pesado | 2.18d | 2025-11-23 | 2025-11-25 | A8590 | 90.45d | 0d | SQM-ELÉCTRICO [14.7 h] | 14.7 | 5872-TK3016 | m | 5 | 3.2.2 | 7.3.1.1 |  |
| A8610 |  | Canalización y Copla de Conduit de Acero Galvanizado 2 ½"Ø, Conduit ANSI C80.1 | 4.36d | 2025-11-25 | 2025-11-29 | A8600 | 90.45d | 0d | SQM-ELÉCTRICO [75.6 h] | 75.6 | 5872-TK3016 | m | 40 | 3.2.3 | 7.3.1.5 |  |
| A8620 |  | Canalización y Copla de Conduit Flexible Metálico con Cubierta PVC 2 ½" Ø Trabajo Pesado | 2.18d | 2025-11-29 | 2025-12-01 | A8610 | 90.45d | 0d | SQM-ELÉCTRICO [9.45 h] | 9.45 | 5872-TK3016 | m | 5 | 3.2.4 | 7.3.1.2 |  |
| A8630 |  | Canalización y Copla de Conduit de Acero Galvanizado 1 ½"Ø, Conduit ANSI C80.1 | 4.36d | 2025-12-02 | 2025-12-06 | A8620 | 90.45d | 0d | SQM-ELÉCTRICO [50.4 h] | 50.4 | 5872-TK3016 | m | 40 | 3.2.7 | 7.3.1.6 |  |
| A8640 |  | Canalización y Copla de Conduit Flexible Metálico con Cubierta PVC 1 ½" Ø Trabajo Pesado | 2.18d | 2025-12-06 | 2025-12-08 | A8630 | 90.45d | 0d | SQM-ELÉCTRICO [6.3 h] | 6.3 | 5872-TK3016 | m | 5 | 3.2.8 | 7.3.1.3 |  |
|  | 2 | **TENDIDO Y CONEXIONADO DE CABLES DE ALIMENTACIÓN TK-3016** |  | 2025-12-08 | 2025-12-17 |  |  |  |  |  |  |  |  |  |  |  |
| A8650 |  | Cable Monoconductor de Cobre con Aislación XLPE, 1C #250 MCM, Clase 1 kV | 0d | 2025-12-08 | 2025-12-08 | A8640 | 90.45d | 0d | SQM-ELÉCTRICO |  | 5872-TK3016 | m | 0 | 3.3.1 | 7.3.2.3 |  |
| A8660 |  | Cable Multiconductor de Cobre con Aislación XLPE, 1X4C #2 AWG, Clase 1 kV | 4.36d | 2025-12-08 | 2025-12-12 | A8650 SS | 90.45d | 0d | SQM-ELÉCTRICO [28.44 h] | 28.44 | 5872-TK3016 | m | 52 | 3.3.2 | 7.3.2.1 |  |
| A8670 |  | Cable Multiconductor de Cobre con Aislación de XLPE, 1x5C #12 AWG, Clase 1 kV | 4.36d | 2025-12-12 | 2025-12-17 | A8660 | 90.45d | 0d | SQM-ELÉCTRICO [16.44 h] | 16.44 | 5872-TK3016 | m | 52 | 3.3.3 | 7.3.2.2 |  |
|  | 3 | **MONTAJE Y CONEXIONADO DE EQUIPOS ELÉCTRICOS TK-3016** |  | 2025-12-17 | 2025-12-20 |  |  |  |  |  |  |  |  |  |  |  |
| A8680 |  | Tablero Partidor de Motores TAG: 5817-TPM-1502. | 3.27d | 2025-12-17 | 2025-12-20 | A8670 | 94.82d | 0d | SQM-ELÉCTRICO [124.1 h] | 124.1 | 5872-TK3016 | gl | 1 | 3.4.1 | 7.3.3.1 |  |
| A8690 |  | Conexión de Motor TAG: 5872-MTR-1682 a TPM TAG: 5817-TPM-1502. | 2.18d | 2025-12-17 | 2025-12-19 | A8680 SS | 94.82d | 0d | SQM-ELÉCTRICO [4.12 h] | 4.12 | 5872-TK3016 | gl | 1 | 3.4.2 | 7.3.3.4 |  |
| A8700 |  | Conexión de Motor TAG: 5872-MTR-1685 a TPM TAG: 5817-TPM-1502. | 2.18d | 2025-12-17 | 2025-12-19 | A8690 SS | 94.82d | 0d | SQM-ELÉCTRICO [4.12 h] | 4.12 | 5872-TK3016 | gl | 1 | 3.4.3 | 7.3.3.3 |  |
| A8710 |  | Conexión de Tablero Partidor de Motores TAG: 5817-TPM-1502 a Sala Eléctrica TAG: SEL-4016. | 2.18d | 2025-12-17 | 2025-12-19 | A8700 SS | 94.82d | 0d | SQM-ELÉCTRICO [4.12 h] | 4.12 | 5872-TK3016 | gl | 1 | 3.4.4 | 7.3.3.2 |  |

| ID | WBS | Activity | Duration | Start | Finish | Predecessors | Total float | Free float | Resources | Cost | Área | Unidad | Cantidad | Ítem LP | Ìtem EDP |
| --- | --- | --- | --- | --- | --- | --- | --- | --- | --- | --- | --- | --- | --- | --- | --- |
|  | 4 | **PRUEBAS DE FUNCIONAMIENTO Y PEM TK-3016** |  | 2025-12-19 | 2025-12-23 |  |  |  |  |  |  |  |  |  |  |
| A8720 |  | Pruebas de Funcionamiento y Puesta en Marcha de Motor TAG: 5872-MTR-1682. | 2.18d | 2025-12-19 | 2025-12-21 | A8710 | 94.82d | 0d | SQM-ELÉCTRICO [12 h] | 12 | 5872-TK3016 | gl | 1 | 3.5.1 | 7.3.4.2 |
| A8730 |  | Pruebas de Funcionamiento y Puesta en Marcha de Motor TAG: 5872-MTR-1685. | 2.18d | 2025-12-21 | 2025-12-23 | A8720 | 94.82d | 4.36d | SQM-ELÉCTRICO [12 h] | 12 | 5872-TK3016 | gl | 1 | 3.5.2 | 7.3.4.1 |
|  | 4 | **OBRAS DE INSTRUMENTACIÓN TK-3016** |  | 2025-12-17 | 2025-12-30 |  |  |  |  |  |  |  |  |  |  |
|  | 1 | **MONTAJE DE CANALIZACIÓN Y FERRETERÍA INST. TK-3016** |  | 2025-12-17 | 2025-12-22 |  |  |  |  |  |  |  |  |  |  |
| A8740 |  | Canalización y Copla de Conduit de Acero Galvanizado 1"Ø, Conduit ANSI C80.1 | 3.27d | 2025-12-17 | 2025-12-20 | A8670 | 90.45d | 0d | SQM-INSTRUMENTACIÓN [100.8 h] | 100.8 | 5872-TK3016 | m | 80 | 4.2.1 | 7.4.1.1 |
| A8750 |  | Canalización y Copla de Conduit Flexible Metálico con Cubierta PVC 1" Ø Trabajo Pesado | 2.18d | 2025-12-20 | 2025-12-22 | A8740 | 90.45d | 0d | SQM-INSTRUMENTACIÓN [12.6 h] | 12.6 | 5872-TK3016 | m | 10 | 4.2.2 | 7.4.1.2 |
|  | 2 | **TENDIDO Y CONEXIONADO DE CABLES INSTRUMENTACIÓN TK-3016** |  | 2025-12-22 | 2025-12-30 |  |  |  |  |  |  |  |  |  |  |
| A8760 |  | Cable Multiconductor de Cobre con Aislación de XLPE, 1x3C #12 AWG, Clase 1 kV | 4.36d | 2025-12-22 | 2025-12-27 | A8750 | 90.45d | 0d | SQM-INSTRUMENTACIÓN [0.37 h] | 0.37 | 5872-TK3016 | m | 1 | 4.3.1 | 7.4.2.1 |
| A8770 |  | Cable de Instrumentación (Señales Análogas), 1x1 par #16 AWG Apantallado | 7.64d | 2025-12-22 | 2025-12-30 | A8760 SS | 90.45d | 0d | SQM-INSTRUMENTACIÓN [88.8 h] | 88.8 | 5872-TK3016 | m | 300 | 4.3.2 | 7.4.2.2 |
| A8780 |  | Conductor Fibra Óptica Multimodo 12 Hilos | 4.36d | 2025-12-22 | 2025-12-27 | A8770 SS | 90.45d | 0d | SQM-INSTRUMENTACIÓN [71.7 h] | 71.7 | 5872-TK3016 | m | 150 | 4.3.3 | 7.4.2.3 |
|  | 3 | **MONTAJE Y CONEXIONADO DE EQUIPOS E INSTRUMENTOSTK-3016** |  | 2025-12-22 | 2025-12-30 |  |  |  |  |  |  |  |  |  |  |
| A8790 |  | Fibra Óptica en TAG: SEL-4016. | 3.27d | 2025-12-22 | 2025-12-25 | A8780 SS | 90.45d | 0d | SQM-INSTRUMENTACIÓN [4.12 h] | 4.12 | 5872-TK3016 | gl | 1 | 4.4.1 | 7.4.4.3 |
| A8800 |  | Instrumento TAG: FIT-1177 | 2.18d | 2025-12-26 | 2025-12-28 | A8790 | 90.45d | 0d | SQM-INSTRUMENTACIÓN [21.75 h] | 21.75 | 5872-TK3016 | gl | 1 | 4.4.2 | 7.4.4.2 |
| A8810 |  | Instrumento TAG: PIT-1176 | 2.18d | 2025-12-28 | 2025-12-30 | A8800 | 90.45d | 0d | SQM-INSTRUMENTACIÓN [12 h] | 12 | 5872-TK3016 | gl | 1 | 4.4.3 | 7.4.4.1 |
|  | 4 | **PRUEBAS DE FUNCIONAMIENTO Y PEM INST. TK-3016** |  | 2025-12-28 | 2025-12-30 |  |  |  |  |  |  |  |  |  |  |
| A8820 |  | Pruebas de Funcionamiento de Conectividad de Fibra Óptica desde SEL-4016 a TPM-1502. | 2.18d | 2025-12-28 | 2025-12-30 | A8810 SS | 90.45d | 0d | SQM-INSTRUMENTACIÓN [12 h] | 12 | 5872-TK3016 | gl | 1 | 4.5.1 | 7.4.3.1 |
| A8830 |  | Pruebas de Operación y Puesta en Marcha de Instrumento TAG: FIT-1177 | 2.18d | 2025-12-28 | 2025-12-30 | A8820 SS | 90.45d | 0d | SQM-INSTRUMENTACIÓN [12 h] | 12 | 5872-TK3016 | gl | 1 | 4.5.2 | 7.4.3.2 |
| A8840 |  | Pruebas de Operación y Puesta en Marcha de Instrumento TAG: PIT-1176 | 2.18d | 2025-12-28 | 2025-12-30 | A8830 SS, A8730 | 90.45d | 37d | SQM-INSTRUMENTACIÓN [12 h] | 12 | 5872-TK3016 | gl | 1 | 4.5.3 | 7.4.3.3 |
